# C:\Users\chogu\Downloads\qualicenter

How a schedule from MS Project changed from version to version. A marks actual dates.

## Version 1 (saved 2024-04-30, file qualicenterF.mpp)

Note of the change: Project

| ID | WBS | Task | Duration | Start | Finish | Predecessors | Complete | Total float | Constraint |
| --- | --- | --- | --- | --- | --- | --- | --- | --- | --- |
| 1 | 1 | **Sprint 85%** | 19d | 2024-04-24 A | 2024-05-15 |  | 9% | 1d |  |
| 2 | 1.1 | **Cliente** | 17.6d | 2024-04-24 A | 2024-05-14 |  | 36% | 2.4d |  |
| 3 | 1.1.1 | **El sistema debe ser capaz de registrar el tiempo acumulado de la llamada desde el momento en que el cliente marca al número de atención.** | 14.6d | 2024-04-29 A | 2024-05-14 |  | 32% | 2.4d |  |
| 4 | 1.1.1.1 | **Recibir la llamada con Amazon Connect.** | 1d | 2024-04-29 A | 2024-04-29 A |  | 100% |  |  |
| 5 |  | Crear la instancia de Amazon Connect en una cuenta de AWS. | 1d | 2024-04-29 A | 2024-04-29 A |  | 100% |  | start no earlier than 2024-04-29 |
| 6 |  | Reclamar un número de teléfono y asignarlo a la instancia | 0d | 2024-04-29 A | 2024-04-29 A |  | 100% |  | start no earlier than 2024-04-29 |
| 7 |  | Configurar la instancia de Amazon Connect para recibir llamadas entrantes con un flujo predeterminado. | 1d | 2024-04-29 A | 2024-04-29 A | 6 | 100% |  |  |
| 8 | 1.1.1.2 | **Tener el control de la llamada.** | 2.1d | 2024-04-30 A | 2024-05-02 A |  | 100% |  |  |
| 9 |  | Crear las cuentas de agentes y administradores, con sus atributos respectivos como nombres y horarios. | 0.5d | 2024-04-30 A | 2024-04-30 A | 7 | 100% |  |  |
| 10 |  | Implementar funcionalidades de colas | 0.5d | 2024-04-30 A | 2024-04-30 A | 9 | 100% |  |  |
| 11 |  | Implementar ruteos y prioridades de colas. | 0d | 2024-04-30 A | 2024-04-30 A | 10 | 100% |  |  |
| 12 |  | Crear un flujo propio de control de llamadas | 1d | 2024-05-01 A | 2024-05-01 A | 11 | 100% |  |  |
| 13 |  | Asignar el flujo al número reclamado y asignado a la instancia | 0.1d | 2024-05-02 A | 2024-05-02 A | 12 | 100% |  |  |
| 14 | 1.1.1.3 | **Indicarle a Connect iniciar el registro del tiempo de la llamada.** | 7.5d | 2024-05-02 A | 2024-05-09 | 13 | 8% | 2.4d |  |
| 15 |  | Asignar permisos a Amazon Connect de acceso a Lambda mediante un perfil de IAM | 0.5d | 2024-05-02 A | 2024-05-02 A | 13 | 100% |  |  |
| 16 |  | Implementar un atributo de Amazon Connect de duración de llamada para las llamadas finalizadas, el cual utilizará la API de Amazon Connect Flow para en cualquier momento obtener la duración total de una llamada finalizada. | 3d | 2024-05-02 | 2024-05-05 | 15 |  | 16.4d |  |
| 17 |  | Adicionalmente para cada llamada capturar detalles importantes como el número del llamante, el tiempo y el asunto. Guardarlos como atributos en el flujo de llamada en la instancia de Amazon Connect. | 0d | 2024-05-06 A | 2024-05-06 | 16 | 5% | 2.4d |  |
| 18 |  | Iniciar un temporizador para cada llamada que se reciba, para así implementar una función Lambda en el flujo de llamadas, el cual podrá ser llamada en cualquier momento para obtener la duración en tiempo real de manera precisa para cada llamada. | 3d | 2024-05-06 | 2024-05-09 | 17 |  | 15.4d |  |
| 19 | 1.1.1.4 | **Recuperar el tiempo registrado por connect.** | 4d | 2024-05-09 | 2024-05-14 |  |  | 2.4d |  |
| 20 |  | Implementar en la interfaz de usuario la duración acumulada de la llamada para los agentes y administradores relevantes | 3d | 2024-05-09 | 2024-05-13 | 18 |  | 15.4d |  |
| 21 |  | Realizar pruebas exhaustivas invocando al API desde la interfaz, para garantizar el seguimiento correcto de la duración y la recuperación de datos de llamada. Validar contra diferentes escenarios como transferencias de llamada | 1d | 2024-05-13 | 2024-05-14 | 20 |  | 15.4d |  |
| 22 | 1.1.2 | **El sistema debe buscar un agente disponible para atender la llamada, si no hay uno entonces se deberá colocar la llamada en una cola de esperal. . El sistema debe identificar al cliente mediante su número de teléfono, si el cliente está registrado con una** | 14.5d | 2024-04-29 A | 2024-05-14 |  | 55% | 0d |  |
| 23 | 1.1.2.1 | **Recuperar el número del cliente.** | 1d | 2024-04-29 A | 2024-04-29 A |  | 100% |  |  |
| 24 |  | Asignar un atributo en el flujo de Amazon Connect que guarde el número del cliente para cada llamada | 1d | 2024-04-29 A | 2024-04-29 A |  | 100% |  |  |
| 25 | 1.1.2.2 | **Comparar el número con los clientes para encontrar al cliente.** | 5d | 2024-05-03 A | 2024-05-07 | 13 | 57% | 0d |  |
| 26 |  | Montar y llenar una base de datos para relacionar números telefónicos de los clientes a datos individuales como nombre y número de póliza | 2d | 2024-05-03 A | 2024-05-04 | 13 | 60% |  |  |
| 27 |  | Implementar una función Lambda en el flujo de la instancia de Amazon Connect, el cual comparará el número de un cliente guardado en un atributo con los números guardados en la base de datos. | 1d | 2024-05-07 A | 2024-05-07 | 26 | 50% |  |  |
| 28 | 1.1.2.3 | **Recuperar la información de ese cliente.** | 1d | 2024-05-10 A | 2024-05-10 |  | 20% | 0d |  |
| 29 |  | Dentro de la función Lambda en el flujo de la instancia de Amazon Connect, después de hacer un match con los datos de un cliente y su número, regresará los datos del cliente de la base de datos para así guardarlos como atributo en la instancia. | 1d | 2024-05-10 A | 2024-05-10 | 27 | 20% |  |  |
| 30 | 1.1.2.4 | **Si todos los agentes están ocupados, notificarle al cliente que está en la cola de espera.** | 0.5d | 2024-05-14 A | 2024-05-14 |  | 20% | 0d |  |
| 31 |  | Modificar las colas de espera de la instancia de Amazon Connect para que ocurran distintos escenarios si la cola está llena. | 0d | 2024-05-14 A | 2024-05-14 | 29 | 20% |  |  |
| 32 |  | Si la cola está llena o no hay agentes disponibles, entonces reproducir un audio que indique que no hay un agente disponible reproducido en un loop. | 0d | 2024-05-14 A | 2024-05-14 A | 31 | 100% |  |  |
| 33 |  | Si la cola no está llena y hay agentes disponibles, rutear la llamada al flujo propio de la instancia | 0.5d | 2024-05-14 A | 2024-05-14 | 32 | 20% |  |  |
| 34 | 1.1.3 | **El sistema debe mostrar al agente los datos del cliente, incluyendo nombre, edad, datos de póliza y tiempo acumulado de llamada .l agente debe recibir una notificación de la llamada entrante junto con una cuenta regresiva antes de que pueda volver a reali** | 10.5d | 2024-05-03 A | 2024-05-14 | 13 | 9% | 0d |  |
| 35 | 1.1.3.1 | **Desplegar toda la información del cliente.** | 4d | 2024-05-03 A | 2024-05-06 | 13 | 20% | 0d |  |
| 36 |  | Configurar el API de Amazon Connect y las funciones Lambda asignadas al flujo de llamada para recuperar datos del cliente | 1d | 2024-05-03 A | 2024-05-03 | 13 | 20% |  |  |
| 37 |  | Implementar una interfaz de usuario en la aplicación del agente para mostrar los datos del cliente, incluyendo nombre, edad, datos de póliza y tiempo acumulado de llamada. | 1d | 2024-05-06 A | 2024-05-06 | 36 | 20% |  |  |
| 38 | 1.1.3.2 | **Generar una alerta en la pantalla del agente sobre una llamada entrante** | 3.5d | 2024-05-09 | 2024-05-13 |  |  | 0d |  |
| 39 |  | Configurar el API de Amazon Connect para crear una interfaz “Agent Workspace” dentro de la aplicación | 1d | 2024-05-09 | 2024-05-09 | 37 |  |  |  |
| 40 |  | Generar una alerta en la pantalla del agente sobre una llamada entrante, utilizando mensajes emergentes y sonidos audibles. | 0.5d | 2024-05-13 | 2024-05-13 | 39 |  |  |  |
| 41 | 1.1.3.3 | **Establecer la conexión entre el agente y el cliente.** | 1d | 2024-05-13 A | 2024-05-14 |  |  | 0d |  |
| 42 |  | Implementar la funcionalidad de conexión entre el agente y el cliente, utilizando las funcionalidades del API de Amazon Connect y la interfaz “Agent Workspace”. | 0.5d | 2024-05-13 | 2024-05-13 | 40 |  |  |  |
| 43 |  | Asignar a cada perfil de Agente en la instancia de Amazon Connect un tiempo “After-Call-Work” | 0d | 2024-05-14 A | 2024-05-14 A | 42 | 100% |  |  |
| 44 |  | Mostrar el temporizador “After-Call-Work” en la aplicación después de desconectar cada llamada. | 0.5d | 2024-05-14 | 2024-05-14 | 43 |  |  |  |
| 45 | 1.1.4 | **Se registra, por llamada, el analisis sentimental y la transcripción en tiempo real cuando la conexión entre el cliente y el agente comienza** | 17d | 2024-04-24 A | 2024-05-13 |  | 43% | 0d |  |
| 46 | 1.1.4.1 | **Inicio una llamada entre agente y cliente** | 7d | 2024-04-24 A | 2024-05-02 |  | 86% | 0d |  |
| 47 |  | Configurar Amazon Connect par amanejar llamadas entrantes | 5d | 2024-04-24 A | 2024-04-30 A |  | 100% |  |  |
| 48 |  | Hacer que el sistema pueda identificar usuarios y conectar las llamadas correctamente entre agente y cliente | 1d | 2024-05-01 A | 2024-05-01 A | 47 | 100% |  |  |
| 49 |  | Integrar el API necesario para capturar el audio de la llamada en tiempo real | 1d | 2024-05-02 | 2024-05-02 | 48 |  |  |  |
| 50 | 1.1.4.2 | **Se registra el análisis sentimental del cliente** | 5d | 2024-05-03 | 2024-05-07 |  |  | 0d |  |
| 51 |  | Aprender a usar Amazon Comprehend | 1d | 2024-05-03 | 2024-05-03 |  |  |  |  |
| 52 |  | Desarrollar el backend para enviar texto transcrito (del audio) al servicio de análisis de sentimientos | 1d | 2024-05-06 | 2024-05-06 | 51 |  |  |  |
| 53 |  | Configurar la integración para que cada segmento de texto transcrito se envíe al servicio de análisis tan pronto como esté disponible. | 1d | 2024-05-07 | 2024-05-07 | 52 |  |  |  |
| 54 | 1.1.4.3 | **Se registra la transcripción en tiempo real** | 5d | 2024-05-08 | 2024-05-13 |  |  | 0d |  |
| 55 |  | Verificar si se necesita usar Amazon Transcribe y aprenderlo, o si basta con Amazon Comprehend | 1d | 2024-05-08 | 2024-05-08 |  |  |  |  |
| 56 |  | Configurar Amazon Connect para enviar un audio captuado al amazon comprehend | 1d | 2024-05-09 | 2024-05-09 | 55 |  |  |  |
| 57 |  | Crear función para recibir y procesar el texto transcrito. | 1d | 2024-05-10 | 2024-05-10 | 56 |  |  |  |
| 58 |  | Almacenar las transcripciones en una base de datos | 1d | 2024-05-13 | 2024-05-13 | 57 |  |  |  |
| 59 | 1.2 | **Agente** | 18d | 2024-04-25 A | 2024-05-15 |  | 8% | 1d |  |
| 60 | 1.2.1 | **El agente visualiza un script del dialogo que va a tener con el cliente:** | 13d | 2024-04-25 | 2024-05-09 |  |  | 3d |  |
| 61 | 1.2.1.1 | **Tener un panel visible donde se colocara el script.** | 1d | 2024-04-25 | 2024-04-25 |  |  | 10d |  |
| 62 |  | Realizar el front-end del panel donde se colocara el script. | 1d | 2024-04-25 | 2024-04-25 |  |  | 23d |  |
| 63 | 1.2.1.2 | **Colocar un script dummy en el panel** | 1d | 2024-04-30 | 2024-04-30 |  |  | 0d |  |
| 64 |  | Crear un script con datos dummy directo en el front-end | 1d | 2024-04-30 | 2024-04-30 | 62 |  |  |  |
| 65 | 1.2.1.3 | **Visualizar datos reales en el script.** | 2d | 2024-05-03 | 2024-05-04 |  |  | 0d |  |
| 66 |  | Crear una conexión a la Base de Datos para traer por la API los datos del cliente y colocarlos en tiempo real en el script. | 2d | 2024-05-03 | 2024-05-04 | 64 |  |  |  |
| 67 | 1.2.1.4 | **Colocar los campos de registro** | 5d | 2024-05-05 | 2024-05-09 |  |  | 6d |  |
| 68 |  | Crear y hacer funcionales los campos de registro de la información del cliente | 5d | 2024-05-05 | 2024-05-09 | 66 |  | 19d |  |
| 69 | 1.2.2 | **Para que el agente, durante la llamada, conozca la información del cliente, existe un apartado de información del cliente que será desplegado tal y como se especifica EN EL REQUERIMIENTO NUMERO 3 DE HERRAMIENTAS EXTERNAS** | 6d | 2024-04-29 | 2024-05-04 |  |  |  |  |
| 70 | 1.2.2.1 | **Visualiza un apartado con datos dummy del cliente** | 3d | 2024-04-29 | 2024-05-01 |  |  |  |  |

| ID | WBS | Task | Duration | Start | Finish | Predecessors | Complete | Total float |
| --- | --- | --- | --- | --- | --- | --- | --- | --- |
| 71 |  | Los datos dummy del cliente se visualizan en el Frontend del panel | 3d | 2024-04-29 | 2024-05-01 |  |  |  |
| 72 | 1.2.2.2 | **Visualiza un apartado con los datos reales del cliente en tiempo real** | 3d | 2024-05-02 | 2024-05-04 |  |  | 11d |
| 73 |  | Se crea una conexión a la base de datos y los datos del cliente se visualizan en tiempo real | 3d | 2024-05-02 | 2024-05-04 | 71 |  | 24d |
| 74 | 1.2.3 | **Para facilitar el envío de los diferentes servicios (grúa, ambulancia y ajustador), el agente tiene un espacio en su pantalla principal para ingresar la ubicación del cliente para que el envío de los servicios se hagan a esa dirección.** | 5d | 2024-04-29 A | 2024-05-03 A |  | 100% |  |
| 75 | 1.2.3.1 | **Espacio para escribir la dirección del cliente:** | 5d | 2024-04-29 A | 2024-05-03 A |  | 100% |  |
| 76 |  | Crear archivo CSS | 0.5d | 2024-04-29 A | 2024-04-29 A |  | 100% |  |
| 77 |  | Crear archivo JS | 0.5d | 2024-04-29 A | 2024-04-29 A | 76 | 100% |  |
| 78 |  | Diseñar el componente en el espacio designado de la aplicación | 1d | 2024-04-30 A | 2024-04-30 A | 77 | 100% |  |
| 79 |  | Programar la funcionalidad del FrontEnd | 3d | 2024-05-01 A | 2024-05-03 A | 78 | 100% |  |
| 80 | 1.2.4 | **Con los datos del cliente y a partir de sus pólizas, se despliega un menú que muestra los vehículos registrados del cliente.** | 3d | 2024-04-25 | 2024-04-29 |  |  | 1d |
| 81 | 1.2.4.1 | **Visualiza un apartado con datos dummy del cliente** | 1d | 2024-04-25 | 2024-04-25 |  |  | 16d |
| 82 |  | Los datos dummy del cliente se visualizan en el Frontend del panel | 1d | 2024-04-25 | 2024-04-25 |  |  | 29d |
| 83 | 1.2.4.2 | **Visualiza un apartado con los datos reales del cliente en tiempo rea** | 2d | 2024-04-26 | 2024-04-29 |  |  | 0d |
| 84 |  | Se crea una conexión a la base de datos. | 1d | 2024-04-26 | 2024-04-26 | 82 |  |  |
| 85 |  | Dependiendo de la póliza del cliente con un condicional despliega información sobre sus autos | 1d | 2024-04-29 | 2024-04-29 | 84 |  | 29d |
| 86 | 1.2.5 | **En caso de necesitar proveer una ayuda rápida al cliente, el agente tiene una sección en su pantalla principal con 2 botones, uno para mandar ambulancia y otro para enviar grúa.** | 1d | 2024-05-04 | 2024-05-04 | 79 |  | 2d |
| 87 | 1.2.5.1 | **Diseñar y posicionar los botones correctamente:** | 1d | 2024-05-04 | 2024-05-04 |  |  | 2d |
| 88 |  | Crear archivo CSS | 0.5d | 2024-05-04 | 2024-05-04 |  |  | 15d |
| 89 |  | Crear archivo JS | 0.3d | 2024-05-04 | 2024-05-04 | 88 |  | 15d |
| 90 |  | Diseñar los componentes en el espacio designado de la aplicación | 0.2d | 2024-05-04 | 2024-05-04 | 89 |  | 15d |
| 91 | 1.2.6 | **Durante su conversación con el cliente, el agente le pregunta al cliente si necesita el servicio de una grúa, si el cliente dice que sí, deberá oprimir el botón "Mandar Grúa", este botón mandará una alerta con la ubicación del cliente y el agente le dirá** | 9d | 2024-05-05 | 2024-05-14 | 90 |  | 2d |
| 92 | 1.2.6.1 | **Recuperar el número del cliente:** | 2d | 2024-05-05 | 2024-05-06 |  |  | 2d |
| 93 |  | API para recuperar el número del cliente | 1d | 2024-05-05 | 2024-05-05 |  |  | 15d |
| 94 |  | Conexión de la funcionalidad del botón con el BackEnd | 1d | 2024-05-06 | 2024-05-06 | 93 |  | 15d |
| 95 | 1.2.6.2 | **Recuperar la dirección del cliente** | 1d | 2024-05-07 | 2024-05-07 |  |  | 2d |
| 96 |  | Funciónalidad que reciba la dirección desde el FrontEnd | 1d | 2024-05-07 | 2024-05-07 | 94 |  | 15d |
| 97 | 1.2.6.3 | **Mandar un SMS con la alerta** | 6d | 2024-05-08 | 2024-05-14 |  |  | 2d |
| 98 |  | Configurar instancia Amazon SNS | 2d | 2024-05-08 | 2024-05-09 | 96 |  | 15d |
| 99 |  | API para mandar el mensaje | 2d | 2024-05-10 | 2024-05-12 | 98 |  | 15d |
| 100 |  | Función Lambda para mandar el mensaje | 2d | 2024-05-13 | 2024-05-14 | 99 |  | 15d |
| 101 | 1.2.7 | **Durante su conversación con el cliente, el agente le pregunta al cliente si necesita asistencia médica, si el cliente dice que sí, deberá oprimir el botón "Mandar Ambulancia", este botón mandará una alerta con la ubicación del cliente y el agente le dirá** | 9d | 2024-05-05 | 2024-05-14 | 90 |  | 2d |
| 102 | 1.2.7.1 | **Recuperar el número del cliente:** | 2d | 2024-05-05 | 2024-05-06 |  |  | 2d |
| 103 |  | API para recuperar el número del cliente | 1d | 2024-05-05 | 2024-05-05 |  |  | 15d |
| 104 |  | Conexión de la funcionalidad del botón con el BackEnd | 1d | 2024-05-06 | 2024-05-06 | 103 |  | 15d |
| 105 | 1.2.7.2 | **Recuperar la dirección del cliente** | 1d | 2024-05-07 | 2024-05-07 |  |  | 2d |
| 106 |  | Funciónalidad que reciba la dirección desde el FrontEnd | 1d | 2024-05-07 | 2024-05-07 | 104 |  | 15d |
| 107 | 1.2.7.3 | **Mandar un SMS con la alerta** | 6d | 2024-05-08 | 2024-05-14 |  |  | 2d |
| 108 |  | Configurar instancia Amazon SNS | 2d | 2024-05-08 | 2024-05-09 | 106 |  | 15d |
| 109 |  | API para mandar el mensaje | 2d | 2024-05-10 | 2024-05-12 | 108 |  | 15d |
| 110 |  | Función Lambda para mandar el mensaje | 2d | 2024-05-13 | 2024-05-14 | 109 |  | 15d |
| 111 | 1.2.8 | **Cuando se selecciona la opción de enviar ayuda (requerimiento 5, 6), automáticamente se manda un mensaje de texto al número del cliente en llamada con la alerta de ayuda en camino.** | 2d | 2024-05-04 | 2024-05-05 |  |  | 10d |
| 112 | 1.2.8.1 | **Ser capaz de generar una liga de un servicio de mapas (Como google maps) que contenga una dirección.** | 1d | 2024-05-04 | 2024-05-04 |  |  | 11d |
| 113 |  | Investigar al respecto, ya sea una API u otra forma de saberlo. | 1d | 2024-05-04 | 2024-05-04 | 74 |  | 24d |
| 114 |  | Generar enlaces a partir de un script que reciba como input una dirección y retorne un enlace. | 1d | 2024-05-04 | 2024-05-04 | 74 |  | 24d |
| 115 | 1.2.8.2 | **Ser capaz de enviar mensajes de texto a través de un script de JS.** | 2d | 2024-05-04 | 2024-05-05 |  |  | 10d |
| 116 |  | Investigar sobre alguna librería o API que me permita enviar mensajes a un número dado. | 1d | 2024-05-04 | 2024-05-04 | 74 |  | 23d |
| 117 |  | Escribir un código capaz de enviar mensajes a un número dado. | 1d | 2024-05-05 | 2024-05-05 | 116 |  | 23d |
| 118 |  | Incluir un mensaje predeterminado e incluir el enlace alcanzado con el milestone | 1d | 2024-05-05 | 2024-05-05 | 116 |  | 23d |
| 119 | 1.2.8.3 | **Enviar automáticamente mensajes al ingresar la dirección desde la página durante la llamada.** | 1d | 2024-05-04 | 2024-05-04 |  |  | 11d |
| 120 |  | A partir de la finalización del requerimiento 3 con el ingreso de la dirección en la página final, enlazar el script de mensaje de la milestone 2 con la funcionalidad de un botón de submit. | 1d | 2024-05-04 | 2024-05-04 | 74 |  | 24d |
| 121 | 1.2.9 | **En la sección izquierda, de la pantalla del agente, se muestra una transcripción en tiempo real de la llamada en curso** | 12d | 2024-04-30 A | 2024-05-12 |  | 13% | 4d |
| 122 | 1.2.9.1 | **Se recupera la transcripción registrada de la llamada** | 8d | 2024-04-30 A | 2024-05-07 |  | 20% |  |
| 123 |  | Configurar Amazon Comprehend o Transcribe para convertir audio a texto | 2d | 2024-04-30 A | 2024-05-01 |  | 80% | 4d |
| 124 |  | Recibir audio en tiempo real y proporcionar transcripciones en tiempo real | 2d | 2024-05-02 | 2024-05-03 | 123 |  | 17d |
| 125 |  | Desarrollar un sistema de bufferización para almacenar temporalmente las transcripciones mientras son procesadas y antes de ser mostradas. | 2d | 2024-05-04 | 2024-05-05 | 124 |  | 17d |
| 126 |  | Crear API endpoints para recuperar las transcripciones desde el almacenamiento temporal o buffer y enviarlas al frontend de la aplicación del agente. | 2d | 2024-05-06 | 2024-05-07 | 125 |  | 17d |
| 127 | 1.2.9.2 | **Se muestra la transcripción de la llamada** | 3d | 2024-05-08 | 2024-05-10 |  |  | 4d |
| 128 |  | Diseñar la interfaz donde se mostrarán las transcripciones | 1d | 2024-05-08 | 2024-05-08 | 126 |  | 17d |
| 129 |  | Crear una aplicación en React para crear los componentes funcionales necesarios y para actualizaciones en tiempo real | 1d | 2024-05-09 | 2024-05-09 | 128 |  | 17d |
| 130 |  | Asegúrate de que la transcripción mostrada esté sincronizada con el audio de la llamada, actualizando la pantalla a medida que se disponga | 1d | 2024-05-10 | 2024-05-10 | 129 |  | 17d |
| 131 | 1.2.9.3 | **Se anima la transcripción para que sea claramente legible** | 1d | 2024-05-12 | 2024-05-12 |  |  | 4d |
| 132 |  | Crear y diseñar el archivo CSS o bibliotecas de JavaScript para animar el scroll del texto | 1d | 2024-05-12 | 2024-05-12 | 130 |  | 17d |
| 133 | 1.2.10 | **Al estar dentro de una llamada con el cliente, el agente puede ver los botones que le dan la opción de silenciar o colgar la llamada. Al silenciarla, el cliente no será posible de escuchar al agente hasta que este deshabilite esta opción. Al colgar la lla** | 4d | 2024-05-02 | 2024-05-06 |  |  | 9.9d |
| 134 | 1.2.10.1 | **Visualizar la llamada al conectar Amazon Connect con la página.** | 3d | 2024-05-02 | 2024-05-05 |  |  | 9.9d |
| 135 |  | Una vez finalizado el funcionamiento y flujo de nuestra instancia de Connect, incluirla en nuestra página web en las pantallas correspondientes. | 1d | 2024-05-02 | 2024-05-03 | 8 |  | 22.9d |
| 136 |  | Verificar el funcionamiento deseado de la llamada al realizar pruebas. | 1d | 2024-05-03 | 2024-05-04 | 135 |  | 22.9d |
| 137 |  | Observar el comportamiento del flujo de la llamada establecido. | 1d | 2024-05-04 | 2024-05-05 | 136 |  | 22.9d |
| 138 | 1.2.10.2 | **Utilizar eficientemente los botones incluidos en Amazon Connect para finalizar y silenciar llamadas.** | 1d | 2024-05-05 | 2024-05-06 |  |  | 9.9d |
| 139 |  | Al ver la llamada, se visualizan los botones de colgar y silenciar. | 1d | 2024-05-05 | 2024-05-06 | 137 |  | 22.9d |
| 140 |  | los botones cumplen con su función. | 1d | 2024-05-05 | 2024-05-06 | 137 |  | 22.9d |

| ID | WBS | Task | Duration | Start | Finish | Predecessors | Complete | Total float | Constraint |
| --- | --- | --- | --- | --- | --- | --- | --- | --- | --- |
| 141 | 1.2.11 | **Botón de solicitud de ayuda en la pantalla principal. Al dar tap sobre él se desplegará un cuadro de texto para ingresar la descripción del problema y un botón que enviará la solicitud de ayuda, y un mensaje de confirmación al dar tap sobre el botón.** | 10d | 2024-05-01 | 2024-05-10 | 78 |  | 5d |  |
| 142 | 1.2.11.1 | **Mostrar el botón de ayuda en la pantalla principal del agente** | 2d | 2024-05-01 | 2024-05-02 |  |  | 5d |  |
| 143 |  | Implementar la interfaz de usuario para incluir el botón de ayuda en la pantalla principal. | 1d | 2024-05-01 | 2024-05-01 |  |  | 18d |  |
| 144 |  | Verificar que el botón sea visible y esté correctamente ubicado. | 0d | 2024-05-01 | 2024-05-01 | 143 |  | 18d |  |
| 145 |  | Confirmar que el botón responda a eventos de tap o clic. | 0d | 2024-05-01 | 2024-05-01 | 144 |  | 18d |  |
| 146 |  | Agregar un controlador de eventos al botón de ayuda. | 1d | 2024-05-02 | 2024-05-02 | 145 |  | 18d |  |
| 147 |  | Cuando el usuario toque el botón, enviar un mensaje a la consola para indicar que se ha activado el botón de ayuda. | 0d | 2024-05-02 | 2024-05-02 | 146 |  | 18d |  |
| 148 | 1.2.11.2 | **Desplegar una ventana emergente al darle tap al botón:** | 2d | 2024-05-03 | 2024-05-04 |  |  | 5d |  |
| 149 |  | Crear una ventana emergente que se muestre al tocar el botón de ayuda. | 1d | 2024-05-03 | 2024-05-03 | 147 |  | 25d |  |
| 150 |  | Diseñar la interfaz de la ventana emergente para incluir un cuadro de texto y un botón de enviar. | 2d | 2024-05-03 | 2024-05-04 | 147 |  | 18d |  |
| 151 | 1.2.11.3 | **Guardar un mensaje escrito por el usuario en el cuadro de texto:** | 2d | 2024-05-05 | 2024-05-06 |  |  | 5d |  |
| 152 |  | Implementar la lógica para capturar el texto ingresado por el usuario en el cuadro detexto. | 1d | 2024-05-05 | 2024-05-05 | 150 |  | 23d |  |
| 153 |  | Verificar que el texto se almacene correctamente en una variable o estructura de datos. | 1d | 2024-05-05 | 2024-05-05 | 150 |  | 18d |  |
| 154 |  | Agregar un controlador de eventos al botón de enviar en la ventana emergente. | 1d | 2024-05-06 | 2024-05-06 | 153 |  | 22d |  |
| 155 |  | Al tocar el botón de enviar, enviar el mensaje almacenado en la consola. | 1d | 2024-05-06 | 2024-05-06 | 153 |  | 18d |  |
| 156 | 1.2.11.4 | **Registrar el mensaje guardado en la base de datos:** | 3d | 2024-05-07 | 2024-05-09 |  |  | 5d |  |
| 157 |  | Configurar el controlador en el API para insertar el mensaje en la BD. | 2d | 2024-05-07 | 2024-05-08 | 155 |  | 18d |  |
| 158 |  | Configurar la conexión al endpoint, en la aplicación | 1d | 2024-05-09 | 2024-05-09 | 157 |  | 19d |  |
| 159 |  | Escribir la lógica para insertar el mensaje en la base de datos haciendo uso del endpoint. | 1d | 2024-05-09 | 2024-05-09 | 157 |  | 18d |  |
| 160 | 1.2.11.5 | **Desplegar un mensaje de confirmación al terminar este proceso:** | 1d | 2024-05-10 | 2024-05-10 |  |  | 5d |  |
| 161 |  | Diseñar un mensaje de confirmación que se muestre al usuario después de guardar el mensaje en la base de datos. | 1d | 2024-05-10 | 2024-05-10 | 159 |  | 18d |  |
| 162 |  | Mostrar el mensaje de confirmación en la pantalla principal del agente una vez que se utilice el botón de enviar. | 1d | 2024-05-10 | 2024-05-10 | 159 |  | 18d |  |
| 163 | 1.2.12 | **Se muestra el analisis sentiimental y la duración acumulada por cada llamada en la aplicacion del agente al comenzar la llamada** | 4.3d | 2024-04-30 A | 2024-05-04 |  | 40% |  |  |
| 164 | 1.2.12.1 | **Se recupera el análisis sentimental del cliente** | 4d | 2024-04-30 A | 2024-05-03 |  | 67% |  |  |
| 165 |  | Conigurar Amazon Comprehend para analizar el sentimiento | 2d | 2024-04-30 A | 2024-05-01 A |  | 100% |  |  |
| 166 |  | Crear endpoints de API que recojan los datos de análisis sentimental de las transcripciones y los pasen al frontend de la aplicación del agente. | 1d | 2024-05-02 | 2024-05-02 | 165 |  | 24.7d |  |
| 167 | 1.2.12.2 | **Se visualiza el análisis sentimental en forma de barra de colores** | 1.3d | 2024-05-03 | 2024-05-04 |  |  | 11.7d |  |
| 168 |  | Diseñar todos los componentes necesarios para mostrar una barra de colores | 0.5d | 2024-05-03 | 2024-05-03 | 166 |  | 25.5d |  |
| 169 |  | Hacer que el color cambie de acuerdo al análisis sentimental | 0.3d | 2024-05-03 | 2024-05-03 | 166 |  | 24.7d |  |
| 170 |  | Hacer que ela barra se actualice en tiempo real conforme cambian los datos de sentimiento que vienen del backend | 1d | 2024-05-03 | 2024-05-04 | 169 |  | 24.7d |  |
| 171 | 1.2.12.3 | **Se anima la barra para la actualización de cambio de colores** | 0.2d | 2024-05-03 | 2024-05-03 |  |  | 12.5d |  |
| 172 |  | Utilizar CSS transitions para animar cambios en la barra de colores | 0.2d | 2024-05-03 | 2024-05-03 | 169 |  | 25.5d |  |
| 173 | 1.2.13 | **Ícono que cambia de color de acuerdo a los resultados del análisis sentimental del cliente. Se mantiene en verde si el cliente está feliz y tranquilo, amarillo si empieza a ponerse impaciente, y rojo si está enojado o frustrado.** | 6d | 2024-04-30 A | 2024-05-05 | 7 | 3% | 10d |  |
| 174 | 1.2.13.1 | **El ícono se muestra con sus 3 colores (verde, amarillo, rojo).** | 1d | 2024-04-30 A | 2024-04-30 |  | 13% | 15d |  |
| 175 |  | Se crea el componente para el ícono. | 1d | 2024-04-30 A | 2024-04-30 | 7 | 50% | 15d |  |
| 176 |  | Se posiciona el componente dentro de la página. | 1d | 2024-04-30 | 2024-04-30 | 7 |  | 15d |  |
| 177 |  | El componente se puede mostrar en 3 colores (verde, rojo, amarillo). | 1d | 2024-04-30 | 2024-04-30 | 7 |  | 15d |  |
| 178 |  | El componente no presenta ningún fallo. | 1d | 2024-04-30 | 2024-04-30 | 7 |  | 10d |  |
| 179 | 1.2.13.2 | **El componente se ha vinculado con éxito a consultas en la base de datos y puede comunicarse con ella.** | 2d | 2024-05-01 | 2024-05-02 |  |  | 10d |  |
| 180 |  | Se implementa función para hacer que el componente cambie de color. | 0.5d | 2024-05-01 | 2024-05-01 | 178 |  | 14.5d |  |
| 181 |  | Se establecen parámetros dentro de la función según la información que se va a adquirir. | 1d | 2024-05-01 | 2024-05-01 | 178 |  | 10d |  |
| 182 |  | Se crea una rutina para recibir la información pertinente de la base de datos. | 1d | 2024-05-02 | 2024-05-02 | 181 |  | 13d |  |
| 183 |  | Se reciben los datos que necesita la función sin errores. | 1d | 2024-05-02 | 2024-05-02 | 181 |  | 10d |  |
| 184 | 1.2.13.3 | **El componente cumple con todas sus funcionalidades al usar datos pre-fabricados.** | 1d | 2024-05-03 | 2024-05-03 |  |  | 10d |  |
| 185 |  | Se generan datos pre-fabricados de prueba. 3.2 La función del componente recibe los datos. | 1d | 2024-05-03 | 2024-05-03 | 183 |  | 12d |  |
| 186 |  | La función del componente hace que el ícono cambie de color a partir de los datos. | 1d | 2024-05-03 | 2024-05-03 | 183 |  | 12d |  |
| 187 |  | No hay errores en el color mostrado. | 1d | 2024-05-03 | 2024-05-03 | 183 |  | 10d |  |
| 188 | 1.2.13.4 | **El componente cumple con todas sus funcionalidades en una llamada de prueba en tiempo real.** | 2d | 2024-05-04 | 2024-05-05 |  |  | 10d |  |
| 189 |  | Se realizan llamadas en tiempo real. | 1d | 2024-05-04 | 2024-05-04 | 187 |  | 10d |  |
| 190 |  | El componente recibe información adecuadamente. | 1d | 2024-05-05 | 2024-05-05 | 189 |  | 10d |  |
| 191 |  | El componente cambia de color adecuadamente. | 1d | 2024-05-05 | 2024-05-05 | 189 |  | 10d |  |
| 192 |  | No hay errores en el color mostrado. | 1d | 2024-05-05 | 2024-05-05 | 189 |  | 10d |  |
| 193 | 1.2.14 | **Apartado de tiempo que muestra la duración de la llamada en tiempo real. Cambia de color de acuerdo a que tan cercano está al límite pre-establecido. Verde si está debajo del límite (2 minutos y medio o menos), amarillo si empieza a acercarse (2 minutos y** | 15d | 2024-04-30 A | 2024-05-15 |  | 2% | 1d |  |
| 194 | 1.2.14.1 | **El componente se muestra con sus 3 colores (verde, amarillo, rojo).** | 2d | 2024-04-30 | 2024-05-01 |  |  | 2d |  |
| 195 |  | Se crea el componente para el contador de tiempo de la llamada. | 1d | 2024-04-30 | 2024-04-30 |  |  | 2d | start no earlier than 2024-04-30 |
| 196 |  | Se posiciona el componente dentro de la página. | 1d | 2024-05-01 | 2024-05-01 | 195 |  | 14d |  |
| 197 |  | El componente se puede mostrar en 3 colores (verde, rojo, amarillo). | 1d | 2024-05-01 | 2024-05-01 | 195 |  | 14d |  |
| 198 |  | El componente no presenta ningún fallo. | 1d | 2024-05-01 | 2024-05-01 | 195 |  | 2d |  |
| 199 | 1.2.14.2 | **El componente se ha vincluado con éxito a consultas en la base de datos y se comunica con ella.** | 4d | 2024-05-02 | 2024-05-05 |  |  | 2d |  |
| 200 |  | Se implementa función para hacer que el componente cambie de color. | 1d | 2024-05-02 | 2024-05-02 | 198 |  | 2d |  |
| 201 |  | Se establecen parámetros dentro de la función según la información que se va a adquirir. | 1d | 2024-05-03 | 2024-05-03 | 200 |  | 2d |  |
| 202 |  | Se crea una rutina para recibir la información pertinente de la base de datos. | 1d | 2024-05-04 | 2024-05-04 | 201 |  | 2d |  |
| 203 |  | Se reciben los datos que necesita la función sin errores. | 1d | 2024-05-05 | 2024-05-05 | 202 |  | 2d |  |
| 204 | 1.2.14.3 | **El componente despliega el tiempo de la llamada exitósamente.** | 4d | 2024-05-06 | 2024-05-09 |  |  | 2d |  |
| 205 |  | Se realizan llamadas de prueba. | 1d | 2024-05-06 | 2024-05-06 | 203 |  | 2d |  |
| 206 |  | La función del componente recibe los datos. | 1d | 2024-05-07 | 2024-05-07 | 205 |  | 2d |  |
| 207 |  | La función del componente hace que muestre el tiempo actual de la llamada. | 1d | 2024-05-08 | 2024-05-08 | 206 |  | 2d |  |
| 208 |  | No hay errores en el tiempo mostrado. | 1d | 2024-05-09 | 2024-05-09 | 207 |  | 2d |  |
| 209 | 1.2.14.4 | **El color del componente cambia de acuerdo al tiempo de la llamada y cuánto se ha acercado al límite en una llamada en tiempo real.** | 4d | 2024-05-12 | 2024-05-15 |  |  | 1d |  |
| 210 |  | Se realizan llamadas de prueba. | 1d | 2024-05-12 | 2024-05-12 | 208 |  | 1d | start no earlier than 2024-05-12 |

| ID | WBS | Task | Duration | Start | Finish | Predecessors | Complete | Total float |
| --- | --- | --- | --- | --- | --- | --- | --- | --- |
| 211 |  | El componente recibe información adecuadamente. | 1d | 2024-05-13 | 2024-05-13 | 210 |  | 1d |
| 212 |  | El componente cambia de color adecuadamente (verde si está debajo de 2 minutos y medio, amarillo di se está en 2 minutos y medio hasta 3, rojo si se ha pasado de 3). | 1d | 2024-05-14 | 2024-05-14 | 211 |  | 1d |
| 213 |  | No hay errores en el tiempo o color mostrado. | 1d | 2024-05-15 | 2024-05-15 | 212 |  | 1d |
| 214 | 1.2.14.5 | **El agente podrá acceder a un apartado en donde podrá verificar la evaluación y en caso de haberlos esccrito comentarios específicos de su supervisor** | 5d | 2024-04-30 | 2024-05-04 |  |  | 11d |
| 215 | 1.2.14.5.1 | **Diseñar un botón que describa correctamente la sección.** | 1d | 2024-04-30 | 2024-04-30 | 255 |  | 11d |
| 216 |  | Agregar dentro del la interfaz del agente un botón con la descripción del apartado. | 0.5d | 2024-04-30 | 2024-04-30 |  |  | 11d |
| 217 |  | El botón debe de seguir la fuente y los colores de la empresa. | 0.5d | 2024-04-30 | 2024-04-30 | 216 |  | 11d |
| 218 | 1.2.14.5.2 | **Recuperar los datos y comentarios de la evaluación del supervisor.** | 1d | 2024-05-01 | 2024-05-01 |  |  | 11d |
| 219 |  | Acceder a la base de datos para jalar los resultados de la encuesta del respectivo agente | 1d | 2024-05-01 | 2024-05-01 | 217 |  | 11d |
| 220 | 1.2.14.5.3 | **Mostrar los datos y comentarios del supervisor de una forma clara.** | 3d | 2024-05-02 | 2024-05-04 |  |  | 11d |
| 221 |  | Desplegar los datos del agente específico. | 1d | 2024-05-02 | 2024-05-02 | 219 |  | 11d |
| 222 |  | Mostrar los puntajes en un apartado de la pantalla | 1d | 2024-05-03 | 2024-05-03 | 221 |  | 11d |
| 223 |  | Mostrar los comentarios específicos a la par de los puntajes | 1d | 2024-05-04 | 2024-05-04 | 222 |  | 11d |
| 224 | 1.2.14.6 | **Los agentes podrán ver las respuestas a sus solicitudes de ayuda, enviadas por el supervisor, en un centro de notificaciones en la pantalla principal. Para poder aplicar las medidas sugeridas por el supervisor.** | 12d | 2024-04-30 A | 2024-05-12 |  | 8% | 4d |
| 225 | 1.2.14.6.1 | **Creación de la pantalla para el centro de notificaciones.** | 0.5d | 2024-04-30 A | 2024-04-30 |  | 50% | 15.5d |
| 226 |  | Diseñar la interfaz de usuario para el centro de notificaciones. | 0.5d | 2024-04-30 A | 2024-04-30 |  | 80% | 15.5d |
| 227 |  | Desarrollar la funcionalidad básica de la pantalla de notificaciones. | 0.5d | 2024-04-30 A | 2024-04-30 |  | 20% | 15.5d |
| 228 | 1.2.14.6.2 | **Conexión de la página web con el centro de notificaciones.** | 1d | 2024-05-08 | 2024-05-08 |  |  | 4d |
| 229 |  | Configurar la comunicación entre la página web y la pantalla de notificaciones. | 1d | 2024-05-08 | 2024-05-08 | 293 |  | 7d |
| 230 |  | Probar la integración para asegurar un funcionamiento correcto. | 1d | 2024-05-08 | 2024-05-08 | 293 |  | 4d |
| 231 | 1.2.14.6.3 | **Integración del texto de sugerencia o ayuda del supervisor en la pantalla de notificaciones.** | 2d | 2024-05-09 | 2024-05-10 |  |  | 4d |
| 232 |  | Establecer un canal de comunicación para recibir el texto del supervisor. | 1d | 2024-05-09 | 2024-05-09 | 230 |  | 4d |
| 233 |  | Desarrollar la lógica para dirigir el texto del supervisor a la pantalla de notificaciones. | 1d | 2024-05-10 | 2024-05-10 | 232 |  | 4d |
| 234 | 1.2.14.6.4 | **Implementación del cuadro de mensaje para mostrar el texto del supervisor.** | 1d | 2024-05-12 | 2024-05-12 |  |  | 4d |
| 235 |  | Diseñar la apariencia del cuadro de mensaje. | 0.5d | 2024-05-12 | 2024-05-12 | 233 |  | 4d |
| 236 |  | Programar la funcionalidad para mostrar el texto del supervisor en el cuadro de mensaje. | 0.5d | 2024-05-12 | 2024-05-12 | 235 |  | 4d |
| 237 | 1.3 | **Supervisor** | 18d | 2024-04-25 A | 2024-05-15 |  | 3% | 1d |
| 238 | 1.3.1 | **En la pantalla principal, se mostrará un listado de llamadas activas que serán escaladas, ordenadas por prioridad, donde se evaluara principalmente el estado emocional del cliente. Por ejemplo: Si el cliente se encuentra estresado, la llamada con el agent** | 8d | 2024-04-29 | 2024-05-06 |  |  |  |
| 239 | 1.3.1.1 | **Finalización de la implementación de las funciones de acceso a los datos de la base de datos.** | 2d | 2024-04-29 | 2024-04-30 |  |  | 7d |
| 240 |  | Investigar y seleccionar algoritmos adecuados para cada tarea. | 1d | 2024-04-29 | 2024-04-29 |  |  | 7d |
| 241 |  | Implementar y probar los algoritmos para garantizar su precisión y eficacia. | 1d | 2024-04-30 | 2024-04-30 | 240 |  | 7d |
| 242 | 1.3.1.2 | **Desarrollo completo de los algoritmos para análisis sentimental del cliente, cálculo de duración acumulada de la llamada y detección de solicitud de asistencia del agente.** | 2d | 2024-05-01 | 2024-05-02 |  |  | 7d |
| 243 |  | Investigar y seleccionar algoritmos adecuados para cada tarea. | 1d | 2024-05-01 | 2024-05-01 | 241 |  | 7d |
| 244 |  | Implementar y probar los algoritmos para garantizar su precisión y eficacia. | 1d | 2024-05-02 | 2024-05-02 | 243 |  | 7d |
| 245 | 1.3.1.3 | **Diseño finalizado de la interfaz de usuario para visualizar las llamadas activas con prioridad.** | 2d | 2024-05-03 | 2024-05-04 |  |  | 7d |
| 246 |  | Diseñar la disposición y la apariencia de la interfaz de usuario. | 1d | 2024-05-03 | 2024-05-03 | 244 |  | 7d |
| 247 |  | Crear prototipos y realizar pruebas de usabilidad para asegurar una experiencia de usuario óptima. | 1d | 2024-05-04 | 2024-05-04 | 246 |  | 7d |
| 248 | 1.3.1.4 | **Implementación exitosa del algoritmo de resaltado de llamadas según su prioridad.** | 2d | 2024-05-05 | 2024-05-06 |  |  | 7d |
| 249 |  | Integrar el algoritmo de resaltado en la interfaz de usuario. | 1d | 2024-05-05 | 2024-05-05 | 247 |  | 7d |
| 250 |  | Probar el algoritmo con datos de prueba para verificar su funcionamiento correcto. | 1d | 2024-05-06 | 2024-05-06 | 249 |  | 7d |
| 251 | 1.3.2 | **En la sección designada para mostrar las llamadas activas, en la pantalla principal, por cada llamada activa se tendrá el nombre del agente, el nombre del cliente, el tiempo desde que comenzó la llamada y un análisis sentimental, el cuál a través de una f** | 18d | 2024-04-25 | 2024-05-15 |  |  | 0d |
| 252 | 1.3.2.1 | **Se recupera la información de una llamada** | 4d | 2024-04-25 | 2024-04-30 |  |  | 0d |
| 253 |  | Configurar endpoints que recuperen los datos en tiempo real de las llamadas activas | 1d | 2024-04-25 | 2024-04-25 |  |  |  |
| 254 |  | Obtener datos actualizados de las llamadas activas | 1d | 2024-04-26 | 2024-04-26 | 253 |  |  |
| 255 |  | Utilizar Amazon Connect para actualizar los datos continuamente | 1d | 2024-04-29 | 2024-04-29 | 254 |  |  |
| 256 |  | Verifica que la API recupere todos los datos | 1d | 2024-04-30 | 2024-04-30 | 255 |  |  |
| 257 | 1.3.2.2 | **Se visualiza el nombre del agente, el nombre del cliente, el tiempo acumulado y análisis sentimental** | 2d | 2024-05-01 | 2024-05-02 |  |  | 0d |
| 258 |  | Crear una aplicacion React con los respectivos componentes | 1d | 2024-05-01 | 2024-05-01 | 256 |  |  |
| 259 |  | Permitir que la interfaz se actualice a medida que cambian los datos | 1d | 2024-05-02 | 2024-05-02 | 258 |  |  |
| 260 | 1.3.2.3 | **Hay un botón para unirse/escuchar la llamada** | 1d | 2024-05-03 | 2024-05-03 |  |  | 0d |
| 261 |  | Desarrollar la funcionalidad, en conjunto con Amazon Connect, para que el botón "Monitorear" permita a los supervisores o agentes autorizados unirse a la llamada en curso de manera silenciosa. | 1d | 2024-05-03 | 2024-05-03 | 259 |  |  |
| 262 | 1.3.2.4 | **Hay un botón que dice transcripción de la llamada** | 5d | 2024-05-06 | 2024-05-10 |  |  | 0d |
| 263 |  | Crear y diseñar el componente en React | 1d | 2024-05-06 | 2024-05-06 | 261 |  |  |
| 264 |  | Asegúrate de que la transcripción sea precisa y que se muestre correctamente al presionar el botón. | 1d | 2024-05-07 | 2024-05-07 | 263 |  |  |
| 265 |  | Obtener datos actualizados de la transcripción | 1d | 2024-05-08 | 2024-05-08 | 264 |  |  |
| 266 |  | Utilizar Amazon Connect para actualizar los datos continuamente | 1d | 2024-05-09 | 2024-05-09 | 265 |  |  |
| 267 |  | Verifica que la API recupere todos los datos | 1d | 2024-05-10 | 2024-05-10 | 266 |  |  |
| 268 | 1.3.2.5 | **Se visualizan todos los componentes anteriores para varias llamadas** | 3d | 2024-05-13 | 2024-05-15 |  |  | 0d |
| 269 |  | Generar, con Amazon Connect, varias llamadas | 1d | 2024-05-13 | 2024-05-13 | 267 |  |  |
| 270 |  | Desplegar las llamadas que el centro de contacto tenga en curso | 1d | 2024-05-14 | 2024-05-14 | 269 |  |  |
| 271 |  | Cargar los datos para múltiples llamadas simuláneas | 1d | 2024-05-15 | 2024-05-15 | 270 |  |  |
| 272 | 1.3.3 | **Por cada llamada activa, ícono que cambia de color si un agente pide ayuda, al presionarlo, se mostrara el problema escrito por el agente y los datos del cliente, un botón para responder directamente, así como un botón para acceder a la transcripción de l** | 5d | 2024-05-04 | 2024-05-08 |  |  | 4d |
| 273 | 1.3.3.1 | **Cambiar los colores de un ícono a partir de datos dummies:** | 1d | 2024-05-07 | 2024-05-07 |  |  | 8d |
| 274 |  | Implementar la lógica para generar datos dummy que indiquen el estado de un agente | 1d | 2024-05-07 | 2024-05-07 | 250 |  | 8d |
| 275 |  | Utilizar estos datos para cambiar dinámicamente el color del ícono en la interfaz de | 1d | 2024-05-07 | 2024-05-07 | 250 |  | 8d |
| 276 | 1.3.3.2 | **Desplegar una ventana emergente al dar tap sobre el ícono de ayuda:** | 2d | 2024-05-07 | 2024-05-08 |  |  | 7d |
| 277 |  | Implementar un controlador de eventos para que el ícono de ayuda abra una ventana emergente al presionarlo. | 1d | 2024-05-07 | 2024-05-07 | 250 |  | 8d |
| 278 |  | Diseñar la interfaz de la ventana emergente para mostrar el mensaje recuperado del agente. | 2d | 2024-05-07 | 2024-05-08 | 250 |  | 7d |
| 279 | 1.3.3.3 | **Reutilizar los botones del requerimiento 2 y desplegarlos en la misma ventana emergente:** | 1d | 2024-05-04 | 2024-05-04 |  |  | 4d |
| 280 |  | Identificar y reutilizar el código y los elementos de interfaz de usuario del requerimiento 2 que correspondan a los botones necesarios. | 1d | 2024-05-04 | 2024-05-04 | 261 |  | 11d |

| ID | WBS | Task | Duration | Start | Finish | Predecessors | Complete | Total float | Constraint |
| --- | --- | --- | --- | --- | --- | --- | --- | --- | --- |
| 281 |  | Integrar estos botones en la ventana emergente creada en el milestone 4. | 1d | 2024-05-04 | 2024-05-04 | 261 |  | 4d |  |
| 282 | 1.3.3.4 | **Crear un botón de responder y desplegar una ventana emergente al darle tap:** | 1d | 2024-05-05 | 2024-05-05 |  |  | 4d |  |
| 283 |  | Agregar un botón de responder a la ventana emergente creada en el milestone 4. | 1d | 2024-05-05 | 2024-05-05 | 281 |  | 10d |  |
| 284 |  | Implementar un controlador de eventos para este botón que abra otra ventana emergente al presionarlo. | 1d | 2024-05-05 | 2024-05-05 | 281 |  | 4d |  |
| 285 | 1.3.4 | **Al dar tap sobre el botón de responder del requerimiento 3, se desplegará una ventana con un cuadro de texto para escribir la respuesta, y un botón para enviarla. Y un mensaje de confirmación al finalizar.** | 4d | 2024-05-06 | 2024-05-09 |  |  | 4d |  |
| 286 | 1.3.4.1 | **Poder recuperar un mensaje escrito por el supervisor a través del cuadro de texto, una vez que se le de a enviar:** | 2d | 2024-05-06 | 2024-05-07 |  |  | 8d |  |
| 287 |  | Implementar la interfaz de usuario para incluir un cuadro de texto y un botón de enviar en la ventana emergente creada en el requerimiento 3 del supervisor. | 2d | 2024-05-06 | 2024-05-07 | 284 |  | 8d |  |
| 288 |  | Configurar un controlador de eventos para el botón de enviar. | 1d | 2024-05-06 | 2024-05-06 | 284 |  | 9d |  |
| 289 |  | Capturar el texto ingresado por el supervisor en el cuadro de texto al presionar el botón de enviar. | 1d | 2024-05-06 | 2024-05-06 | 284 |  | 9d |  |
| 290 | 1.3.4.2 | **Registrar el mensaje guardado en la base de datos:** | 2d | 2024-05-06 | 2024-05-07 |  |  | 4d |  |
| 291 |  | Configurar el controlador en el API para insertar el mensaje en la BD. | 1d | 2024-05-06 | 2024-05-06 | 284 |  | 9d |  |
| 292 |  | Configurar la conexión al endpoint, en la aplicación. | 1d | 2024-05-06 | 2024-05-06 | 284 |  | 9d |  |
| 293 |  | Escribir la lógica para insertar el mensaje escrito por el supervisor en la base de datos al presionar el botón de enviar a través del endpoint configurado en la actividad anterior. | 2d | 2024-05-06 | 2024-05-07 | 284 |  | 4d |  |
| 294 | 1.3.4.3 | **Mostrar un mensaje de confirmación al finalizar este proceso:** | 2d | 2024-05-08 | 2024-05-09 |  |  | 6d |  |
| 295 |  | Diseñar un mensaje de confirmación que se muestre al supervisor una vez que el mensaje haya sido correctamente guardado en la base de datos. | 1d | 2024-05-08 | 2024-05-08 | 293 |  | 6d |  |
| 296 |  | Implementar la lógica para mostrar este mensaje de confirmación en la interfaz de usuario. | 1d | 2024-05-09 | 2024-05-09 | 295 |  | 6d |  |
| 297 | 1.3.5 | **En la pantalla principal se visualizará el nombre del cliente y el tiempo de espera de manera cronológica, con las llamadas que tienen más tiempo de espera ubicadas en la parte superior de la lista.** | 16d | 2024-04-29 | 2024-05-15 |  |  | 1d |  |
| 298 | 1.3.5.1 | **Visualizar el nombre del cliente y el tiempo de espera de cada llamada en espera en la pantalla principal.** | 10d | 2024-04-29 | 2024-05-08 |  |  | 7d |  |
| 299 |  | Extraer datos de llamadas en espera desde Connect utilizando Lambda. | 5d | 2024-04-29 | 2024-05-03 |  |  | 12d | start no earlier than 2024-04-29 |
| 300 |  | Procesar los datos extrídos y prepararlos para su visualización. | 3d | 2024-05-01 | 2024-05-03 |  |  | 12d | finish no earlier than 2024-05-03 |
| 301 |  | Diseñar la interfaz de usuario en la pantalla principal para mostrar el nombre del cliente y el tiempo de espera de cada llamada. | 1d | 2024-05-04 | 2024-05-04 |  |  | 11d | start no earlier than 2024-05-04 |
| 302 |  | Integrar los datos procesados con la interfaz de usuario. | 3d | 2024-05-06 | 2024-05-08 |  |  | 3d | finish no earlier than 2024-05-08 |
| 303 | 1.3.5.2 | **Mostrar las llamadas en espera en orden cronológico.** | 6d | 2024-05-09 | 2024-05-15 |  |  | 1d |  |
| 304 |  | Utilizar Lambda para desarrollar la lógica de ordenamiento de las llamadas en espera basada en el tiempo de espera. | 4d | 2024-05-09 | 2024-05-13 | 302 |  | 3d | finish no earlier than 2024-05-13 |
| 305 |  | Integrar la lógica de ordenamiento desarrollda con la interfaz de usuario. | 3d | 2024-05-12 | 2024-05-14 |  |  | 2d | finish no earlier than 2024-05-14 |
| 306 |  | Realizar pruebas para asegurar de que las llamadas en espara se ordenan correctamente en la pantalla principal. | 2d | 2024-05-14 | 2024-05-15 |  |  | 1d | finish no earlier than 2024-05-15 |
| 307 | 1.3.6 | **La pantalla principal contara con un menú lateral en el que se visualicen las pantallas de navegación. En la pantalla principal se muestran los agentes del grupo, cada uno con un indicador acerca de su estado (disponible, en llamada, descanso o ausente).** | 17d | 2024-04-26 A | 2024-05-15 |  | 21% | 1d |  |
| 308 | 1.3.6.1 | **Ver el menú lateral con las opciones de navegación del supervisor. Generar el diseño del menú** | 6d | 2024-04-26 A | 2024-05-03 |  | 58% | 12d |  |
| 309 |  | Crear las referencias a las páginas del menú | 3d | 2024-04-26 A | 2024-04-30 A |  | 100% |  | finish no earlier than 2024-04-30 |
| 310 |  | Colocar las referencias | 2d | 2024-05-01 | 2024-05-02 |  |  | 13d | finish no earlier than 2024-05-02 |
| 311 |  | Realizar el diseño adecuado al resto de la interfaz | 1d | 2024-05-03 A | 2024-05-03 |  | 50% | 12d | start no earlier than 2024-05-03 |
| 312 | 1.3.6.2 | **Ver la información de los agentes de manera cuadriculada, con datos que no provienen de la base de datos.** | 9d | 2024-05-06 A | 2024-05-15 |  | 7% | 1d |  |
| 313 |  | Generar el diseño de la cuadrícula | 3d | 2024-05-06 | 2024-05-08 |  |  | 7d | finish no earlier than 2024-05-08 |
| 314 |  | Generar las rutas para acceder a la base de datos | 1d | 2024-05-09 | 2024-05-09 |  |  | 6d | start no earlier than 2024-05-09 |
| 315 |  | Generar las tablas en la base de datos | 2d | 2024-05-09 A | 2024-05-11 |  | 30% | 5d | finish no earlier than 2024-05-11 |
| 316 |  | Colocar datos de prueba para probar la funcionalidad | 2d | 2024-05-13 | 2024-05-14 |  |  | 2d | finish no earlier than 2024-05-14 |
| 317 |  | Asignar los colores adecuados para mostrar el funcionamiento de estas | 1d | 2024-05-15 | 2024-05-15 |  |  | 1d | start no earlier than 2024-05-15 |
| 318 | 1.3.6.3 | **La información que se muestra de los agentes proviene de la base de datos.** | 5d | 2024-05-04 | 2024-05-08 |  |  | 7d |  |
| 319 |  | Conectar la base de datos con el backend | 1d | 2024-05-04 | 2024-05-04 |  |  | 11d | start no earlier than 2024-05-04 |
| 320 |  | Rellenar la base de datos con información para generar pruebas de la funcionalidad | 2d | 2024-05-05 | 2024-05-06 |  |  | 9d | finish no earlier than 2024-05-06 |
| 321 |  | Colocar las referencias correspondientes a las rutas para la información de cada agente | 2d | 2024-05-07 | 2024-05-08 |  |  | 7d | start no earlier than 2024-05-07 |
| 322 | 1.3.7 | **En la pantalla de KPIs general se mostrara la resolución al primer contactoc(porcentaje), abandono de llamadas (porcentaje), nivel de servicio(porcentaje), tiempo promedio de llamada(métrica), velocidad media de respuesta(métrica), ocupación de centro de** | 5d | 2024-05-07 | 2024-05-11 |  |  |  |  |
| 323 | 1.3.7.1 | **Se muestra con texto los diferentes apartados con el KPI que deberían de mostrar.** | 3d | 2024-05-07 | 2024-05-09 |  |  | 2d |  |
| 324 |  | Generar el acomodo responsivo de los apartados de los KPIs | 2d | 2024-05-07 | 2024-05-08 |  |  | 7d | finish no earlier than 2024-05-08 |
| 325 |  | Generar los contextos y clases para colocar los objetos de los KPIs | 2d | 2024-05-08 | 2024-05-09 |  |  | 6d | start no earlier than 2024-05-08 |
| 326 |  | Colocar en texto cada uno de los KPIs en su espacio correspondiente | 1d | 2024-05-09 | 2024-05-09 |  |  |  |  |
| 327 | 1.3.7.2 | **Las métricas y porcentajes mostrados son datos prueba** | 2d | 2024-05-09 | 2024-05-11 |  |  | 1d |  |
| 328 |  | Crear las tablas necesarias para la información de los KPIs | 1d | 2024-05-10 | 2024-05-10 |  |  |  |  |
| 329 |  | Generar las rutas y referencias necesarias para obtener la información de la base de dato | 1d | 2024-05-09 | 2024-05-09 |  |  | 6d | start no earlier than 2024-05-09 |
| 330 |  | Colocar datos prueba en cada KPI para mostrar la funcionalidad de los colores | 2d | 2024-05-09 | 2024-05-11 |  |  | 5d | finish no earlier than 2024-05-11 |
| 331 |  | Generar la conexión con Amazon Connect | 2d | 2024-05-09 | 2024-05-10 |  |  | 5d | finish no earlier than 2024-05-10 |
| 332 | 1.3.7.3 | **Las métricas y porcentajes visualizados provienen de la base de datos y de Amazon Connect, según corresponda.** | 2d | 2024-05-08 | 2024-05-09 |  |  | 0d |  |
| 333 |  | Llenar la base de datos con los datos necesarios | 1d | 2024-05-08 | 2024-05-08 |  |  |  |  |
| 334 |  | Colocar las referencias correspondientes para cada KPI respecto a la ruta para obtener la información correspondiente | 1d | 2024-05-09 | 2024-05-09 |  |  | 6d | start no earlier than 2024-05-09 |
| 335 | 1.3.8 | **Al seleccionar uno de los KPI en la pantalla se podrán visualizar datos históricos por medio de gráficas para elegir el tiempo deseado, siendo 60 días el máximo atrás que se puede elegir.** | 10d | 2024-05-01 | 2024-05-11 |  |  | 0d |  |
| 336 | 1.3.8.1 | **Visualizar el filtro de búsqueda, con su filtro por defecto de 15 minutos y poder elegir una fecha que vaya máximo 60 días atrás.** | 8d | 2024-05-01 | 2024-05-08 |  |  | 0d |  |
| 337 |  | Colocar un botón de Ver más | 1d | 2024-05-01 | 2024-05-01 |  |  |  |  |
| 338 |  | Colocar el filtro de selección de búsqueda | 1d | 2024-05-02 | 2024-05-02 |  |  | 13d | start no earlier than 2024-05-02 |
| 339 |  | Generar la vista con la gráfica, en lugar de la métrica anteriormente visualizada | 1d | 2024-05-03 | 2024-05-03 |  |  | 12d | start no earlier than 2024-05-03 |
| 340 |  | Colocar gráficas con datos prueba para verificar la visualización | 1d | 2024-05-06 | 2024-05-06 |  |  | 9d | start no earlier than 2024-05-06 |
| 341 |  | Generar los queries necesarios para realizar la busqueda | 2d | 2024-05-07 | 2024-05-08 |  |  | 7d | finish no earlier than 2024-05-08 |
| 342 | 1.3.8.2 | **Se visualizan las gráficas correspondientes al KPI elegido, con su filtro por defecto.** | 8d | 2024-05-03 | 2024-05-11 |  |  | 0d |  |
| 343 |  | Se colocan las rutas adecuadas para poder hacer los queries necesarios | 2d | 2024-05-03 | 2024-05-04 |  |  |  |  |
| 344 |  | Se ingresan los datos necesarias para poder realizar las pruebas dentro de la base de datos | 2d | 2024-05-07 | 2024-05-08 |  |  | 7d | finish no earlier than 2024-05-08 |
| 345 |  | Se hace uso únicamente el llamado de información de los últimos 15 minutos | 3d | 2024-05-08 | 2024-05-11 |  |  | 5d | finish no earlier than 2024-05-11 |
| 346 | 1.3.8.3 | **La información mostrada en las gráficas corresponde al filtro elegido de búsqueda.** | 5d | 2024-05-06 | 2024-05-10 |  |  | 0d |  |
| 347 |  | Se realiza la prueba de selección del tiempo con la información correspondiente. | 5d | 2024-05-06 | 2024-05-10 |  |  |  |  |
| 348 |  | Se implementan los colores y diseño establecido. | 1d | 2024-05-07 | 2024-05-07 |  |  |  |  |
| 349 | 1.3.9 | **El supervisor puede acceder al perfil de cada agente desde un botón en el menú lateral. Podrá ver los datos generales del agente (nombre, imagen, horario laboral) y los KPIs de su atención de llamadas en un día específico (llamadas respondidas, abandonada** | 16d | 2024-04-29 | 2024-05-15 |  |  | 1d |  |
| 350 | 1.3.9.1 | **Visualizar lo datos generales de los agentes.** | 10d | 2024-04-29 | 2024-05-08 |  |  | 2d |  |

| ID | WBS | Task | Duration | Start | Finish | Predecessors | Total float | Constraint |
| --- | --- | --- | --- | --- | --- | --- | --- | --- |
| 351 |  | Configurar el acceso a los datos de los agentes desde Amazon Connect. | 5d | 2024-04-29 | 2024-05-03 |  | 9d | finish no earlier than 2024-05-03 |
| 352 |  | Extraer los datos de los agentes desde Connect utilizando Lambda. | 3d | 2024-05-01 | 2024-05-03 | 351 |  |  |
| 353 |  | Procesar los datos para su visualización. | 3d | 2024-05-01 | 2024-05-03 |  | 10d | finish no earlier than 2024-05-03 |
| 354 |  | Diseñar la interfaz de usuario para mostrar los datos generales de los agentes. | 2d | 2024-05-05 | 2024-05-06 | 353 | 9d | finish no earlier than 2024-05-06 |
| 355 |  | Integrar los datos procesados con la interfaz de usuario para visualizar los datos generales de los agentes. | 3d | 2024-05-06 | 2024-05-08 |  | 7d | finish no earlier than 2024-05-08 |
| 356 | 1.3.9.2 | **Consultar los KPIs de atención de llamadas.** | 7d | 2024-05-08 | 2024-05-15 |  | 0d |  |
| 357 |  | Configurar la extracción de datos de los KPIs desde Connect. | 5d | 2024-05-08 | 2024-05-13 |  |  |  |
| 358 |  | Desarrollar la lógica para consultar y calcular los KPIs (llamadas respondidas, abandonadas, duración promedio). | 3d | 2024-05-12 | 2024-05-14 | 357 |  |  |
| 359 |  | Integrar la visualización de los KPIs en la interfaz de usuario. | 2d | 2024-05-14 | 2024-05-15 | 358 |  |  |
| 360 | 1.3.10 | **El superviso puede acceder a un apartado en donde podrá contetar unas preguntas las cuales podrán evaluar el desempeño del agente. Y en cas de necesitar ser más objetivo durante su comentario, complementarlo con un comentario más detallado.** | 5.5d | 2024-04-25 | 2024-05-02 |  | 13.5d |  |
| 361 | 1.3.10.1 | **Redactar las preguntas necesarias que se pueda argumentar de manera clara y efectiva para describir el desempaño del agente.** | 2d | 2024-04-25 | 2024-04-26 |  | 13.5d |  |
| 362 |  | Redactar preguntas que ayuden a puntuar y a describir el trabajo del agente. | 1d | 2024-04-25 | 2024-04-25 |  | 13.5d |  |
| 363 |  | Agregar un apartado donde se puedan puntuar del 1 al 10 el desempeño del agente | 1d | 2024-04-26 | 2024-04-26 | 362 | 13.5d |  |
| 364 | 1.3.10.2 | **Diseñar el apartado de las preguntas de manera clara.** | 1d | 2024-04-29 | 2024-04-29 |  | 13.5d |  |
| 365 |  | Diseñar una interfaz donde se pueda ver la división clara de cada una de las preguntas. | 1d | 2024-04-29 | 2024-04-29 | 363 | 13.5d |  |
| 366 | 1.3.10.3 | **Agregar una sección de comentarios para cada una de las preguntas.** | 0.5d | 2024-04-30 | 2024-04-30 |  | 13.5d |  |
| 367 |  | Establecer de manera clara que apartado de comentarios corresponde a cada pregunta | 0.5d | 2024-04-30 | 2024-04-30 | 365 | 13.5d |  |
| 368 | 1.3.10.4 | **Guardar los datos de la encuesta al agente en la base de datos.** | 1d | 2024-04-30 | 2024-05-01 |  | 13.5d |  |
| 369 |  | Crear un post un método post donde se puedan subir los resultados y comentarios a la base de datos hacia su respectivo agente | 1d | 2024-04-30 | 2024-05-01 | 367 | 13.5d |  |
| 370 | 1.3.10.5 | **Enviar los datos de la encuesta al agente.** | 1d | 2024-05-01 | 2024-05-02 |  | 13.5d |  |
| 371 |  | Crear un método get donde se pueda obtener los resultados y comentarios de los respectivos agentes | 1d | 2024-05-01 | 2024-05-02 | 369 | 13.5d |  |

## Version 2 (saved 2024-05-01, file qualicenter.mpp)

Note of the change: Merge pull request #2 from GRM028/Gerardo

Last finish stays 2024-05-15. Complete tasks 20 → 29.

Removed: 124 Recibir audio en tiempo real y proporcionar transcripciones en tiempo real

Changed:

| ID | Task | Start | Finish | Duration | Complete | Total float | Predecessors | Other |
| --- | --- | --- | --- | --- | --- | --- | --- | --- |
| 1 | **Sprint 85%** |  |  |  | 9% → 14% |  |  |  |
| 59 | **Agente** |  |  |  | 8% → 15% |  |  |  |
| 60 | **El agente visualiza un script del dialogo que va a tener con el cliente:** | 2024-04-25 A |  |  | 0% → 50% | 3d → 6d |  |  |
| 61 | **Tener un panel visible donde se colocara el script.** | 2024-04-25 A | 2024-04-25 A |  | 0% → 100% | 10d → none |  |  |
| 62 | Realizar el front-end del panel donde se colocara el script. | 2024-04-25 A | 2024-04-25 A |  | 0% → 100% | 23d → none |  |  |
| 63 | **Colocar un script dummy en el panel** | 2024-04-30 A | 2024-04-30 A |  | 0% → 100% | 0d → none |  |  |
| 64 | Crear un script con datos dummy directo en el front-end | 2024-04-30 A | 2024-04-30 A |  | 0% → 100% |  |  |  |
| 67 | **Colocar los campos de registro** | 2024-05-05 A |  |  | 0% → 50% |  |  |  |
| 68 | Crear y hacer funcionales los campos de registro de la información del cliente | 2024-05-05 A |  |  | 0% → 50% | 19d → 6d |  |  |
| 69 | **Para que el agente, durante la llamada, conozca la información del cliente, existe un apartado de información del cliente que será desplegado tal y como se especifica EN EL REQUERIMIENTO NUMERO 3 DE HERRAMIENTAS EXTERNAS** | 2024-04-29 A |  |  | 0% → 50% |  |  |  |
| 70 | **Visualiza un apartado con datos dummy del cliente** | 2024-04-29 A | 2024-05-01 A |  | 0% → 100% |  |  |  |
| 71 | Los datos dummy del cliente se visualizan en el Frontend del panel | 2024-04-29 A | 2024-05-01 A |  | 0% → 100% |  |  |  |
| 80 | **Con los datos del cliente y a partir de sus pólizas, se despliega un menú que muestra los vehículos registrados del cliente.** | 2024-04-25 → 2024-05-01 (+6d) | 2024-04-29 → 2024-05-03 (+4d) |  | 0% → 33% | 1d → none |  |  |
| 81 | **Visualiza un apartado con datos dummy del cliente** | 2024-04-25 A | 2024-04-25 A |  | 0% → 100% | 16d → none |  |  |
| 82 | Los datos dummy del cliente se visualizan en el Frontend del panel | 2024-04-25 A | 2024-04-25 A |  | 0% → 100% | 29d → none |  |  |
| 83 | **Visualiza un apartado con los datos reales del cliente en tiempo rea** |  | 2024-04-29 → 2024-05-01 (+2d) | 2d → 4d |  |  |  |  |
| 85 | Dependiendo de la póliza del cliente con un condicional despliega información sobre sus autos | 2024-04-29 → 2024-05-01 (+2d) | 2024-04-29 → 2024-05-01 (+2d) |  |  | 29d → 14d |  |  |
| 121 | **En la sección izquierda, de la pantalla del agente, se muestra una transcripción en tiempo real de la llamada en curso** |  | 2024-05-12 → 2024-05-09 (-3d) | 12d → 10d | 13% → 11% | 4d → none |  |  |
| 123 | Recuperar la transcripción de la llamada |  | 2024-05-01 → 2024-04-30 A (-1d) | 2d → 1d | 80% → 100% | 4d → none |  | was named Configurar Amazon Comprehend o Transcribe para convertir audio a texto |
| 124 | Desarrollar un sistema de bufferización para almacenar temporalmente las transcripciones mientras son procesadas y antes de ser mostradas. | 2024-05-04 → 2024-05-01 (-3d) | 2024-05-05 → 2024-05-02 (-3d) |  |  | 17d → 1d | Recibir audio en tiempo real y proporcionar transcripciones en tiempo real → 123 |  |
| 125 | Crear API endpoints para recuperar las transcripciones desde el almacenamiento temporal o buffer y enviarlas al frontend de la aplicación del agente. | 2024-05-06 → 2024-05-03 (-3d) | 2024-05-07 → 2024-05-04 (-3d) |  |  | 17d → 7d |  |  |
| 126 | **Se muestra la transcripción de la llamada** | 2024-05-08 → 2024-05-05 (-3d) | 2024-05-10 → 2024-05-07 (-3d) |  |  | 4d → 7d |  |  |
| 127 | Diseñar la interfaz donde se mostrarán las transcripciones | 2024-05-08 → 2024-05-05 (-3d) | 2024-05-08 → 2024-05-05 (-3d) |  |  | 17d → 7d |  |  |
| 128 | Crear una aplicación en React para crear los componentes funcionales necesarios y para actualizaciones en tiempo real | 2024-05-09 → 2024-05-06 (-3d) | 2024-05-09 → 2024-05-06 (-3d) |  |  | 17d → 7d |  |  |
| 129 | Asegúrate de que la transcripción mostrada esté sincronizada con el audio de la llamada, actualizando la pantalla a medida que se disponga | 2024-05-10 → 2024-05-07 (-3d) | 2024-05-10 → 2024-05-07 (-3d) |  |  | 17d → 7d |  |  |
| 130 | **Se anima la transcripción para que sea claramente legible** | 2024-05-12 → 2024-05-08 (-4d) | 2024-05-12 → 2024-05-08 (-4d) |  |  | 4d → 7d |  |  |
| 131 | Crear y diseñar el archivo CSS o bibliotecas de JavaScript para animar el scroll del texto | 2024-05-12 → 2024-05-08 (-4d) | 2024-05-12 → 2024-05-08 (-4d) |  |  | 17d → 7d |  |  |
| 192 | **Apartado de tiempo que muestra la duración de la llamada en tiempo real. Cambia de color de acuerdo a que tan cercano está al límite pre-establecido. Verde si está debajo del límite (2 minutos y medio o menos), amarillo si empieza a acercarse (2 minutos y** |  |  |  | 2% → 6% |  |  |  |
| 213 | **El agente podrá acceder a un apartado en donde podrá verificar la evaluación y en caso de haberlos esccrito comentarios específicos de su supervisor** | 2024-04-30 A |  |  | 0% → 20% |  |  |  |
| 214 | **Diseñar un botón que describa correctamente la sección.** | 2024-04-30 A | 2024-04-30 A |  | 0% → 100% | 11d → none |  |  |
| 215 | Agregar dentro del la interfaz del agente un botón con la descripción del apartado. | 2024-04-30 A | 2024-04-30 A |  | 0% → 100% | 11d → none |  |  |
| 216 | El botón debe de seguir la fuente y los colores de la empresa. | 2024-04-30 A | 2024-04-30 A |  | 0% → 100% | 11d → none |  |  |
| 223 | **Los agentes podrán ver las respuestas a sus solicitudes de ayuda, enviadas por el supervisor, en un centro de notificaciones en la pantalla principal. Para poder aplicar las medidas sugeridas por el supervisor.** |  | 2024-05-12 → 2024-05-15 (+3d) | 12d → 15d |  | 4d → 1d |  |  |
| 227 | **Conexión de la página web con el centro de notificaciones.** | 2024-05-08 → 2024-05-12 (+4d) | 2024-05-08 → 2024-05-12 (+4d) |  |  | 4d → 1d |  |  |
| 228 | Configurar la comunicación entre la página web y la pantalla de notificaciones. | 2024-05-08 → 2024-05-12 (+4d) | 2024-05-08 → 2024-05-12 (+4d) |  |  | 7d → 4d |  |  |
| 229 | Probar la integración para asegurar un funcionamiento correcto. | 2024-05-08 → 2024-05-12 (+4d) | 2024-05-08 → 2024-05-12 (+4d) |  |  | 4d → 1d |  |  |
| 230 | **Integración del texto de sugerencia o ayuda del supervisor en la pantalla de notificaciones.** | 2024-05-09 → 2024-05-13 (+4d) | 2024-05-10 → 2024-05-14 (+4d) |  |  | 4d → 1d |  |  |
| 231 | Establecer un canal de comunicación para recibir el texto del supervisor. | 2024-05-09 → 2024-05-13 (+4d) | 2024-05-09 → 2024-05-13 (+4d) |  |  | 4d → 1d |  |  |
| 232 | Desarrollar la lógica para dirigir el texto del supervisor a la pantalla de notificaciones. | 2024-05-10 → 2024-05-14 (+4d) | 2024-05-10 → 2024-05-14 (+4d) |  |  | 4d → 1d |  |  |
| 233 | **Implementación del cuadro de mensaje para mostrar el texto del supervisor.** | 2024-05-12 → 2024-05-15 (+3d) | 2024-05-12 → 2024-05-15 (+3d) |  |  | 4d → 1d |  |  |
| 234 | Diseñar la apariencia del cuadro de mensaje. | 2024-05-12 → 2024-05-15 (+3d) | 2024-05-12 → 2024-05-15 (+3d) |  |  | 4d → 1d |  |  |
| 235 | Programar la funcionalidad para mostrar el texto del supervisor en el cuadro de mensaje. | 2024-05-12 → 2024-05-15 (+3d) | 2024-05-12 → 2024-05-15 (+3d) |  |  | 4d → 1d |  |  |
| 236 | **Supervisor** |  |  |  | 3% → 6% |  |  |  |
| 238 | **Recuperar los datos del analisis sentimental y duración de la llamada de Amazon Connect** | 2024-04-29 → 2024-05-01 (+2d) | 2024-04-30 → 2024-05-02 (+2d) |  |  | 7d → 1d |  | was named Finalización de la implementación de las funciones de acceso a los datos de la base de datos. |
| 239 | Investigar y seleccionar algoritmos adecuados para cada tarea. | 2024-04-29 → 2024-05-01 (+2d) | 2024-04-29 → 2024-05-01 (+2d) |  |  | 7d → 1d |  | constraint none → start no earlier than 2024-05-01 |
| 240 | Implementar y probar los algoritmos para garantizar su precisión y eficacia. | 2024-04-30 → 2024-05-02 (+2d) | 2024-04-30 → 2024-05-02 (+2d) |  |  | 7d → 1d |  |  |
| 241 | **Desarrollo completo de los algoritmos para análisis sentimental del cliente, cálculo de duración acumulada de la llamada y detección de solicitud de asistencia del agente.** | 2024-05-01 → 2024-05-03 (+2d) | 2024-05-02 → 2024-05-03 (+1d) | 2d → 1d |  | 7d → 1d |  |  |
| 242 | Recuperar información del estado de la solicitud de asistencia. | 2024-05-01 → 2024-05-03 (+2d) | 2024-05-01 → 2024-05-03 (+2d) |  |  | 7d → 12d |  | was named Investigar y seleccionar algoritmos adecuados para cada tarea. |
| 243 | Generar funciones de cálculo de duración de llamada, calculo del análisis sentimental del agente y detección solicitud de asistencia e iniciar pruebas de visualización. | 2024-05-02 → 2024-05-03 (+1d) | 2024-05-02 → 2024-05-03 (+1d) |  |  | 7d → 1d | 242 → 240 | was named Implementar y probar los algoritmos para garantizar su precisión y eficacia. |
| 244 | **Diseño finalizado de la interfaz de usuario para visualizar las llamadas activas con prioridad.** | 2024-05-03 → 2024-05-04 (+1d) |  | 2d → 1d |  | 7d → 1d |  |  |
| 245 | Diseñar la disposición y la apariencia de la interfaz de usuario. | 2024-05-03 → 2024-05-04 (+1d) | 2024-05-03 → 2024-05-04 (+1d) |  |  | 7d → 11d |  |  |
| 246 | Crear prototipos y realizar pruebas de usabilidad para asegurar una experiencia de usuario óptima. |  |  |  |  | 7d → 1d | 245 → 243 |  |
| 247 | **Implementación exitosa del algoritmo de resaltado de llamadas según su prioridad.** |  | 2024-05-06 → 2024-05-05 (-1d) | 2d → 1d |  | 7d → 1d |  |  |
| 249 | Probar el algoritmo con datos de prueba para verificar su funcionamiento correcto. | 2024-05-06 → 2024-05-05 (-1d) | 2024-05-06 → 2024-05-05 (-1d) |  |  | 7d → 1d | 248 → 246 |  |
| 250 | **En la sección designada para mostrar las llamadas activas, en la pantalla principal, por cada llamada activa se tendrá el nombre del agente, el nombre del cliente, el tiempo desde que comenzó la llamada y un análisis sentimental, el cuál a través de una f** | 2024-04-25 → 2024-05-03 (+8d) |  | 18d → 12d |  | 0d → 1d |  |  |
| 251 | **Se recupera la información de una llamada** | 2024-04-25 → 2024-05-03 (+8d) | 2024-04-30 → 2024-05-04 (+4d) | 4d → 2d |  | 0d → 1d |  |  |
| 252 | Configurar endpoints que recuperen los datos en tiempo real de las llamadas activas | 2024-04-25 → 2024-05-03 (+8d) | 2024-04-25 → 2024-05-03 (+8d) |  |  | none → 1d | none → 124 |  |
| 253 | Obtener datos actualizados de las llamadas activas | 2024-04-26 → 2024-05-04 (+8d) | 2024-04-26 → 2024-05-04 (+8d) |  |  | none → 11d |  |  |
| 254 | Utilizar Amazon Connect para actualizar los datos continuamente | 2024-04-29 → 2024-05-04 (+5d) | 2024-04-29 → 2024-05-04 (+5d) |  |  | none → 11d | 253 → 252 |  |
| 255 | Verifica que la API recupere todos los datos | 2024-04-30 → 2024-05-04 (+4d) | 2024-04-30 → 2024-05-04 (+4d) |  |  | none → 1d | 254 → 252 |  |
| 256 | **Se visualiza el nombre del agente, el nombre del cliente, el tiempo acumulado y análisis sentimental** | 2024-05-01 → 2024-05-05 (+4d) | 2024-05-02 → 2024-05-05 (+3d) | 2d → 1d |  | 0d → 1d |  |  |
| 257 | Crear una aplicacion React con los respectivos componentes | 2024-05-01 → 2024-05-05 (+4d) | 2024-05-01 → 2024-05-05 (+4d) |  |  | none → 10d |  |  |
| 258 | Permitir que la interfaz se actualice a medida que cambian los datos | 2024-05-02 → 2024-05-05 (+3d) | 2024-05-02 → 2024-05-05 (+3d) |  |  | none → 1d | 257 → 255 |  |
| 259 | **Hay un botón para unirse/escuchar la llamada** | 2024-05-03 → 2024-05-06 (+3d) | 2024-05-03 → 2024-05-06 (+3d) |  |  | 0d → 1d |  |  |
| 260 | Desarrollar la funcionalidad, en conjunto con Amazon Connect, para que el botón "Monitorear" permita a los supervisores o agentes autorizados unirse a la llamada en curso de manera silenciosa. | 2024-05-03 → 2024-05-06 (+3d) | 2024-05-03 → 2024-05-06 (+3d) |  |  | none → 1d |  |  |
| 261 | **Hay un botón que dice transcripción de la llamada** | 2024-05-06 → 2024-05-07 (+1d) | 2024-05-10 → 2024-05-12 (+2d) |  |  | 0d → 1d |  |  |
| 262 | Crear y diseñar el componente en React | 2024-05-06 → 2024-05-07 (+1d) | 2024-05-06 → 2024-05-07 (+1d) |  |  | none → 1d |  |  |
| 263 | Asegúrate de que la transcripción sea precisa y que se muestre correctamente al presionar el botón. | 2024-05-07 → 2024-05-08 (+1d) | 2024-05-07 → 2024-05-08 (+1d) |  |  | none → 1d |  |  |
| 264 | Obtener datos actualizados de la transcripción | 2024-05-08 → 2024-05-09 (+1d) | 2024-05-08 → 2024-05-09 (+1d) |  |  | none → 1d |  |  |
| 265 | Utilizar Amazon Connect para actualizar los datos continuamente | 2024-05-09 → 2024-05-10 (+1d) | 2024-05-09 → 2024-05-10 (+1d) |  |  | none → 1d |  |  |

| ID | Task | Start | Finish | Duration | Complete | Total float | Predecessors | Other |
| --- | --- | --- | --- | --- | --- | --- | --- | --- |
| 266 | Verifica que la API recupere todos los datos | 2024-05-10 → 2024-05-12 (+2d) | 2024-05-10 → 2024-05-12 (+2d) |  |  | none → 1d |  |  |
| 271 | **Por cada llamada activa, ícono que cambia de color si un agente pide ayuda, al presionarlo, se mostrara el problema escrito por el agente y los datos del cliente, un botón para responder directamente, así como un botón para acceder a la transcripción de l** | 2024-05-04 → 2024-05-06 (+2d) |  | 5d → 3d |  | 4d → 1d |  |  |
| 272 | **Cambiar los colores de un ícono a partir de datos dummies:** | 2024-05-07 → 2024-05-06 (-1d) | 2024-05-07 → 2024-05-06 (-1d) |  |  | 8d → 9d |  |  |
| 273 | Implementar la lógica para generar datos dummy que indiquen el estado de un agente | 2024-05-07 → 2024-05-06 (-1d) | 2024-05-07 → 2024-05-06 (-1d) |  |  | 8d → 9d |  |  |
| 274 | Utilizar estos datos para cambiar dinámicamente el color del ícono en la interfaz de | 2024-05-07 → 2024-05-06 (-1d) | 2024-05-07 → 2024-05-06 (-1d) |  |  | 8d → 9d |  |  |
| 275 | **Desplegar una ventana emergente al dar tap sobre el ícono de ayuda:** | 2024-05-07 → 2024-05-06 (-1d) | 2024-05-08 → 2024-05-07 (-1d) |  |  | 7d → 1d |  |  |
| 276 | Implementar un controlador de eventos para que el ícono de ayuda abra una ventana emergente al presionarlo. | 2024-05-07 → 2024-05-06 (-1d) | 2024-05-07 → 2024-05-06 (-1d) |  |  | 8d → 9d |  |  |
| 277 | Diseñar la interfaz de la ventana emergente para mostrar el mensaje recuperado del agente. | 2024-05-07 → 2024-05-06 (-1d) | 2024-05-08 → 2024-05-07 (-1d) |  |  | 7d → 1d |  |  |
| 278 | **Reutilizar los botones del requerimiento 2 y desplegarlos en la misma ventana emergente:** | 2024-05-04 → 2024-05-07 (+3d) | 2024-05-04 → 2024-05-07 (+3d) |  |  | 4d → 8d |  |  |
| 279 | Identificar y reutilizar el código y los elementos de interfaz de usuario del requerimiento 2 que correspondan a los botones necesarios. | 2024-05-04 → 2024-05-07 (+3d) | 2024-05-04 → 2024-05-07 (+3d) |  |  | 11d → 8d |  |  |
| 280 | Integrar estos botones en la ventana emergente creada en el milestone 4. | 2024-05-04 → 2024-05-07 (+3d) | 2024-05-04 → 2024-05-07 (+3d) |  |  | 4d → 8d |  |  |
| 281 | **Crear un botón de responder y desplegar una ventana emergente al darle tap:** | 2024-05-05 → 2024-05-08 (+3d) | 2024-05-05 → 2024-05-08 (+3d) |  |  | 4d → 1d |  |  |
| 282 | Agregar un botón de responder a la ventana emergente creada en el milestone 4. | 2024-05-05 → 2024-05-08 (+3d) | 2024-05-05 → 2024-05-08 (+3d) |  |  | 10d → 7d | 280 → 277 |  |
| 283 | Implementar un controlador de eventos para este botón que abra otra ventana emergente al presionarlo. | 2024-05-05 → 2024-05-08 (+3d) | 2024-05-05 → 2024-05-08 (+3d) |  |  | 4d → 1d | 280 → 277 |  |
| 284 | **Al dar tap sobre el botón de responder del requerimiento 3, se desplegará una ventana con un cuadro de texto para escribir la respuesta, y un botón para enviarla. Y un mensaje de confirmación al finalizar.** | 2024-05-06 → 2024-05-09 (+3d) | 2024-05-09 → 2024-05-10 (+1d) | 4d → 2d |  | 4d → 1d |  |  |
| 285 | **Poder recuperar un mensaje escrito por el supervisor a través del cuadro de texto, una vez que se le de a enviar:** | 2024-05-06 → 2024-05-09 (+3d) | 2024-05-07 → 2024-05-10 (+3d) |  |  | 8d → 5d |  |  |
| 286 | Implementar la interfaz de usuario para incluir un cuadro de texto y un botón de enviar en la ventana emergente creada en el requerimiento 3 del supervisor. | 2024-05-06 → 2024-05-10 (+4d) | 2024-05-07 → 2024-05-10 (+3d) | 2d → 1d |  | 8d → 5d |  | constraint none → finish no earlier than 2024-05-10 |
| 287 | Configurar un controlador de eventos para el botón de enviar. | 2024-05-06 → 2024-05-09 (+3d) | 2024-05-06 → 2024-05-09 (+3d) |  |  | 9d → 6d |  |  |
| 288 | Capturar el texto ingresado por el supervisor en el cuadro de texto al presionar el botón de enviar. | 2024-05-06 → 2024-05-09 (+3d) | 2024-05-06 → 2024-05-09 (+3d) |  |  | 9d → 6d |  |  |
| 289 | **Registrar el mensaje guardado en la base de datos:** | 2024-05-06 → 2024-05-09 (+3d) | 2024-05-07 → 2024-05-10 (+3d) |  |  | 4d → 1d |  |  |
| 290 | Configurar el controlador en el API para insertar el mensaje en la BD. | 2024-05-06 → 2024-05-09 (+3d) | 2024-05-06 → 2024-05-09 (+3d) |  |  | 9d → 6d |  |  |
| 291 | Configurar la conexión al endpoint, en la aplicación. | 2024-05-06 → 2024-05-09 (+3d) | 2024-05-06 → 2024-05-09 (+3d) |  |  | 9d → 6d |  |  |
| 292 | Escribir la lógica para insertar el mensaje escrito por el supervisor en la base de datos al presionar el botón de enviar a través del endpoint configurado en la actividad anterior. | 2024-05-06 → 2024-05-09 (+3d) | 2024-05-07 → 2024-05-10 (+3d) |  |  | 4d → 1d |  |  |
| 293 | **Mostrar un mensaje de confirmación al finalizar este proceso:** | 2024-05-08 → 2024-05-09 (+1d) |  | 2d → 1d |  |  |  |  |
| 294 | Diseñar un mensaje de confirmación que se muestre al supervisor una vez que el mensaje haya sido correctamente guardado en la base de datos. | 2024-05-08 → 2024-05-09 (+1d) | 2024-05-08 → 2024-05-09 (+1d) |  |  |  | 292 → 283 |  |
| 295 | Implementar la lógica para mostrar este mensaje de confirmación en la interfaz de usuario. |  |  |  |  |  | 294 → 283 |  |
| 296 | **En la pantalla principal se visualizará el nombre del cliente y el tiempo de espera de manera cronológica, con las llamadas que tienen más tiempo de espera ubicadas en la parte superior de la lista.** | 2024-04-29 A |  |  | 0% → 5% |  |  |  |
| 297 | **Visualizar el nombre del cliente y el tiempo de espera de cada llamada en espera en la pantalla principal.** | 2024-04-29 A |  |  | 0% → 8% |  |  |  |
| 300 | Diseñar la interfaz de usuario en la pantalla principal para mostrar el nombre del cliente y el tiempo de espera de cada llamada. | 2024-05-04 A | 2024-05-04 A |  | 0% → 100% | 11d → none |  |  |
| 306 | **La pantalla principal contara con un menú lateral en el que se visualicen las pantallas de navegación. En la pantalla principal se muestran los agentes del grupo, cada uno con un indicador acerca de su estado (disponible, en llamada, descanso o ausente).** |  |  |  | 21% → 28% |  |  |  |
| 307 | **Ver el menú lateral con las opciones de navegación del supervisor. Generar el diseño del menú** |  |  |  | 58% → 82% |  |  |  |
| 309 | Colocar las referencias | 2024-05-01 A |  |  | 0% → 70% |  |  |  |
| 321 | **En la pantalla de KPIs general se mostrara la resolución al primer contactoc(porcentaje), abandono de llamadas (porcentaje), nivel de servicio(porcentaje), tiempo promedio de llamada(métrica), velocidad media de respuesta(métrica), ocupación de centro de** | 2024-05-07 A |  |  | 0% → 6% |  |  |  |
| 322 | **Se muestra con texto los diferentes apartados con el KPI que deberían de mostrar.** | 2024-05-07 A |  |  | 0% → 16% | 2d → 6d |  |  |
| 323 | Generar el acomodo responsivo de los apartados de los KPIs | 2024-05-07 A |  |  | 0% → 40% |  |  |  |
| 348 | **El supervisor puede acceder al perfil de cada agente desde un botón en el menú lateral. Podrá ver los datos generales del agente (nombre, imagen, horario laboral) y los KPIs de su atención de llamadas en un día específico (llamadas respondidas, abandonada** | 2024-04-29 → 2024-04-30 A (+1d) |  | 16d → 15d | 0% → 3% |  |  |  |
| 349 | **Visualizar lo datos generales de los agentes.** | 2024-04-29 → 2024-04-30 A (+1d) |  | 10d → 9d | 0% → 5% | 2d → 7d |  |  |
| 350 | Configurar el acceso a los datos de los agentes desde Amazon Connect. | 2024-04-29 → 2024-04-30 (+1d) |  | 5d → 4d |  |  |  | constraint finish no earlier than 2024-05-03 → start no earlier than 2024-04-30 |
| 353 | Diseñar la interfaz de usuario para mostrar los datos generales de los agentes. | 2024-05-05 A |  |  | 0% → 40% | 9d → 4.5d |  |  |
| 359 | **El superviso puede acceder a un apartado en donde podrá contetar unas preguntas las cuales podrán evaluar el desempeño del agente. Y en cas de necesitar ser más objetivo durante su comentario, complementarlo con un comentario más detallado.** | 2024-04-25 A | 2024-05-02 → 2024-05-12 (+10d) | 5.5d → 14.5d | 0% → 18% | 13.5d → 4.5d |  |  |
| 360 | **Redactar las preguntas necesarias que se pueda argumentar de manera clara y efectiva para describir el desempaño del agente.** | 2024-04-25 A | 2024-04-26 → 2024-05-07 (+11d) | 2d → 11d | 0% → 50% | 13.5d → 4.5d |  |  |
| 361 | Redactar preguntas que ayuden a puntuar y a describir el trabajo del agente. | 2024-04-25 A | 2024-04-25 A |  | 0% → 100% | 13.5d → none |  |  |
| 362 | Agregar un apartado donde se puedan puntuar del 1 al 10 el desempeño del agente | 2024-04-26 → 2024-05-07 (+11d) | 2024-04-26 → 2024-05-07 (+11d) |  |  | 13.5d → 4.5d | 361 → 353 |  |
| 363 | **Diseñar el apartado de las preguntas de manera clara.** | 2024-04-29 → 2024-05-08 (+9d) | 2024-04-29 → 2024-05-08 (+9d) |  |  | 13.5d → 4.5d |  |  |
| 364 | Diseñar una interfaz donde se pueda ver la división clara de cada una de las preguntas. | 2024-04-29 → 2024-05-08 (+9d) | 2024-04-29 → 2024-05-08 (+9d) |  |  | 13.5d → 4.5d |  |  |
| 365 | **Agregar una sección de comentarios para cada una de las preguntas.** | 2024-04-30 → 2024-05-09 (+9d) | 2024-04-30 → 2024-05-09 (+9d) |  |  | 13.5d → 4.5d |  |  |
| 366 | Establecer de manera clara que apartado de comentarios corresponde a cada pregunta | 2024-04-30 → 2024-05-09 (+9d) | 2024-04-30 → 2024-05-09 (+9d) |  |  | 13.5d → 4.5d |  |  |
| 367 | **Guardar los datos de la encuesta al agente en la base de datos.** | 2024-04-30 → 2024-05-09 (+9d) | 2024-05-01 → 2024-05-10 (+9d) |  |  | 13.5d → 4.5d |  |  |
| 368 | Crear un post un método post donde se puedan subir los resultados y comentarios a la base de datos hacia su respectivo agente | 2024-04-30 → 2024-05-09 (+9d) | 2024-05-01 → 2024-05-10 (+9d) |  |  | 13.5d → 4.5d |  |  |
| 369 | **Enviar los datos de la encuesta al agente.** | 2024-05-01 → 2024-05-10 (+9d) | 2024-05-02 → 2024-05-12 (+10d) |  |  | 13.5d → 4.5d |  |  |
| 370 | Crear un método get donde se pueda obtener los resultados y comentarios de los respectivos agentes | 2024-05-01 → 2024-05-10 (+9d) | 2024-05-02 → 2024-05-12 (+10d) |  |  | 13.5d → 4.5d |  |  |

## Version 3 (saved 2024-05-02, file qualicenter.mpp)

Note of the change: Merge pull request #3 from Qualicenter/Angel

Last finish stays 2024-05-15. Complete tasks 29 → 34.

Changed:

| ID | Task | Start | Finish | Complete | Total float |
| --- | --- | --- | --- | --- | --- |
| 59 | **Agente** |  |  | 15% → 17% | 1d → 0d |
| 140 | **Botón de solicitud de ayuda en la pantalla principal. Al dar tap sobre él se desplegará un cuadro de texto para ingresar la descripción del problema y un botón que enviará la solicitud de ayuda, y un mensaje de confirmación al dar tap sobre el botón.** | 2024-05-01 A |  | 0% → 13% | 5d → 4d |
| 141 | **Mostrar el botón de ayuda en la pantalla principal del agente** | 2024-05-01 A | 2024-05-02 A | 0% → 100% | 5d → none |
| 142 | Implementar la interfaz de usuario para incluir el botón de ayuda en la pantalla principal. | 2024-05-01 A | 2024-05-01 A | 0% → 100% | 4d → none |
| 143 | Verificar que el botón sea visible y esté correctamente ubicado. | 2024-05-01 A | 2024-05-01 A | 0% → 100% | 4d → none |
| 144 | Confirmar que el botón responda a eventos de tap o clic. | 2024-05-01 A | 2024-05-01 A | 0% → 100% | 4d → none |
| 145 | Agregar un controlador de eventos al botón de ayuda. | 2024-05-02 A | 2024-05-02 A | 0% → 100% | 4d → none |
| 146 | Cuando el usuario toque el botón, enviar un mensaje a la consola para indicar que se ha activado el botón de ayuda. | 2024-05-02 A | 2024-05-02 A | 0% → 100% | 4d → none |

## Version 4 (saved 2024-05-03, file qualicenter.mpp)

Note of the change: 3 05 Nuevos Porcentajes hola

Last finish 2024-05-15 → 2024-05-21 (+6d). Complete tasks 34 → 66.

Changed:

| ID | Task | Start | Finish | Duration | Complete | Total float | Predecessors | Other |
| --- | --- | --- | --- | --- | --- | --- | --- | --- |
| 1 | **Sprint 85%** |  | 2024-05-15 → 2024-05-21 (+6d) | 19d → 23d | 14% → 27% |  |  |  |
| 2 | **Cliente** |  |  |  | 36% → 47% | 1.4d → 5.4d |  |  |
| 3 | **El sistema debe ser capaz de registrar el tiempo acumulado de la llamada desde el momento en que el cliente marca al número de atención.** |  |  |  | 32% → 52% | 1.4d → 5.4d |  |  |
| 14 | **Indicarle a Connect iniciar el registro del tiempo de la llamada.** |  |  |  | 8% → 54% | 1.4d → 5.4d |  |  |
| 16 | Implementar un atributo de Amazon Connect de duración de llamada para las llamadas finalizadas, el cual utilizará la API de Amazon Connect Flow para en cualquier momento obtener la duración total de una llamada finalizada. | 2024-05-02 A | 2024-05-05 A |  | 0% → 100% | 3.4d → none |  |  |
| 45 | **Se registra, por llamada, el analisis sentimental y la transcripción en tiempo real cuando la conexión entre el cliente y el agente comienza** |  |  |  | 43% → 50% |  |  |  |
| 46 | **Inicio una llamada entre agente y cliente** |  | 2024-05-02 → 2024-05-03 (+1d) | 7d → 8d |  |  |  |  |
| 49 | Integrar el API necesario para capturar el audio de la llamada en tiempo real | 2024-05-02 → 2024-05-03 (+1d) | 2024-05-02 → 2024-05-03 (+1d) |  |  |  | 48 → none |  |
| 50 | **Se registra el análisis sentimental del cliente** | 2024-05-03 A |  |  | 0% → 33% |  |  |  |
| 51 | Aprender a obtener el analisis sentimental | 2024-05-03 A | 2024-05-03 A |  | 0% → 100% |  |  | was named Aprender a usar Amazon Comprehend |
| 59 | **Agente** |  |  |  | 17% → 32% | 0d → 4d |  |  |
| 69 | **Para que el agente, durante la llamada, conozca la información del cliente, existe un apartado de información del cliente que será desplegado tal y como se especifica EN EL REQUERIMIENTO NUMERO 3 DE HERRAMIENTAS EXTERNAS** |  |  |  | 50% → 55% |  |  |  |
| 72 | **Visualiza un apartado con los datos reales del cliente en tiempo real** | 2024-05-02 A |  |  | 0% → 10% | 10d → 14d |  |  |
| 73 | Se crea una conexión a la base de datos y los datos del cliente se visualizan en tiempo real | 2024-05-02 A |  |  | 0% → 10% | 24d → 14d |  |  |
| 80 | **Con los datos del cliente y a partir de sus pólizas, se despliega un menú que muestra los vehículos registrados del cliente.** |  | 2024-05-03 → 2024-05-04 (+1d) | 3d → 4d |  |  |  |  |
| 83 | **Visualiza un apartado con los datos reales del cliente en tiempo rea** | 2024-04-26 → 2024-05-03 (+7d) | 2024-05-01 → 2024-05-04 (+3d) | 4d → 2d |  | 0d → none |  |  |
| 84 | Se crea una conexión a la base de datos. | 2024-04-26 → 2024-05-03 (+7d) | 2024-04-26 → 2024-05-03 (+7d) |  |  | none → 10d | 82 → none |  |
| 85 | Dependiendo de la póliza del cliente con un condicional despliega información sobre sus autos | 2024-05-01 → 2024-05-04 (+3d) | 2024-05-01 → 2024-05-04 (+3d) |  |  | 14d → 10d |  |  |
| 86 | **En caso de necesitar proveer una ayuda rápida al cliente, el agente tiene una sección en su pantalla principal con 2 botones, uno para mandar ambulancia y otro para enviar grúa.** | 2024-05-04 A | 2024-05-04 A |  | 0% → 100% | 1d → none |  |  |
| 87 | **Diseñar y posicionar los botones correctamente:** | 2024-05-04 A | 2024-05-04 A |  | 0% → 100% | 1d → none |  |  |
| 88 | Crear archivo CSS | 2024-05-04 A | 2024-05-04 A |  | 0% → 100% | 15d → none |  |  |
| 89 | Crear archivo JS | 2024-05-04 A | 2024-05-04 A |  | 0% → 100% | 15d → none |  |  |
| 90 | Diseñar los componentes en el espacio designado de la aplicación | 2024-05-04 A | 2024-05-04 A |  | 0% → 100% | 15d → none |  |  |
| 111 | **Cuando se selecciona la opción de enviar ayuda (requerimiento 5, 6), automáticamente se manda un mensaje de texto al número del cliente en llamada con la alerta de ayuda en camino.** | 2024-05-04 A |  |  | 0% → 33% | 9d → 13d |  |  |
| 115 | **Ser capaz de enviar mensajes de texto a través de un script de JS.** | 2024-05-04 A |  |  | 0% → 67% | 9d → 13d |  |  |
| 116 | Investigar sobre alguna librería o API que me permita enviar mensajes a un número dado. | 2024-05-04 A | 2024-05-04 A |  | 0% → 100% | 23d → none |  |  |
| 117 | Escribir un código capaz de enviar mensajes a un número dado. | 2024-05-05 A | 2024-05-05 A |  | 0% → 100% | 23d → none |  |  |
| 121 | **En la sección izquierda, de la pantalla del agente, se muestra una transcripción en tiempo real de la llamada en curso** |  |  |  | 11% → 10% |  |  |  |
| 122 | **Se recupera la transcripción registrada de la llamada** |  |  |  | 20% → 8% |  |  |  |
| 124 | Desarrollar un sistema de bufferización para almacenar temporalmente las transcripciones mientras son procesadas y antes de ser mostradas. |  | 2024-05-02 → 2024-05-06 (+4d) | 2d → 6d |  |  |  |  |
| 125 | Crear API endpoints para recuperar las transcripciones desde el almacenamiento temporal o buffer y enviarlas al frontend de la aplicación del agente. | 2024-05-03 → 2024-05-01 (-2d) | 2024-05-04 → 2024-05-06 (+2d) | 2d → 6d |  | 7d → 12d | 124 → 123 |  |
| 126 | **Se muestra la transcripción de la llamada** | 2024-05-05 → 2024-04-30 A (-5d) | 2024-05-07 → 2024-05-06 (-1d) | 3d → 7d | 0% → 19% | 6d → 12d |  |  |
| 127 | Diseñar la interfaz donde se mostrarán las transcripciones | 2024-05-05 → 2024-04-30 A (-5d) | 2024-05-05 → 2024-04-30 A (-5d) |  | 0% → 100% | 7d → none | 125 → none |  |
| 128 | Crear una aplicación en React para crear los componentes funcionales necesarios y para actualizaciones en tiempo real | 2024-05-06 → 2024-05-01 A (-5d) | 2024-05-06 → 2024-05-01 (-5d) |  | 0% → 30% | 7d → 12d |  |  |
| 129 | Asegúrate de que la transcripción mostrada esté sincronizada con el audio de la llamada, actualizando la pantalla a medida que se disponga | 2024-05-07 → 2024-05-02 (-5d) | 2024-05-07 → 2024-05-06 (-1d) | 1d → 5d |  | 7d → 12d |  |  |
| 130 | **Se anima la transcripción para que sea claramente legible** | 2024-05-08 → 2024-05-03 (-5d) | 2024-05-08 → 2024-05-04 (-4d) | 1d → 2d |  | 6d → none |  |  |
| 131 | Crear y diseñar el archivo CSS o bibliotecas de JavaScript para animar el scroll del texto | 2024-05-08 → 2024-05-03 (-5d) | 2024-05-08 → 2024-05-04 (-4d) | 1d → 2d |  | 7d → 14d | 129 → none |  |
| 132 | **Al estar dentro de una llamada con el cliente, el agente puede ver los botones que le dan la opción de silenciar o colgar la llamada. Al silenciarla, el cliente no será posible de escuchar al agente hasta que este deshabilite esta opción. Al colgar la lla** | 2024-05-02 A |  |  | 0% → 2% | 8.9d → 12.9d |  |  |
| 133 | **Visualizar la llamada al conectar Amazon Connect con la página.** | 2024-05-02 A |  |  | 0% → 3% | 8.9d → 12.9d |  |  |
| 134 | Una vez finalizado el funcionamiento y flujo de nuestra instancia de Connect, incluirla en nuestra página web en las pantallas correspondientes. | 2024-05-02 A |  |  | 0% → 10% | 8.9d → 12.9d |  |  |
| 162 | **Se muestra el analisis sentiimental y la duración acumulada por cada llamada en la aplicacion del agente al comenzar la llamada** |  |  |  | 40% → 44% |  |  |  |
| 163 | **Se recupera el análisis sentimental del cliente** |  |  |  | 67% → 73% |  |  |  |
| 165 | Crear endpoints de API que recojan los datos de análisis sentimental de las transcripciones y los pasen al frontend de la aplicación del agente. | 2024-05-02 A |  |  | 0% → 20% | 10.7d → 14.7d |  |  |
| 172 | **Ícono que cambia de color de acuerdo a los resultados del análisis sentimental del cliente. Se mantiene en verde si el cliente está feliz y tranquilo, amarillo si empieza a ponerse impaciente, y rojo si está enojado o frustrado.** |  |  |  | 3% → 45% | 9d → 13d |  |  |
| 173 | **El ícono se muestra con sus 3 colores (verde, amarillo, rojo).** |  | 2024-04-30 A |  | 13% → 100% | 14d → none |  |  |
| 174 | Se crea el componente para el ícono. |  | 2024-04-30 A |  | 50% → 100% | 14d → none |  |  |
| 175 | Se posiciona el componente dentro de la página. | 2024-04-30 A | 2024-04-30 A |  | 0% → 100% | 14d → none |  |  |
| 176 | El componente se puede mostrar en 3 colores (verde, rojo, amarillo). | 2024-04-30 A | 2024-04-30 A |  | 0% → 100% | 14d → none |  |  |
| 177 | El componente no presenta ningún fallo. | 2024-04-30 A | 2024-04-30 A |  | 0% → 100% | 9d → none |  |  |
| 178 | **El componente se ha vinculado con éxito a consultas en la base de datos y puede comunicarse con ella.** | 2024-05-01 A |  |  | 0% → 71% | 9d → 16d |  |  |
| 179 | Se implementa función para hacer que el componente cambie de color. | 2024-05-01 A | 2024-05-01 A |  | 0% → 100% | 13.5d → none |  |  |
| 180 | Se establecen parámetros dentro de la función según la información que se va a adquirir. | 2024-05-01 A | 2024-05-01 A |  | 0% → 100% | 9d → none |  |  |
| 181 | Se crea una rutina para recibir la información pertinente de la base de datos. | 2024-05-02 A |  |  | 0% → 50% | 12d → 16d |  |  |
| 182 | Se reciben los datos que necesita la función sin errores. | 2024-05-02 A |  |  | 0% → 50% | 9d → 13d |  |  |
| 192 | **Apartado de tiempo que muestra la duración de la llamada en tiempo real. Cambia de color de acuerdo a que tan cercano está al límite pre-establecido. Verde si está debajo del límite (2 minutos y medio o menos), amarillo si empieza a acercarse (2 minutos y** |  |  |  | 6% → 51% | 0d → 4d |  |  |
| 193 | **El componente se muestra con sus 3 colores (verde, amarillo, rojo).** | 2024-04-30 A | 2024-05-01 A |  | 0% → 100% | 1d → none |  |  |
| 194 | Se crea el componente para el contador de tiempo de la llamada. | 2024-04-30 A | 2024-04-30 A |  | 0% → 100% | 1d → none |  |  |
| 195 | Se posiciona el componente dentro de la página. | 2024-05-01 A | 2024-05-01 A |  | 0% → 100% | 13d → none |  |  |
| 196 | El componente se puede mostrar en 3 colores (verde, rojo, amarillo). | 2024-05-01 A | 2024-05-01 A |  | 0% → 100% | 13d → none |  |  |
| 197 | El componente no presenta ningún fallo. | 2024-05-01 A | 2024-05-01 A |  | 0% → 100% | 1d → none |  |  |
| 198 | **El componente se ha vincluado con éxito a consultas en la base de datos y se comunica con ella.** | 2024-05-02 A |  |  | 0% → 25% | 1d → 5d |  |  |
| 199 | Se implementa función para hacer que el componente cambie de color. | 2024-05-02 A | 2024-05-02 A |  | 0% → 100% | 1d → none |  |  |
| 213 | **El agente podrá acceder a un apartado en donde podrá verificar la evaluación y en caso de haberlos esccrito comentarios específicos de su supervisor** |  | 2024-05-04 → 2024-05-09 (+5d) | 5d → 10d | 20% → 56% | 10d → 9d |  |  |
| 217 | **Recuperar los datos y comentarios de la evaluación del supervisor.** | 2024-05-01 A | 2024-05-01 A |  | 0% → 100% | 10d → none |  |  |
| 218 | Acceder a la base de datos para jalar los resultados de la encuesta del respectivo agente | 2024-05-01 A | 2024-05-01 A |  | 0% → 100% | 10d → none |  |  |
| 219 | **Mostrar los datos y comentarios del supervisor de una forma clara.** | 2024-05-02 A | 2024-05-04 → 2024-05-09 (+5d) | 3d → 8d | 0% → 27% | 10d → 9d |  |  |
| 220 | Desplegar los datos del agente específico. | 2024-05-02 A |  |  | 0% → 80% | 10d → 14d |  |  |
| 222 | Mostrar los comentarios específicos a la par de los puntajes | 2024-05-04 → 2024-05-09 (+5d) | 2024-05-04 → 2024-05-09 (+5d) |  |  | 10d → 9d |  | constraint none → finish no earlier than 2024-05-09 |
| 223 | **Los agentes podrán ver las respuestas a sus solicitudes de ayuda, enviadas por el supervisor, en un centro de notificaciones en la pantalla principal. Para poder aplicar las medidas sugeridas por el supervisor.** |  | 2024-05-15 A |  | 8% → 100% | 0d → none |  |  |
| 224 | **Creación de la pantalla para el centro de notificaciones.** |  | 2024-04-30 A |  | 50% → 100% | 14.5d → none |  |  |

| ID | Task | Start | Finish | Duration | Complete | Total float |
| --- | --- | --- | --- | --- | --- | --- |
| 225 | Diseñar la interfaz de usuario para el centro de notificaciones. |  | 2024-04-30 A |  | 80% → 100% | 14.5d → none |
| 226 | Desarrollar la funcionalidad básica de la pantalla de notificaciones. |  | 2024-04-30 A |  | 20% → 100% | 14.5d → none |
| 227 | **Conexión de la página web con el centro de notificaciones.** | 2024-05-12 A | 2024-05-12 A |  | 0% → 100% | 0d → none |
| 228 | Configurar la comunicación entre la página web y la pantalla de notificaciones. | 2024-05-12 A | 2024-05-12 A |  | 0% → 100% | 4d → none |
| 229 | Probar la integración para asegurar un funcionamiento correcto. | 2024-05-12 A | 2024-05-12 A |  | 0% → 100% | 0d → none |
| 230 | **Integración del texto de sugerencia o ayuda del supervisor en la pantalla de notificaciones.** | 2024-05-13 A | 2024-05-14 A |  | 0% → 100% | 0d → none |
| 231 | Establecer un canal de comunicación para recibir el texto del supervisor. | 2024-05-13 A | 2024-05-13 A |  | 0% → 100% | 0d → none |
| 232 | Desarrollar la lógica para dirigir el texto del supervisor a la pantalla de notificaciones. | 2024-05-14 A | 2024-05-14 A |  | 0% → 100% | 0d → none |
| 233 | **Implementación del cuadro de mensaje para mostrar el texto del supervisor.** | 2024-05-15 A | 2024-05-15 A |  | 0% → 100% | 0d → none |
| 234 | Diseñar la apariencia del cuadro de mensaje. | 2024-05-15 A | 2024-05-15 A |  | 0% → 100% | 0d → none |
| 235 | Programar la funcionalidad para mostrar el texto del supervisor en el cuadro de mensaje. | 2024-05-15 A | 2024-05-15 A |  | 0% → 100% | 0d → none |
| 236 | **Supervisor** |  | 2024-05-15 → 2024-05-21 (+6d) | 18d → 22d | 6% → 17% |  |
| 250 | **En la sección designada para mostrar las llamadas activas, en la pantalla principal, por cada llamada activa se tendrá el nombre del agente, el nombre del cliente, el tiempo desde que comenzó la llamada y un análisis sentimental, el cuál a través de una f** | 2024-05-03 → 2024-05-07 (+4d) | 2024-05-15 → 2024-05-21 (+6d) |  |  |  |
| 251 | **Se recupera la información de una llamada** | 2024-05-03 → 2024-05-07 (+4d) | 2024-05-04 → 2024-05-08 (+4d) |  |  |  |
| 252 | Configurar endpoints que recuperen los datos en tiempo real de las llamadas activas | 2024-05-03 → 2024-05-07 (+4d) | 2024-05-03 → 2024-05-07 (+4d) |  |  |  |
| 253 | Obtener datos actualizados de las llamadas activas | 2024-05-04 → 2024-05-08 (+4d) | 2024-05-04 → 2024-05-08 (+4d) |  |  | 11d → 10d |
| 254 | Utilizar Amazon Connect para actualizar los datos continuamente | 2024-05-04 → 2024-05-08 (+4d) | 2024-05-04 → 2024-05-08 (+4d) |  |  | 11d → 10d |
| 255 | Verifica que la API recupere todos los datos | 2024-05-04 → 2024-05-08 (+4d) | 2024-05-04 → 2024-05-08 (+4d) |  |  |  |
| 256 | **Se visualiza el nombre del agente, el nombre del cliente, el tiempo acumulado y análisis sentimental** | 2024-05-05 → 2024-05-09 (+4d) | 2024-05-05 → 2024-05-09 (+4d) |  |  |  |
| 257 | Crear una aplicacion React con los respectivos componentes | 2024-05-05 → 2024-05-09 (+4d) | 2024-05-05 → 2024-05-09 (+4d) |  |  | 10d → 9d |
| 258 | Permitir que la interfaz se actualice a medida que cambian los datos | 2024-05-05 → 2024-05-09 (+4d) | 2024-05-05 → 2024-05-09 (+4d) |  |  |  |
| 259 | **Hay un botón para unirse/escuchar la llamada** | 2024-05-06 → 2024-05-10 (+4d) | 2024-05-06 → 2024-05-10 (+4d) |  |  |  |
| 260 | Desarrollar la funcionalidad, en conjunto con Amazon Connect, para que el botón "Monitorear" permita a los supervisores o agentes autorizados unirse a la llamada en curso de manera silenciosa. | 2024-05-06 → 2024-05-10 (+4d) | 2024-05-06 → 2024-05-10 (+4d) |  |  |  |
| 261 | **Hay un botón que dice transcripción de la llamada** | 2024-05-07 → 2024-05-12 (+5d) | 2024-05-12 → 2024-05-16 (+4d) |  |  |  |
| 262 | Crear y diseñar el componente en React | 2024-05-07 → 2024-05-12 (+5d) | 2024-05-07 → 2024-05-12 (+5d) |  |  |  |
| 263 | Asegúrate de que la transcripción sea precisa y que se muestre correctamente al presionar el botón. | 2024-05-08 → 2024-05-13 (+5d) | 2024-05-08 → 2024-05-13 (+5d) |  |  |  |
| 264 | Obtener datos actualizados de la transcripción | 2024-05-09 → 2024-05-14 (+5d) | 2024-05-09 → 2024-05-14 (+5d) |  |  |  |
| 265 | Utilizar Amazon Connect para actualizar los datos continuamente | 2024-05-10 → 2024-05-15 (+5d) | 2024-05-10 → 2024-05-15 (+5d) |  |  |  |
| 266 | Verifica que la API recupere todos los datos | 2024-05-12 → 2024-05-16 (+4d) | 2024-05-12 → 2024-05-16 (+4d) |  |  |  |
| 267 | **Se visualizan todos los componentes anteriores para varias llamadas** | 2024-05-13 → 2024-05-17 (+4d) | 2024-05-15 → 2024-05-21 (+6d) |  |  |  |
| 268 | Generar, con Amazon Connect, varias llamadas | 2024-05-13 → 2024-05-17 (+4d) | 2024-05-13 → 2024-05-17 (+4d) |  |  |  |
| 269 | Desplegar las llamadas que el centro de contacto tenga en curso | 2024-05-14 → 2024-05-20 (+6d) | 2024-05-14 → 2024-05-20 (+6d) |  |  |  |
| 270 | Cargar los datos para múltiples llamadas simuláneas | 2024-05-15 → 2024-05-21 (+6d) | 2024-05-15 → 2024-05-21 (+6d) |  |  |  |
| 271 | **Por cada llamada activa, ícono que cambia de color si un agente pide ayuda, al presionarlo, se mostrara el problema escrito por el agente y los datos del cliente, un botón para responder directamente, así como un botón para acceder a la transcripción de l** |  | 2024-05-08 → 2024-05-12 (+4d) | 3d → 6d |  | 0d → 7d |
| 278 | **Reutilizar los botones del requerimiento 2 y desplegarlos en la misma ventana emergente:** | 2024-05-07 → 2024-05-12 (+5d) | 2024-05-07 → 2024-05-12 (+5d) |  |  |  |
| 279 | Identificar y reutilizar el código y los elementos de interfaz de usuario del requerimiento 2 que correspondan a los botones necesarios. | 2024-05-07 → 2024-05-12 (+5d) | 2024-05-07 → 2024-05-12 (+5d) |  |  | 8d → 7d |
| 280 | Integrar estos botones en la ventana emergente creada en el milestone 4. | 2024-05-07 → 2024-05-12 (+5d) | 2024-05-07 → 2024-05-12 (+5d) |  |  | 8d → 7d |
| 296 | **En la pantalla principal se visualizará el nombre del cliente y el tiempo de espera de manera cronológica, con las llamadas que tienen más tiempo de espera ubicadas en la parte superior de la lista.** |  |  |  | 5% → 19% | 0d → 4d |
| 297 | **Visualizar el nombre del cliente y el tiempo de espera de cada llamada en espera en la pantalla principal.** |  | 2024-05-08 → 2024-05-10 (+2d) | 10d → 12d | 8% → 28% | 6d → 8d |
| 298 | Extraer datos de llamadas en espera desde Connect utilizando Lambda. | 2024-04-29 A | 2024-05-03 A |  | 0% → 100% | 12d → none |
| 299 | Procesar los datos extrídos y prepararlos para su visualización. | 2024-05-01 A | 2024-05-03 → 2024-05-10 (+7d) | 3d → 10d | 0% → 3% | 12d → 8d |
| 300 | Diseñar la interfaz de usuario en la pantalla principal para mostrar el nombre del cliente y el tiempo de espera de cada llamada. | 2024-05-04 A → 2024-05-04 | 2024-05-04 A → 2024-05-04 |  | 100% → 0% | none → 14d |
| 306 | **La pantalla principal contara con un menú lateral en el que se visualicen las pantallas de navegación. En la pantalla principal se muestran los agentes del grupo, cada uno con un indicador acerca de su estado (disponible, en llamada, descanso o ausente).** |  |  |  | 28% → 31% | 0d → 4d |
| 307 | **Ver el menú lateral con las opciones de navegación del supervisor. Generar el diseño del menú** |  |  |  | 82% → 92% | 11d → 15d |
| 309 | Colocar las referencias |  | 2024-05-02 A |  | 70% → 100% | 12d → none |
| 334 | **Al seleccionar uno de los KPI en la pantalla se podrán visualizar datos históricos por medio de gráficas para elegir el tiempo deseado, siendo 60 días el máximo atrás que se puede elegir.** | 2024-05-01 A |  |  | 0% → 5% | 0d → 8d |
| 335 | **Visualizar el filtro de búsqueda, con su filtro por defecto de 15 minutos y poder elegir una fecha que vaya máximo 60 días atrás.** | 2024-05-01 A |  |  | 0% → 17% | 0d → 10d |
| 336 | Colocar un botón de Ver más | 2024-05-01 A | 2024-05-01 A |  | 0% → 100% |  |
| 348 | **El supervisor puede acceder al perfil de cada agente desde un botón en el menú lateral. Podrá ver los datos generales del agente (nombre, imagen, horario laboral) y los KPIs de su atención de llamadas en un día específico (llamadas respondidas, abandonada** | 2024-04-30 A → 2024-04-25 A (-5d) | 2024-05-15 → 2024-05-08 (-7d) | 15d → 12d | 3% → 48% | 0d → 10d |
| 349 | **Visualizar lo datos generales de los agentes.** |  |  |  | 5% → 54% | 6d → 10d |
| 350 | Configurar el acceso a los datos de los agentes desde Amazon Connect. | 2024-04-30 A | 2024-05-03 A |  | 0% → 100% | 9d → none |
| 351 | Extraer los datos de los agentes desde Connect utilizando Lambda. | 2024-05-01 → 2024-05-04 A (+3d) | 2024-05-03 → 2024-05-06 A (+3d) |  | 0% → 100% |  |
| 352 | Procesar los datos para su visualización. | 2024-05-01 A |  |  | 0% → 10% |  |
| 355 | **Consultar los KPIs de atención de llamadas.** | 2024-05-08 → 2024-04-25 A (-13d) | 2024-05-15 → 2024-05-06 (-9d) | 7d → 10d | 0% → 40% | 0d → 12d |
| 356 | Configurar la extracción de datos de los KPIs desde Connect. | 2024-05-08 → 2024-04-25 A (-13d) | 2024-05-13 → 2024-05-01 (-12d) |  | 0% → 80% | none → 12d |
| 357 | Desarrollar la lógica para consultar y calcular los KPIs (llamadas respondidas, abandonadas, duración promedio). | 2024-05-12 → 2024-05-02 (-10d) | 2024-05-14 → 2024-05-04 (-10d) |  |  | none → 12d |
| 358 | Integrar la visualización de los KPIs en la interfaz de usuario. | 2024-05-14 → 2024-05-05 (-9d) | 2024-05-15 → 2024-05-06 (-9d) |  |  | none → 12d |

## Version 5 (saved 2024-05-06, file qualicenter.mpp)

Note of the change: Entrega Lunes 06 05 con Alvarito

Last finish stays 2024-05-21. Complete tasks 66 → 101.

Changed:

| ID | Task | Start | Finish | Duration | Complete | Total float | Other |
| --- | --- | --- | --- | --- | --- | --- | --- |
| 1 | **Sprint 85%** |  |  |  | 27% → 42% |  |  |
| 2 | **Cliente** |  |  |  | 47% → 58% |  |  |
| 45 | **Se registra, por llamada, el analisis sentimental y la transcripción en tiempo real cuando la conexión entre el cliente y el agente comienza** |  |  |  | 50% → 80% |  |  |
| 46 | **Inicio una llamada entre agente y cliente** |  |  |  | 86% → 99% |  |  |
| 49 | Integrar el API necesario para capturar el audio de la llamada en tiempo real | 2024-05-03 A | 2024-05-03 A |  | 0% → 100% |  |  |
| 50 | **Se registra el análisis sentimental del cliente** |  | 2024-05-07 A |  | 33% → 100% | 0d → none |  |
| 52 | Desarrollar el backend para enviar texto transcrito (del audio) al servicio de análisis de sentimientos | 2024-05-06 A | 2024-05-06 A |  | 0% → 100% |  |  |
| 53 | Configurar la integración para que cada segmento de texto transcrito se envíe al servicio de análisis tan pronto como esté disponible. | 2024-05-07 A | 2024-05-07 A |  | 0% → 100% |  |  |
| 54 | **Se registra la transcripción en tiempo real** | 2024-05-08 A |  |  | 0% → 30% |  |  |
| 55 | Verificar si se necesita usar Amazon Transcribe y aprenderlo, o si basta con Amazon Comprehend | 2024-05-08 A | 2024-05-08 A |  | 0% → 100% |  |  |
| 56 | Configurar Amazon Connect para enviar un audio | 2024-05-09 A |  |  | 0% → 20% |  | was named Configurar Amazon Connect para enviar un audio captuado al amazon comprehend |
| 59 | **Agente** |  |  |  | 32% → 50% |  |  |
| 60 | **El agente visualiza un script del dialogo que va a tener con el cliente:** |  | 2024-05-09 → 2024-05-15 (+6d) | 13d → 18d | 50% → 40% | 9d → 4d |  |
| 61 | **Tener un panel visible donde se colocara el script.** |  | 2024-04-25 A → 2024-04-26 A (+1d) | 1d → 2d |  |  |  |
| 62 | Realizar el front-end del panel donde se colocara el script. |  | 2024-04-25 A → 2024-04-26 A (+1d) | 1d → 2d |  |  |  |
| 63 | **Colocar un script dummy en el panel** |  | 2024-04-30 A → 2024-05-01 A (+1d) | 1d → 2d |  |  |  |
| 64 | Crear un script con datos dummy directo en el front-end |  | 2024-04-30 A → 2024-05-01 A (+1d) | 1d → 2d |  |  |  |
| 65 | **Visualizar datos reales en el script.** | 2024-05-03 A | 2024-05-04 → 2024-05-10 (+6d) | 2d → 8d | 0% → 30% |  |  |
| 66 | Crear una conexión a la Base de Datos para traer por la API los datos del cliente y colocarlos en tiempo real en el script. | 2024-05-03 A | 2024-05-04 → 2024-05-10 (+6d) | 2d → 8d | 0% → 30% |  |  |
| 67 | **Colocar los campos de registro** | 2024-05-05 A → 2024-05-12 (+7d) | 2024-05-09 → 2024-05-15 (+6d) | 5d → 4d | 50% → 0% | 9d → 0d |  |
| 68 | Crear y hacer funcionales los campos de registro de la información del cliente | 2024-05-05 A → 2024-05-12 (+7d) | 2024-05-09 → 2024-05-15 (+6d) | 5d → 4d | 50% → 0% | 9d → 4d | resources none → Eduardo |
| 80 | **Con los datos del cliente y a partir de sus pólizas, se despliega un menú que muestra los vehículos registrados del cliente.** | 2024-05-01 → 2024-04-25 A (-6d) | 2024-05-04 → 2024-05-15 (+11d) | 4d → 18d | 33% → 44% | none → 4d |  |
| 81 | **Visualiza un apartado con datos dummy del cliente** |  | 2024-04-25 A → 2024-04-30 A (+5d) | 1d → 4d |  |  |  |
| 82 | Los datos dummy del cliente se visualizan en el Frontend del panel |  | 2024-04-25 A → 2024-04-30 A (+5d) | 1d → 4d |  |  |  |
| 83 | **Visualiza un apartado con los datos reales del cliente en tiempo rea** | 2024-05-03 A | 2024-05-04 → 2024-05-15 (+11d) | 2d → 12d | 0% → 25% | none → 4d |  |
| 84 | Se crea una conexión a la base de datos. | 2024-05-03 A | 2024-05-03 → 2024-05-08 (+5d) | 1d → 6d | 0% → 50% | 10d → 4d |  |
| 85 | Dependiendo de la póliza del cliente con un condicional despliega información sobre sus autos | 2024-05-04 → 2024-05-09 (+5d) | 2024-05-04 → 2024-05-15 (+11d) | 1d → 6d |  | 10d → 4d |  |
| 111 | **Cuando se selecciona la opción de enviar ayuda (requerimiento 5, 6), automáticamente se manda un mensaje de texto al número del cliente en llamada con la alerta de ayuda en camino.** |  |  |  | 33% → 67% |  |  |
| 112 | **Ser capaz de generar una liga de un servicio de mapas (Como google maps) que contenga una dirección.** | 2024-05-04 A |  |  | 0% → 50% |  |  |
| 113 | Investigar al respecto, ya sea una API u otra forma de saberlo. | 2024-05-04 A | 2024-05-04 A |  | 0% → 100% | 24d → none |  |
| 115 | **Ser capaz de enviar mensajes de texto a través de un script de JS.** |  | 2024-05-05 A |  | 67% → 100% | 13d → none |  |
| 118 | Incluir un mensaje predeterminado e incluir el enlace alcanzado con el milestone | 2024-05-05 A | 2024-05-05 A |  | 0% → 100% | 13d → none |  |
| 121 | **En la sección izquierda, de la pantalla del agente, se muestra una transcripción en tiempo real de la llamada en curso** |  |  |  | 10% → 30% |  |  |
| 122 | **Se recupera la transcripción registrada de la llamada** |  |  |  | 8% → 17% |  |  |
| 124 | Desarrollar un sistema de bufferización para almacenar temporalmente las transcripciones mientras son procesadas y antes de ser mostradas. | 2024-05-01 A |  |  | 0% → 10% |  |  |
| 125 | Crear API endpoints para recuperar las transcripciones desde el almacenamiento temporal o buffer y enviarlas al frontend de la aplicación del agente. | 2024-05-01 A |  |  | 0% → 10% |  |  |
| 126 | **Se muestra la transcripción de la llamada** |  |  |  | 19% → 36% |  |  |
| 128 | Crear una aplicación en React para crear los componentes funcionales necesarios y para actualizaciones en tiempo real |  | 2024-05-01 A |  | 30% → 100% | 12d → none |  |
| 129 | La transcripción mostrada esté sincronizada con el audio de la llamada, actualizando la pantalla a medida que se disponga | 2024-05-02 A |  |  | 0% → 10% |  | was named Asegúrate de que la transcripción mostrada esté sincronizada con el audio de la llamada, actualizando la pantalla a medida que se disponga |
| 130 | **Se anima la transcripción para que sea claramente legible** | 2024-05-03 A |  |  | 0% → 99% |  |  |
| 131 | Crear y diseñar el archivo CSS o bibliotecas de JavaScript para animar el scroll del texto | 2024-05-03 A | 2024-05-04 A |  | 0% → 100% | 14d → none |  |
| 132 | **Al estar dentro de una llamada con el cliente, el agente puede ver los botones que le dan la opción de silenciar o colgar la llamada. Al silenciarla, el cliente no será posible de escuchar al agente hasta que este deshabilite esta opción. Al colgar la lla** |  |  |  | 2% → 84% |  |  |
| 133 | **Visualizar la llamada al conectar Amazon Connect con la página.** |  |  |  | 3% → 73% | 12.9d → 13.9d |  |
| 134 | Una vez finalizado el funcionamiento y flujo de nuestra instancia de Connect, incluirla en nuestra página web en las pantallas correspondientes. |  |  |  | 10% → 60% | 12.9d → 0.8d |  |
| 135 | Verificar el funcionamiento deseado de la llamada al realizar pruebas. | 2024-05-03 A |  |  | 0% → 80% | 8.9d → 0.8d |  |
| 136 | Observar el comportamiento del flujo de la llamada establecido. | 2024-05-04 A |  |  | 0% → 80% | 8.9d → 13.9d |  |
| 137 | **Utilizar eficientemente los botones incluidos en Amazon Connect para finalizar y silenciar llamadas.** | 2024-05-05 A | 2024-05-06 A |  | 0% → 100% | 12.9d → none |  |
| 138 | Al ver la llamada, se visualizan los botones de colgar y silenciar. | 2024-05-05 A | 2024-05-06 A |  | 0% → 100% | 8.9d → none |  |
| 139 | los botones cumplen con su función. | 2024-05-05 A | 2024-05-06 A |  | 0% → 100% | 8.9d → none |  |
| 140 | **Botón de solicitud de ayuda en la pantalla principal. Al dar tap sobre él se desplegará un cuadro de texto para ingresar la descripción del problema y un botón que enviará la solicitud de ayuda, y un mensaje de confirmación al dar tap sobre el botón.** |  |  |  | 13% → 60% |  |  |
| 147 | **Desplegar una ventana emergente al darle tap al botón:** | 2024-05-03 A | 2024-05-04 A |  | 0% → 100% | 8d → none |  |
| 148 | Crear una ventana emergente que se muestre al tocar el botón de ayuda. | 2024-05-03 A | 2024-05-03 A |  | 0% → 100% | 15d → none |  |
| 149 | Diseñar la interfaz de la ventana emergente para incluir un cuadro de texto y un botón de enviar. | 2024-05-03 A | 2024-05-04 A |  | 0% → 100% | 8d → none |  |
| 150 | **Guardar un mensaje escrito por el usuario en el cuadro de texto:** | 2024-05-05 A | 2024-05-06 A |  | 0% → 100% | 8d → none |  |
| 151 | Implementar la lógica para capturar el texto ingresado por el usuario en el cuadro detexto. | 2024-05-05 A | 2024-05-05 A |  | 0% → 100% | 13d → none |  |
| 152 | Verificar que el texto se almacene correctamente en una variable o estructura de datos. | 2024-05-05 A | 2024-05-05 A |  | 0% → 100% | 8d → none |  |
| 153 | Agregar un controlador de eventos al botón de enviar en la ventana emergente. | 2024-05-06 A | 2024-05-06 A |  | 0% → 100% | 12d → none |  |
| 154 | Al tocar el botón de enviar, enviar el mensaje almacenado en la consola. | 2024-05-06 A | 2024-05-06 A |  | 0% → 100% | 8d → none |  |
| 162 | **Se muestra el analisis sentiimental y la duración acumulada por cada llamada en la aplicacion del agente al comenzar la llamada** |  | 2024-05-04 → 2024-05-09 (+5d) | 4.3d → 10d | 44% → 41% |  |  |
| 164 | Conigurar Amazon Connect para analizar el sentimiento |  |  |  |  |  | was named Conigurar Amazon Comprehend para analizar el sentimiento |
| 166 | **Se visualiza el análisis sentimental en forma de barra de colores** | 2024-05-03 A | 2024-05-04 → 2024-05-09 (+5d) | 1.3d → 7d | 0% → 18% | 14.7d → 9d |  |
| 167 | Diseñar todos los componentes necesarios para mostrar una barra de colores | 2024-05-03 A | 2024-05-03 A |  | 0% → 100% | 11.5d → none |  |
| 168 | Hacer que el color cambie de acuerdo al análisis sentimental | 2024-05-03 A |  |  | 0% → 80% | 10.7d → 2.8d |  |
| 169 | Hacer que ela barra se actualice en tiempo real conforme cambian los datos de sentimiento que vienen del backend | 2024-05-03 → 2024-05-06 A (+3d) | 2024-05-04 → 2024-05-09 (+5d) | 1d → 4d | 0% → 3% | 10.7d → 9d | constraint none → finish no earlier than 2024-05-09 |
| 170 | **Se anima la barra para la actualización de cambio de colores** | 2024-05-03 A | 2024-05-03 A |  | 0% → 100% | 15.5d → none |  |
| 171 | Utilizar CSS transitions para animar cambios en la barra de colores | 2024-05-03 A | 2024-05-03 A |  | 0% → 100% | 11.5d → none |  |
| 172 | **Ícono que cambia de color de acuerdo a los resultados del análisis sentimental del cliente. Se mantiene en verde si el cliente está feliz y tranquilo, amarillo si empieza a ponerse impaciente, y rojo si está enojado o frustrado.** |  |  |  | 45% → 86% |  |  |
| 178 | **El componente se ha vinculado con éxito a consultas en la base de datos y puede comunicarse con ella.** |  | 2024-05-02 A |  | 71% → 100% | 16d → none |  |
| 181 | Se crea una rutina para recibir la información pertinente de la base de datos. |  | 2024-05-02 A |  | 50% → 100% | 16d → none |  |
| 182 | Se reciben los datos que necesita la función sin errores. |  | 2024-05-02 A |  | 50% → 100% | 13d → none |  |

| ID | Task | Start | Finish | Complete | Total float | Other |
| --- | --- | --- | --- | --- | --- | --- |
| 183 | **El componente cumple con todas sus funcionalidades al usar datos pre-fabricados.** | 2024-05-03 A | 2024-05-03 A | 0% → 100% | 13d → none |  |
| 184 | Se generan datos pre-fabricados de prueba. 3.2 La función del componente recibe los datos. | 2024-05-03 A | 2024-05-03 A | 0% → 100% | 11d → none |  |
| 185 | La función del componente hace que el ícono cambie de color a partir de los datos. | 2024-05-03 A | 2024-05-03 A | 0% → 100% | 11d → none |  |
| 186 | No hay errores en el color mostrado. | 2024-05-03 A | 2024-05-03 A | 0% → 100% | 9d → none |  |
| 187 | **El componente cumple con todas sus funcionalidades en una llamada de prueba en tiempo real.** | 2024-05-04 A |  | 0% → 50% |  |  |
| 188 | Se realizan llamadas en tiempo real. | 2024-05-04 A | 2024-05-04 A | 0% → 100% | 9d → none |  |
| 189 | El componente recibe información adecuadamente. | 2024-05-05 A | 2024-05-05 A | 0% → 100% | 9d → none |  |
| 192 | **Apartado de tiempo que muestra la duración de la llamada en tiempo real. Cambia de color de acuerdo a que tan cercano está al límite pre-establecido. Verde si está debajo del límite (2 minutos y medio o menos), amarillo si empieza a acercarse (2 minutos y** |  |  | 51% → 62% |  |  |
| 198 | **El componente se ha vincluado con éxito a consultas en la base de datos y se comunica con ella.** |  |  | 25% → 95% | 5d → 0.2d |  |
| 200 | Se establecen parámetros dentro de la función según la información que se va a adquirir. | 2024-05-03 A | 2024-05-03 A | 0% → 100% | 1d → none |  |
| 201 | Se crea una rutina para recibir la información pertinente de la base de datos. | 2024-05-04 A | 2024-05-04 A | 0% → 100% | 1d → none |  |
| 202 | Se reciben los datos que necesita la función sin errores. | 2024-05-05 A |  | 0% → 80% | 1d → 5d |  |
| 203 | **El componente despliega el tiempo de la llamada exitósamente.** | 2024-05-06 A |  | 0% → 5% |  |  |
| 204 | Se realizan llamadas de prueba. | 2024-05-06 A |  | 0% → 20% | 1d → 5d |  |
| 236 | **Supervisor** |  |  | 17% → 31% |  | resources Dani → none |
| 306 | **La pantalla principal contara con un menú lateral en el que se visualicen las pantallas de navegación. En la pantalla principal se muestran los agentes del grupo, cada uno con un indicador acerca de su estado (disponible, en llamada, descanso o ausente).** |  |  | 31% → 59% |  |  |
| 307 | **Ver el menú lateral con las opciones de navegación del supervisor. Generar el diseño del menú** |  | 2024-05-03 A | 92% → 100% | 15d → none |  |
| 310 | Realizar el diseño adecuado al resto de la interfaz |  | 2024-05-03 A | 50% → 100% | 15d → none |  |
| 311 | **Ver la información de los agentes de manera cuadriculada, con datos que no provienen de la base de datos.** |  |  | 7% → 53% |  |  |
| 312 | Generar el diseño de la cuadrícula | 2024-05-06 A | 2024-05-08 A | 0% → 100% | 7d → none |  |
| 314 | Generar las tablas en la base de datos |  |  | 30% → 70% |  |  |
| 316 | Asignar los colores adecuados para mostrar el funcionamiento de estas | 2024-05-15 A |  | 0% → 40% |  |  |
| 317 | **La información que se muestra de los agentes proviene de la base de datos.** | 2024-05-04 A |  | 0% → 20% |  |  |
| 318 | Conectar la base de datos con el backend | 2024-05-04 A | 2024-05-04 A | 0% → 100% | 11d → none |  |
| 321 | **En la pantalla de KPIs general se mostrara la resolución al primer contactoc(porcentaje), abandono de llamadas (porcentaje), nivel de servicio(porcentaje), tiempo promedio de llamada(métrica), velocidad media de respuesta(métrica), ocupación de centro de** |  |  | 6% → 16% |  |  |
| 322 | **Se muestra con texto los diferentes apartados con el KPI que deberían de mostrar.** |  |  | 16% → 42% |  |  |
| 323 | Generar el acomodo responsivo de los apartados de los KPIs |  |  | 40% → 70% |  |  |
| 325 | Colocar en texto cada uno de los KPIs en su espacio correspondiente | 2024-05-09 A |  | 0% → 70% |  |  |
| 348 | **El supervisor puede acceder al perfil de cada agente desde un botón en el menú lateral. Podrá ver los datos generales del agente (nombre, imagen, horario laboral) y los KPIs de su atención de llamadas en un día específico (llamadas respondidas, abandonada** |  |  | 48% → 94% |  |  |
| 349 | **Visualizar lo datos generales de los agentes.** |  | 2024-05-08 A | 54% → 100% | 10d → none |  |
| 352 | Procesar los datos para su visualización. |  | 2024-05-03 A | 10% → 100% | 1.8d → none |  |
| 353 | Diseñar la interfaz de usuario para mostrar los datos generales de los agentes. |  | 2024-05-06 A | 40% → 100% | 7.5d → none |  |
| 354 | Integrar los datos procesados con la interfaz de usuario para visualizar los datos generales de los agentes. | 2024-05-06 A | 2024-05-08 A | 0% → 100% | 7d → none |  |
| 355 | **Consultar los KPIs de atención de llamadas.** |  |  | 40% → 85% |  |  |
| 357 | Desarrollar la lógica para consultar y calcular los KPIs (llamadas respondidas, abandonadas, duración promedio). | 2024-05-02 A |  | 0% → 90% | 12d → 1.8d |  |
| 358 | Integrar la visualización de los KPIs en la interfaz de usuario. | 2024-05-05 A |  | 0% → 90% |  |  |
| 359 | **El superviso puede acceder a un apartado en donde podrá contetar unas preguntas las cuales podrán evaluar el desempeño del agente. Y en cas de necesitar ser más objetivo durante su comentario, complementarlo con un comentario más detallado.** |  |  | 18% → 63% |  |  |
| 360 | **Redactar las preguntas necesarias que se pueda argumentar de manera clara y efectiva para describir el desempaño del agente.** |  | 2024-05-07 A | 50% → 100% | 7.5d → none |  |
| 362 | Agregar un apartado donde se puedan puntuar del 1 al 10 el desempeño del agente | 2024-05-07 A | 2024-05-07 A | 0% → 100% | 4.5d → none |  |
| 363 | **Diseñar el apartado de las preguntas de manera clara.** | 2024-05-08 A | 2024-05-08 A | 0% → 100% | 7.5d → none |  |
| 364 | Diseñar una interfaz donde se pueda ver la división clara de cada una de las preguntas. | 2024-05-08 A | 2024-05-08 A | 0% → 100% | 4.5d → none |  |
| 365 | **Agregar una sección de comentarios para cada una de las preguntas.** | 2024-05-09 A |  | 0% → 90% |  |  |
| 366 | Establecer de manera clara que apartado de comentarios corresponde a cada pregunta | 2024-05-09 A |  | 0% → 90% | 4.5d → 7.5d |  |

## Version 6 (saved 2024-05-07, file qualicenter.mpp)

Note of the change: actualizado

Last finish stays 2024-05-21. Complete tasks 101 → 111.

Changed:

| ID | Task | Start | Finish | Complete | Total float |
| --- | --- | --- | --- | --- | --- |
| 1 | **Sprint 85%** |  |  | 42% → 48% |  |
| 59 | **Agente** |  |  | 50% → 56% |  |
| 67 | **Colocar los campos de registro** | 2024-05-12 A |  |  | 0d → 4d |
| 69 | **Para que el agente, durante la llamada, conozca la información del cliente, existe un apartado de información del cliente que será desplegado tal y como se especifica EN EL REQUERIMIENTO NUMERO 3 DE HERRAMIENTAS EXTERNAS** |  | 2024-05-04 A | 55% → 100% |  |
| 72 | **Visualiza un apartado con los datos reales del cliente en tiempo real** |  | 2024-05-04 A | 10% → 100% | 14d → none |
| 73 | Se crea una conexión a la base de datos y los datos del cliente se visualizan en tiempo real |  | 2024-05-04 A | 10% → 100% | 14d → none |
| 91 | **Durante su conversación con el cliente, el agente le pregunta al cliente si necesita el servicio de una grúa, si el cliente dice que sí, deberá oprimir el botón "Mandar Grúa", este botón mandará una alerta con la ubicación del cliente y el agente le dirá** | 2024-05-05 A |  | 0% → 90% |  |
| 92 | **Recuperar el número del cliente:** | 2024-05-05 A | 2024-05-06 A | 0% → 100% | 5d → none |
| 93 | API para recuperar el número del cliente | 2024-05-05 A | 2024-05-05 A | 0% → 100% | 15d → none |
| 94 | Conexión de la funcionalidad del botón con el BackEnd | 2024-05-06 A | 2024-05-06 A | 0% → 100% | 15d → none |
| 95 | **Recuperar la dirección del cliente** | 2024-05-07 A | 2024-05-07 A | 0% → 100% | 5d → none |
| 96 | Funciónalidad que reciba la dirección desde el FrontEnd | 2024-05-07 A | 2024-05-07 A | 0% → 100% | 15d → none |
| 97 | **Mandar un SMS con la alerta** | 2024-05-08 A |  | 0% → 85% |  |
| 98 | Configurar instancia Amazon SNS | 2024-05-08 A | 2024-05-09 A | 0% → 100% | 15d → none |
| 99 | API para mandar el mensaje | 2024-05-10 A | 2024-05-12 A | 0% → 100% | 15d → none |
| 100 | Función Lambda para mandar el mensaje | 2024-05-13 A |  | 0% → 55% | 15d → 5d |
| 111 | **Cuando se selecciona la opción de enviar ayuda (requerimiento 5, 6), automáticamente se manda un mensaje de texto al número del cliente en llamada con la alerta de ayuda en camino.** |  |  | 67% → 83% |  |
| 119 | **Enviar automáticamente mensajes al ingresar la dirección desde la página durante la llamada.** | 2024-05-04 A | 2024-05-04 A | 0% → 100% | 14d → none |
| 120 | A partir de la finalización del requerimiento 3 con el ingreso de la dirección en la página final, enlazar el script de mensaje de la milestone 2 con la funcionalidad de un botón de submit. | 2024-05-04 A | 2024-05-04 A | 0% → 100% | 24d → none |
| 121 | **En la sección izquierda, de la pantalla del agente, se muestra una transcripción en tiempo real de la llamada en curso** |  |  | 30% → 36% |  |
| 122 | **Se recupera la transcripción registrada de la llamada** |  |  | 17% → 26% |  |
| 124 | Desarrollar un sistema de bufferización para almacenar temporalmente las transcripciones mientras son procesadas y antes de ser mostradas. |  |  | 10% → 20% | 0d → 0.1d |
| 125 | Crear API endpoints para recuperar las transcripciones desde el almacenamiento temporal o buffer y enviarlas al frontend de la aplicación del agente. |  |  | 10% → 20% |  |
| 162 | **Se muestra el analisis sentiimental y la duración acumulada por cada llamada en la aplicacion del agente al comenzar la llamada** |  |  | 41% → 45% |  |
| 166 | **Se visualiza el análisis sentimental en forma de barra de colores** |  |  | 18% → 25% |  |
| 168 | Hacer que el color cambie de acuerdo al análisis sentimental |  | 2024-05-03 A | 80% → 100% | 2.8d → none |
| 169 | Hacer que ela barra se actualice en tiempo real conforme cambian los datos de sentimiento que vienen del backend |  |  | 3% → 10% |  |
| 192 | **Apartado de tiempo que muestra la duración de la llamada en tiempo real. Cambia de color de acuerdo a que tan cercano está al límite pre-establecido. Verde si está debajo del límite (2 minutos y medio o menos), amarillo si empieza a acercarse (2 minutos y** |  |  | 62% → 51% |  |
| 223 | **Los agentes podrán ver las respuestas a sus solicitudes de ayuda, enviadas por el supervisor, en un centro de notificaciones en la pantalla principal. Para poder aplicar las medidas sugeridas por el supervisor.** |  | 2024-05-15 A → 2024-05-15 | 100% → 50% | none → 4d |
| 227 | **Conexión de la página web con el centro de notificaciones.** | 2024-05-12 A → 2024-05-12 | 2024-05-12 A → 2024-05-12 | 100% → 0% | none → 7d |
| 228 | Configurar la comunicación entre la página web y la pantalla de notificaciones. | 2024-05-12 A → 2024-05-12 | 2024-05-12 A → 2024-05-12 | 100% → 0% | none → 7d |
| 229 | Probar la integración para asegurar un funcionamiento correcto. | 2024-05-12 A → 2024-05-12 | 2024-05-12 A → 2024-05-12 | 100% → 0% | none → 7d |
| 233 | **Implementación del cuadro de mensaje para mostrar el texto del supervisor.** | 2024-05-15 A → 2024-05-15 | 2024-05-15 A → 2024-05-15 | 100% → 0% | none → 4d |
| 234 | Diseñar la apariencia del cuadro de mensaje. | 2024-05-15 A → 2024-05-15 | 2024-05-15 A → 2024-05-15 | 100% → 0% | none → 4d |
| 235 | Programar la funcionalidad para mostrar el texto del supervisor en el cuadro de mensaje. | 2024-05-15 A → 2024-05-15 | 2024-05-15 A → 2024-05-15 | 100% → 0% | none → 4d |
| 236 | **Supervisor** |  |  | 31% → 36% |  |
| 237 | **En la pantalla principal, se mostrará un listado de llamadas activas que serán escaladas, ordenadas por prioridad, donde se evaluara principalmente el estado emocional del cliente. Por ejemplo: Si el cliente se encuentra estresado, la llamada con el agent** |  |  | 0% → 45% |  |
| 238 | **Recuperar los datos del analisis sentimental y duración de la llamada de Amazon Connect** | 2024-05-01 A |  | 0% → 50% | 8d → 0.6d |
| 239 | Investigar y seleccionar algoritmos adecuados para cada tarea. | 2024-05-01 A | 2024-05-01 A | 0% → 100% | 8d → none |
| 241 | **Desarrollo completo de los algoritmos para análisis sentimental del cliente, cálculo de duración acumulada de la llamada y detección de solicitud de asistencia del agente.** | 2024-05-03 A |  | 0% → 30% | 8d → 15d |
| 242 | Recuperar información del estado de la solicitud de asistencia. | 2024-05-03 A |  | 0% → 60% |  |
| 244 | **Diseño finalizado de la interfaz de usuario para visualizar las llamadas activas con prioridad.** | 2024-05-04 A | 2024-05-04 A | 0% → 100% | 8d → none |
| 245 | Diseñar la disposición y la apariencia de la interfaz de usuario. | 2024-05-04 A | 2024-05-04 A | 0% → 100% | 14d → none |
| 246 | Crear prototipos y realizar pruebas de usabilidad para asegurar una experiencia de usuario óptima. | 2024-05-04 A | 2024-05-04 A | 0% → 100% | 8d → none |
| 250 | **En la sección designada para mostrar las llamadas activas, en la pantalla principal, por cada llamada activa se tendrá el nombre del agente, el nombre del cliente, el tiempo desde que comenzó la llamada y un análisis sentimental, el cuál a través de una f** | 2024-05-07 A |  | 0% → 26% |  |
| 251 | **Se recupera la información de una llamada** | 2024-05-07 A |  | 0% → 10% | 0d → 10d |
| 252 | Configurar endpoints que recuperen los datos en tiempo real de las llamadas activas | 2024-05-07 A |  | 0% → 10% | 0d → 0.1d |
| 253 | Obtener datos actualizados de las llamadas activas | 2024-05-08 A |  | 0% → 10% |  |
| 254 | Utilizar Amazon Connect para actualizar los datos continuamente | 2024-05-08 A |  | 0% → 10% |  |
| 255 | Verifica que la API recupere todos los datos | 2024-05-08 A |  | 0% → 10% | 0d → 10d |
| 256 | **Se visualiza el nombre del agente, el nombre del cliente, el tiempo acumulado y análisis sentimental** | 2024-05-09 A | 2024-05-09 A | 0% → 100% | 0d → none |
| 257 | Crear una aplicacion React con los respectivos componentes | 2024-05-09 A | 2024-05-09 A | 0% → 100% | 9d → none |
| 258 | Permitir que la interfaz se actualice a medida que cambian los datos | 2024-05-09 A | 2024-05-09 A | 0% → 100% | 0d → none |
| 259 | **Hay un botón para unirse/escuchar la llamada** | 2024-05-10 A |  | 0% → 20% | 0d → 7d |
| 260 | Desarrollar la funcionalidad, en conjunto con Amazon Connect, para que el botón "Monitorear" permita a los supervisores o agentes autorizados unirse a la llamada en curso de manera silenciosa. | 2024-05-10 A |  | 0% → 20% | 0d → 7d |
| 261 | **Hay un botón que dice transcripción de la llamada** | 2024-05-12 A |  | 0% → 26% |  |
| 262 | Crear y diseñar el componente en React | 2024-05-12 A | 2024-05-12 A | 0% → 100% | 0d → none |
| 263 | Asegúrate de que la transcripción sea precisa y que se muestre correctamente al presionar el botón. | 2024-05-13 A |  | 0% → 30% |  |

## Version 7 (saved 2024-05-07, file qualicenter.mpp)

Note of the change: otra actualización

Last finish stays 2024-05-21. Complete tasks 111 → 114.

Removed: 165 Crear endpoints de API que recojan los datos de análisis sentimental de las transcripciones y los pasen al frontend de la aplicación del agente.

Changed:

| ID | Task | Finish | Complete | Total float | Predecessors |
| --- | --- | --- | --- | --- | --- |
| 1 | **Sprint 85%** |  | 48% → 50% |  |  |
| 59 | **Agente** |  | 56% → 59% |  |  |
| 121 | **En la sección izquierda, de la pantalla del agente, se muestra una transcripción en tiempo real de la llamada en curso** |  | 36% → 58% |  |  |
| 122 | **Se recupera la transcripción registrada de la llamada** |  | 26% → 63% |  |  |
| 124 | Desarrollar un sistema de bufferización para almacenar temporalmente las transcripciones mientras son procesadas y antes de ser mostradas. | 2024-05-06 A | 20% → 100% | 0.1d → none |  |
| 162 | **Se muestra el analisis sentiimental y la duración acumulada por cada llamada en la aplicacion del agente al comenzar la llamada** |  | 45% → 48% |  |  |
| 163 | **Se recupera el análisis sentimental del cliente** | 2024-05-03 A | 73% → 100% |  |  |
| 165 | **Se visualiza el análisis sentimental en forma de barra de colores** |  | 25% → 24% |  |  |
| 166 | Diseñar todos los componentes necesarios para mostrar una barra de colores |  |  |  | Crear endpoints de API que recojan los datos de análisis sentimental de las transcripciones y los pasen al frontend de la aplicación del agente. → 164 |
| 167 | Hacer que el color cambie de acuerdo al análisis sentimental | 2024-05-03 A → 2024-05-03 | 100% → 80% | none → 3.1d | Crear endpoints de API que recojan los datos de análisis sentimental de las transcripciones y los pasen al frontend de la aplicación del agente. → 164 |
| 235 | **Supervisor** |  | 36% → 38% |  |  |
| 249 | **En la sección designada para mostrar las llamadas activas, en la pantalla principal, por cada llamada activa se tendrá el nombre del agente, el nombre del cliente, el tiempo desde que comenzó la llamada y un análisis sentimental, el cuál a través de una f** |  | 26% → 44% |  |  |
| 250 | **Se recupera la información de una llamada** |  | 10% → 78% |  |  |
| 251 | Configurar endpoints que recuperen los datos en tiempo real de las llamadas activas | 2024-05-07 A | 10% → 100% | 0.1d → none |  |
| 252 | Obtener datos actualizados de las llamadas activas | 2024-05-08 A | 10% → 100% | 10d → none |  |
| 253 | Utilizar Amazon Connect para actualizar los datos continuamente | 2024-05-08 A | 10% → 100% | 10d → none |  |

## Version 8 (saved 2024-05-07, file qualicenter.mpp)

Note of the change: actualizado

Last finish 2024-05-21 → 2024-05-15 (-6d). Complete tasks 114 → 124.

Removed: 58 Almacenar las transcripciones en una base de datos; 246 Implementación exitosa del algoritmo de resaltado de llamadas según su prioridad.; 247 Integrar el algoritmo de resaltado en la interfaz de usuario.; 248 Probar el algoritmo con datos de prueba para verificar su funcionamiento correcto.; 258 Hay un botón para unirse/escuchar la llamada; 259 Desarrollar la funcionalidad, en conjunto con Amazon Connect, para que el botón "Monitorear" permita a los supervisores o agentes autorizados unirse a la llamada en curso de manera silenciosa.; 262 Asegúrate de que la transcripción sea precisa y que se muestre correctamente al presionar el botón.; 264 Utilizar Amazon Connect para actualizar los datos continuamente; 266 Se visualizan todos los componentes anteriores para varias llamadas; 267 Generar, con Amazon Connect, varias llamadas; 268 Desplegar las llamadas que el centro de contacto tenga en curso; 269 Cargar los datos para múltiples llamadas simuláneas

Changed:

| ID | Task | Start | Finish | Duration | Complete | Total float | Predecessors | Other |
| --- | --- | --- | --- | --- | --- | --- | --- | --- |
| 1 | **Sprint 85%** | 2024-04-24 A → 2024-04-12 A (-12d) | 2024-05-21 → 2024-05-15 (-6d) | 23d → 27d | 50% → 57% |  |  |  |
| 2 | **Cliente** |  |  |  | 58% → 79% | 5.4d → 1.4d |  |  |
| 3 | **El sistema debe ser capaz de registrar el tiempo acumulado de la llamada desde el momento en que el cliente marca al número de atención.** |  |  |  | 52% → 73% | 5.4d → 1.4d |  |  |
| 14 | **Indicarle a Connect iniciar el registro del tiempo de la llamada.** |  | 2024-05-09 A |  | 54% → 100% | 5.4d → none |  |  |
| 17 | Adicionalmente para cada llamada capturar detalles importantes como el número del llamante, el tiempo y el asunto. Guardarlos como atributos en el flujo de llamada en la instancia de Amazon Connect. |  | 2024-05-06 A |  | 5% → 100% | 5.4d → none |  |  |
| 18 | Iniciar un temporizador para cada llamada que se reciba, para así implementar una función Lambda en el flujo de llamadas, el cual podrá ser llamada en cualquier momento para obtener la duración en tiempo real de manera precisa para cada llamada. | 2024-05-06 A | 2024-05-09 A |  | 0% → 100% | 5.4d → none |  |  |
| 22 | **El sistema debe buscar un agente disponible para atender la llamada, si no hay uno entonces se deberá colocar la llamada en una cola de esperal. . El sistema debe identificar al cliente mediante su número de teléfono, si el cliente está registrado con una** |  |  |  | 55% → 78% |  |  |  |
| 25 | **Comparar el número con los clientes para encontrar al cliente.** |  |  |  | 57% → 99% |  |  |  |
| 26 | Montar y llenar una base de datos para relacionar números telefónicos de los clientes a datos individuales como nombre y número de póliza |  | 2024-05-04 A |  | 60% → 100% |  |  |  |
| 27 | Implementar una función Lambda en el flujo de la instancia de Amazon Connect, el cual comparará el número de un cliente guardado en un atributo con los números guardados en la base de datos. |  | 2024-05-07 A |  | 50% → 100% |  |  |  |
| 34 | **El sistema debe mostrar al agente los datos del cliente, incluyendo nombre, edad, datos de póliza y tiempo acumulado de llamada .l agente debe recibir una notificación de la llamada entrante junto con una cuenta regresiva antes de que pueda volver a reali** |  |  |  | 9% → 44% |  |  |  |
| 35 | **Desplegar toda la información del cliente.** |  | 2024-05-06 A |  | 20% → 100% | 0d → none |  |  |
| 36 | Configurar el API de Amazon Connect y las funciones Lambda asignadas al flujo de llamada para recuperar datos del cliente |  | 2024-05-03 A |  | 20% → 100% |  |  |  |
| 37 | Implementar una interfaz de usuario en la aplicación del agente para mostrar los datos del cliente, incluyendo nombre, edad, datos de póliza y tiempo acumulado de llamada. |  | 2024-05-06 A |  | 20% → 100% |  |  |  |
| 45 | **Se registra, por llamada, el analisis sentimental y la transcripción en tiempo real cuando la conexión entre el cliente y el agente comienza** |  | 2024-05-13 → 2024-05-10 (-3d) | 17d → 15d | 80% → 94% |  |  |  |
| 46 | **Inicio una llamada entre agente y cliente** |  | 2024-05-03 A |  | 99% → 100% | 0d → none |  |  |
| 50 | **Se registra el análisis sentimental del cliente** |  | 2024-05-07 A → 2024-05-08 A (+1d) | 5d → 6d |  |  |  |  |
| 52 | Desarrollar el backend para enviar texto transcrito (del audio) al servicio de análisis de sentimientos |  | 2024-05-06 A → 2024-05-08 A (+2d) | 1d → 3d |  |  | 51 → none |  |
| 53 | Configurar la integración para que cada segmento de texto transcrito se envíe al servicio de análisis tan pronto como esté disponible. |  | 2024-05-07 A → 2024-05-08 A (+1d) | 1d → 2d |  |  | 52 → none |  |
| 54 | **Se registra la transcripción en tiempo real** |  | 2024-05-13 → 2024-05-10 (-3d) | 5d → 3d | 30% → 67% |  |  |  |
| 56 | Configurar Amazon Connect para enviar un audio |  | 2024-05-09 A |  | 20% → 100% |  |  |  |
| 58 | **Agente** |  |  |  | 59% → 65% | 4d → 0d |  |  |
| 66 | **Colocar los campos de registro** | 2024-05-12 A → 2024-05-12 |  |  |  | 4d → 0d |  |  |
| 100 | **Durante su conversación con el cliente, el agente le pregunta al cliente si necesita asistencia médica, si el cliente dice que sí, deberá oprimir el botón "Mandar Ambulancia", este botón mandará una alerta con la ubicación del cliente y el agente le dirá** | 2024-05-05 A |  |  | 0% → 2% | 5d → 1d |  |  |
| 101 | **Recuperar el número del cliente:** | 2024-05-05 A |  |  | 0% → 5% | 5d → 0.1d |  |  |
| 102 | API para recuperar el número del cliente | 2024-05-05 A |  |  | 0% → 10% | 5d → 0.1d |  |  |
| 104 | **Recuperar la dirección del cliente** | 2024-05-07 A |  |  | 0% → 10% | 5d → 1d |  |  |
| 105 | Funciónalidad que reciba la dirección desde el FrontEnd | 2024-05-07 A |  |  | 0% → 10% | 5d → 1d |  |  |
| 120 | **En la sección izquierda, de la pantalla del agente, se muestra una transcripción en tiempo real de la llamada en curso** |  | 2024-05-09 → 2024-05-10 (+1d) | 10d → 11d | 58% → 82% |  |  |  |
| 121 | **Se recupera la transcripción registrada de la llamada** |  | 2024-05-07 A |  | 63% → 100% |  |  |  |
| 124 | **Se muestra la transcripción de la llamada** |  | 2024-05-06 → 2024-05-09 (+3d) | 7d → 10d | 36% → 73% | 12d → none |  |  |
| 127 | La transcripción mostrada esté sincronizada con el audio de la llamada, actualizando la pantalla a medida que se disponga |  | 2024-05-06 → 2024-05-09 (+3d) | 5d → 8d | 10% → 70% | 12d → 6d |  | constraint none → finish no earlier than 2024-05-09 |
| 128 | Crear API endpoints para recuperar las transcripciones desde el almacenamiento temporal o buffer y enviarlas al frontend de la aplicación del agente. |  | 2024-05-06 → 2024-05-09 (+3d) | 6d → 9d | 20% → 70% | 12d → 6d |  | constraint none → finish no earlier than 2024-05-09 |
| 129 | **Se anima la transcripción para que sea claramente legible** |  | 2024-05-04 A |  | 99% → 100% |  |  |  |
| 161 | **Se muestra el analisis sentiimental y la duración acumulada por cada llamada en la aplicacion del agente al comenzar la llamada** |  |  |  | 48% → 86% | none → 5d |  |  |
| 162 | **Se recupera el análisis sentimental del cliente** |  | 2024-05-03 A → 2024-05-01 A (-2d) | 4d → 2d |  |  |  |  |
| 164 | **Se visualiza el análisis sentimental en forma de barra de colores** |  |  |  | 24% → 79% | 9d → none |  |  |
| 166 | Hacer que el color cambie de acuerdo al análisis sentimental |  | 2024-05-03 A |  | 80% → 100% | 3.1d → none |  |  |
| 167 | Hacer que ela barra se actualice en tiempo real conforme cambian los datos de sentimiento que vienen del backend |  |  |  | 10% → 75% | 9d → 6d |  |  |
| 211 | **El agente podrá acceder a un apartado en donde podrá verificar la evaluación y en caso de haberlos esccrito comentarios específicos de su supervisor** |  | 2024-05-09 → 2024-05-15 (+6d) | 10d → 15d |  | 9d → none |  |  |
| 225 | **Conexión de la página web con el centro de notificaciones.** | 2024-05-12 → 2024-05-02 (-10d) | 2024-05-12 → 2024-05-02 (-10d) |  |  | 7d → 12d |  |  |
| 226 | Configurar la comunicación entre la página web y la pantalla de notificaciones. | 2024-05-12 → 2024-05-02 (-10d) | 2024-05-12 → 2024-05-02 (-10d) |  |  | 7d → 12d |  |  |
| 227 | Probar la integración para asegurar un funcionamiento correcto. | 2024-05-12 → 2024-05-02 (-10d) | 2024-05-12 → 2024-05-02 (-10d) |  |  | 7d → 12d |  |  |
| 234 | **Supervisor** | 2024-04-25 A → 2024-04-12 A (-13d) | 2024-05-21 → 2024-05-15 (-6d) | 22d → 27d | 38% → 42% |  |  |  |
| 235 | **En la pantalla principal, se mostrará un listado de llamadas activas que serán escaladas, ordenadas por prioridad, donde se evaluara principalmente el estado emocional del cliente. Por ejemplo: Si el cliente se encuentra estresado, la llamada con el agent** |  |  |  | 45% → 70% |  |  |  |
| 236 | **Recuperar los datos del analisis sentimental y duración de la llamada de Amazon Connect** |  |  |  | 50% → 60% | 0.6d → 0.49d |  |  |
| 238 | Implementar y probar los algoritmos para garantizar su precisión y eficacia. | 2024-05-02 A |  |  | 0% → 20% | 0.6d → 0.49d |  |  |
| 239 | **Desarrollo completo de los algoritmos para análisis sentimental del cliente, cálculo de duración acumulada de la llamada y detección de solicitud de asistencia del agente.** |  |  |  | 30% → 49% | 15d → 11d |  |  |
| 240 | Recuperar información del estado de la solicitud de asistencia. |  |  |  | 60% → 49% | 15d → 11d |  |  |
| 241 | Generar funciones de cálculo de duración de llamada, calculo del análisis sentimental del agente y detección solicitud de asistencia e iniciar pruebas de visualización. | 2024-05-03 A |  |  | 0% → 49% | 15d → 11d |  |  |
| 245 | **En la sección designada para mostrar las llamadas activas, en la pantalla principal, por cada llamada activa se tendrá el nombre del agente, el nombre del cliente, el tiempo desde que comenzó la llamada y un análisis sentimental, el cuál a través de una f** | 2024-05-07 A → 2024-04-12 A (-25d) | 2024-05-21 → 2024-05-14 (-7d) | 12d → 26d | 44% → 46% | 0d → 1d |  |  |
| 246 | **Se recupera la información de una llamada** |  | 2024-05-08 → 2024-05-10 (+2d) | 2d → 4d | 78% → 46% | 10d → 0d |  |  |
| 247 | Configurar endpoints que recuperen los datos en tiempo real de las llamadas activas |  |  | 1d → 0.5d |  |  |  |  |
| 248 | Obtener datos actualizados de las llamadas activas |  |  | 1d → 0.5d |  |  |  |  |
| 250 | Verifica que la API recupere todos los datos |  | 2024-05-08 → 2024-05-10 (+2d) | 1d → 3d |  | 10d → 0d |  |  |
| 251 | **Se visualiza el nombre del agente, el nombre del cliente, el tiempo acumulado y análisis sentimental** |  | 2024-05-09 A → 2024-05-14 (+5d) | 1d → 5d | 100% → 33% | none → 1d |  |  |
| 252 | Crear una aplicacion React con los respectivos componentes |  |  | 1d → 0.5d |  |  |  |  |
| 253 | Permitir que la interfaz se actualice a medida que cambian los datos |  | 2024-05-09 A → 2024-05-14 (+5d) | 1d → 4d | 100% → 25% | none → 1d |  |  |
| 254 | **Hay un botón que dice transcripción de la llamada** | 2024-05-12 A → 2024-04-12 A (-30d) | 2024-05-16 → 2024-05-12 (-4d) | 5d → 24d | 26% → 67% | 0d → 3d |  |  |
| 255 | Crear y diseñar el componente en React |  |  |  |  |  | Desarrollar la funcionalidad, en conjunto con Amazon Connect, para que el botón "Monitorear" permita a los supervisores o agentes autorizados unirse a la llamada en curso de manera silenciosa. → none |  |
| 256 | Obtener datos actualizados de la transcripción | 2024-05-14 → 2024-04-30 A (-14d) | 2024-05-14 → 2024-04-30 A (-14d) |  | 0% → 100% | 0d → none | Asegúrate de que la transcripción sea precisa y que se muestre correctamente al presionar el botón. → none |  |
| 257 | Verifica que la API recupere todos los datos | 2024-05-16 → 2024-04-12 (-34d) | 2024-05-16 → 2024-04-14 (-32d) |  |  | 0d → 26d | Utilizar Amazon Connect para actualizar los datos continuamente → none | constraint none → finish no earlier than 2024-04-14 |
| 258 | **Por cada llamada activa, ícono que cambia de color si un agente pide ayuda, al presionarlo, se mostrara el problema escrito por el agente y los datos del cliente, un botón para responder directamente, así como un botón para acceder a la transcripción de l** | 2024-05-06 → 2024-04-25 (-11d) | 2024-05-12 → 2024-04-29 (-13d) | 6d → 3d |  | 7d → 12d |  |  |
| 259 | **Cambiar los colores de un ícono a partir de datos dummies:** | 2024-05-06 → 2024-04-25 (-11d) | 2024-05-06 → 2024-04-25 (-11d) |  |  | 12d → 17d |  |  |
| 260 | Implementar la lógica para generar datos dummy que indiquen el estado de un agente | 2024-05-06 → 2024-04-25 (-11d) | 2024-05-06 → 2024-04-25 (-11d) |  |  | 12d → 18d | Probar el algoritmo con datos de prueba para verificar su funcionamiento correcto. → none |  |
| 261 | Utilizar estos datos para cambiar dinámicamente el color del ícono en la interfaz de | 2024-05-06 → 2024-04-25 (-11d) | 2024-05-06 → 2024-04-25 (-11d) |  |  | 12d → 18d | Probar el algoritmo con datos de prueba para verificar su funcionamiento correcto. → none |  |
| 262 | **Desplegar una ventana emergente al dar tap sobre el ícono de ayuda:** | 2024-05-06 → 2024-04-25 (-11d) | 2024-05-07 → 2024-04-26 (-11d) |  |  | 7d → 12d |  |  |
| 263 | Implementar un controlador de eventos para que el ícono de ayuda abra una ventana emergente al presionarlo. | 2024-05-06 → 2024-04-25 (-11d) | 2024-05-06 → 2024-04-25 (-11d) |  |  | 12d → 18d | Probar el algoritmo con datos de prueba para verificar su funcionamiento correcto. → none |  |
| 264 | Diseñar la interfaz de la ventana emergente para mostrar el mensaje recuperado del agente. | 2024-05-06 → 2024-04-25 (-11d) | 2024-05-07 → 2024-04-26 (-11d) |  |  | 7d → 13d | Probar el algoritmo con datos de prueba para verificar su funcionamiento correcto. → none |  |
| 265 | **Reutilizar los botones del requerimiento 2 y desplegarlos en la misma ventana emergente:** | 2024-05-12 → 2024-04-25 (-17d) | 2024-05-12 → 2024-04-25 (-17d) |  |  | 7d → 17d |  |  |

| ID | Task | Start | Finish | Duration | Complete | Total float | Predecessors |
| --- | --- | --- | --- | --- | --- | --- | --- |
| 266 | Identificar y reutilizar el código y los elementos de interfaz de usuario del requerimiento 2 que correspondan a los botones necesarios. | 2024-05-12 → 2024-04-25 (-17d) | 2024-05-12 → 2024-04-25 (-17d) |  |  | 7d → 18d | Desarrollar la funcionalidad, en conjunto con Amazon Connect, para que el botón "Monitorear" permita a los supervisores o agentes autorizados unirse a la llamada en curso de manera silenciosa. → none |
| 267 | Integrar estos botones en la ventana emergente creada en el milestone 4. | 2024-05-12 → 2024-04-25 (-17d) | 2024-05-12 → 2024-04-25 (-17d) |  |  | 7d → 18d | Desarrollar la funcionalidad, en conjunto con Amazon Connect, para que el botón "Monitorear" permita a los supervisores o agentes autorizados unirse a la llamada en curso de manera silenciosa. → none |
| 268 | **Crear un botón de responder y desplegar una ventana emergente al darle tap:** | 2024-05-08 → 2024-04-29 (-9d) | 2024-05-08 → 2024-04-29 (-9d) |  |  | 7d → 12d |  |
| 269 | Agregar un botón de responder a la ventana emergente creada en el milestone 4. | 2024-05-08 → 2024-04-29 (-9d) | 2024-05-08 → 2024-04-29 (-9d) |  |  | 10d → 16d |  |
| 270 | Implementar un controlador de eventos para este botón que abra otra ventana emergente al presionarlo. | 2024-05-08 → 2024-04-29 (-9d) | 2024-05-08 → 2024-04-29 (-9d) |  |  | 7d → 13d |  |
| 271 | **Al dar tap sobre el botón de responder del requerimiento 3, se desplegará una ventana con un cuadro de texto para escribir la respuesta, y un botón para enviarla. Y un mensaje de confirmación al finalizar.** | 2024-05-09 → 2024-04-30 (-9d) |  | 2d → 11d |  | 7d → 4d |  |
| 272 | **Poder recuperar un mensaje escrito por el supervisor a través del cuadro de texto, una vez que se le de a enviar:** | 2024-05-09 → 2024-04-30 (-9d) |  | 2d → 11d |  | 8d → 4d |  |
| 274 | Configurar un controlador de eventos para el botón de enviar. | 2024-05-09 → 2024-04-30 (-9d) | 2024-05-09 → 2024-04-30 (-9d) |  |  | 9d → 15d |  |
| 275 | Capturar el texto ingresado por el supervisor en el cuadro de texto al presionar el botón de enviar. | 2024-05-09 → 2024-04-30 (-9d) | 2024-05-09 → 2024-04-30 (-9d) |  |  | 9d → 15d |  |
| 276 | **Registrar el mensaje guardado en la base de datos:** | 2024-05-09 → 2024-04-30 (-9d) | 2024-05-10 → 2024-05-01 (-9d) |  |  | 7d → 12d |  |
| 277 | Configurar el controlador en el API para insertar el mensaje en la BD. | 2024-05-09 → 2024-04-30 (-9d) | 2024-05-09 → 2024-04-30 (-9d) |  |  | 9d → 15d |  |
| 278 | Configurar la conexión al endpoint, en la aplicación. | 2024-05-09 → 2024-04-30 (-9d) | 2024-05-09 → 2024-04-30 (-9d) |  |  | 9d → 15d |  |
| 279 | Escribir la lógica para insertar el mensaje escrito por el supervisor en la base de datos al presionar el botón de enviar a través del endpoint configurado en la actividad anterior. | 2024-05-09 → 2024-04-30 (-9d) | 2024-05-10 → 2024-05-01 (-9d) |  |  | 7d → 13d |  |
| 280 | **Mostrar un mensaje de confirmación al finalizar este proceso:** | 2024-05-09 → 2024-04-30 (-9d) | 2024-05-09 → 2024-04-30 (-9d) |  |  | 9d → 14d |  |
| 281 | Diseñar un mensaje de confirmación que se muestre al supervisor una vez que el mensaje haya sido correctamente guardado en la base de datos. | 2024-05-09 → 2024-04-30 (-9d) | 2024-05-09 → 2024-04-30 (-9d) |  |  | 9d → 15d |  |
| 282 | Implementar la lógica para mostrar este mensaje de confirmación en la interfaz de usuario. | 2024-05-09 → 2024-04-30 (-9d) | 2024-05-09 → 2024-04-30 (-9d) |  |  | 9d → 15d |  |
| 293 | **La pantalla principal contara con un menú lateral en el que se visualicen las pantallas de navegación. En la pantalla principal se muestran los agentes del grupo, cada uno con un indicador acerca de su estado (disponible, en llamada, descanso o ausente).** |  |  |  | 59% → 60% | 4d → 0d |  |
| 298 | **Ver la información de los agentes de manera cuadriculada, con datos que no provienen de la base de datos.** |  |  |  | 53% → 56% | 4d → 0d |  |
| 300 | Generar las rutas para acceder a la base de datos | 2024-05-09 A |  |  | 0% → 20% | 9d → 6d |  |
| 308 | **En la pantalla de KPIs general se mostrara la resolución al primer contactoc(porcentaje), abandono de llamadas (porcentaje), nivel de servicio(porcentaje), tiempo promedio de llamada(métrica), velocidad media de respuesta(métrica), ocupación de centro de** |  |  |  | 16% → 34% |  |  |
| 309 | **Se muestra con texto los diferentes apartados con el KPI que deberían de mostrar.** |  |  |  | 42% → 80% | 9d → 5d |  |
| 311 | Generar los contextos y clases para colocar los objetos de los KPIs | 2024-05-08 A |  |  | 0% → 80% | 9d → 6d |  |
| 312 | Colocar en texto cada uno de los KPIs en su espacio correspondiente |  | 2024-05-09 A |  | 70% → 100% |  |  |
| 313 | **Las métricas y porcentajes mostrados son datos prueba** | 2024-05-09 A |  |  | 0% → 7% | 1d → 4d |  |
| 315 | Generar las rutas y referencias necesarias para obtener la información de la base de dato | 2024-05-09 A |  |  | 0% → 40% | 9d → 6d |  |
| 321 | **Al seleccionar uno de los KPI en la pantalla se podrán visualizar datos históricos por medio de gráficas para elegir el tiempo deseado, siendo 60 días el máximo atrás que se puede elegir.** |  |  |  | 5% → 14% | 8d → 4d |  |
| 322 | **Visualizar el filtro de búsqueda, con su filtro por defecto de 15 minutos y poder elegir una fecha que vaya máximo 60 días atrás.** |  |  |  | 17% → 33% | 10d → 6d |  |
| 324 | Colocar el filtro de selección de búsqueda | 2024-05-02 A | 2024-05-02 A |  | 0% → 100% | 16d → none |  |
| 328 | **Se visualizan las gráficas correspondientes al KPI elegido, con su filtro por defecto.** | 2024-05-03 A |  |  | 0% → 9% | 0d → 4d |  |
| 329 | Se colocan las rutas adecuadas para poder hacer los queries necesarios | 2024-05-03 A |  |  | 0% → 30% |  |  |
| 346 | **El superviso puede acceder a un apartado en donde podrá contetar unas preguntas las cuales podrán evaluar el desempeño del agente. Y en cas de necesitar ser más objetivo durante su comentario, complementarlo con un comentario más detallado.** | 2024-04-25 A → 2024-04-30 (+5d) | 2024-05-12 → 2024-05-15 (+3d) |  |  | 7.5d → none |  |

## Version 9 (saved 2024-05-07, file qualicenter.mpp)

Note of the change: actualizado

Last finish stays 2024-05-15. Complete tasks 124 → 134.

Changed:

| ID | Task | Start | Finish | Duration | Complete | Total float | Predecessors |
| --- | --- | --- | --- | --- | --- | --- | --- |
| 1 | **Sprint 85%** |  |  |  | 57% → 61% |  |  |
| 58 | **Agente** |  |  |  | 65% → 66% |  |  |
| 139 | **Botón de solicitud de ayuda en la pantalla principal. Al dar tap sobre él se desplegará un cuadro de texto para ingresar la descripción del problema y un botón que enviará la solicitud de ayuda, y un mensaje de confirmación al dar tap sobre el botón.** |  |  |  | 60% → 67% |  |  |
| 158 | **Desplegar un mensaje de confirmación al terminar este proceso:** | 2024-05-10 A |  |  | 0% → 50% |  |  |
| 159 | Diseñar un mensaje de confirmación que se muestre al usuario después de guardar el mensaje en la base de datos. | 2024-05-10 A |  |  | 0% → 50% | 8d → 4d |  |
| 160 | Mostrar el mensaje de confirmación en la pantalla principal del agente una vez que se utilice el botón de enviar. | 2024-05-10 A |  |  | 0% → 50% | 8d → 4d |  |
| 225 | **Conexión de la página web con el centro de notificaciones.** | 2024-05-02 → 2024-05-09 (+7d) | 2024-05-02 → 2024-05-09 (+7d) |  |  | 12d → 5d |  |
| 226 | Configurar la comunicación entre la página web y la pantalla de notificaciones. | 2024-05-02 → 2024-05-09 (+7d) | 2024-05-02 → 2024-05-09 (+7d) |  |  | 12d → 5d |  |
| 227 | Probar la integración para asegurar un funcionamiento correcto. | 2024-05-02 → 2024-05-09 (+7d) | 2024-05-02 → 2024-05-09 (+7d) |  |  | 12d → 5d |  |
| 234 | **Supervisor** |  |  |  | 42% → 50% |  |  |
| 258 | **Por cada llamada activa, ícono que cambia de color si un agente pide ayuda, al presionarlo, se mostrara el problema escrito por el agente y los datos del cliente, un botón para responder directamente, así como un botón para acceder a la transcripción de l** | 2024-04-25 → 2024-05-05 (+10d) | 2024-04-29 → 2024-05-15 (+16d) | 3d → 10d | 0% → 75% | 12d → none |  |
| 259 | **Cambiar los colores de un ícono a partir de datos dummies:** | 2024-04-25 → 2024-05-05 (+10d) | 2024-04-25 → 2024-05-05 A (+10d) |  | 0% → 100% | 17d → none |  |
| 260 | Implementar la lógica para generar datos dummy que indiquen el estado de un agente | 2024-04-25 → 2024-05-05 A (+10d) | 2024-04-25 → 2024-05-05 A (+10d) |  | 0% → 100% | 18d → none |  |
| 261 | Utilizar estos datos para cambiar dinámicamente el color del ícono en la interfaz de | 2024-04-25 A | 2024-04-25 A |  | 0% → 100% | 18d → none |  |
| 262 | **Desplegar una ventana emergente al dar tap sobre el ícono de ayuda:** | 2024-04-25 → 2024-05-05 A (+10d) | 2024-04-26 → 2024-05-07 (+11d) | 2d → 3d | 0% → 99% | 12d → none |  |
| 263 | Implementar un controlador de eventos para que el ícono de ayuda abra una ventana emergente al presionarlo. | 2024-04-25 → 2024-05-05 A (+10d) | 2024-04-25 → 2024-05-05 A (+10d) |  | 0% → 100% | 18d → none |  |
| 264 | Diseñar la interfaz de la ventana emergente para mostrar el mensaje recuperado del agente. | 2024-04-25 → 2024-05-05 A (+10d) | 2024-04-26 → 2024-05-05 A (+9d) | 2d → 1d | 0% → 100% | 13d → none | none → 154 |
| 265 | **Reutilizar los botones del requerimiento 2 y desplegarlos en la misma ventana emergente:** | 2024-04-25 → 2024-05-13 (+18d) | 2024-04-25 → 2024-05-14 (+19d) | 1d → 2d |  | 17d → 1d |  |
| 266 | Identificar y reutilizar el código y los elementos de interfaz de usuario del requerimiento 2 que correspondan a los botones necesarios. | 2024-04-25 → 2024-05-13 (+18d) | 2024-04-25 → 2024-05-13 (+18d) |  |  | 18d → 1d | none → 255 |
| 267 | Integrar estos botones en la ventana emergente creada en el milestone 4. | 2024-04-25 → 2024-05-14 (+19d) | 2024-04-25 → 2024-05-14 (+19d) |  |  | 18d → 1d | none → 266 |
| 268 | **Crear un botón de responder y desplegar una ventana emergente al darle tap:** | 2024-04-29 → 2024-05-06 A (+7d) | 2024-04-29 → 2024-05-06 A (+7d) |  | 0% → 100% | 12d → none |  |
| 269 | Agregar un botón de responder a la ventana emergente creada en el milestone 4. | 2024-04-29 → 2024-05-06 A (+7d) | 2024-04-29 → 2024-05-06 A (+7d) |  | 0% → 100% | 16d → none |  |
| 270 | Implementar un controlador de eventos para este botón que abra otra ventana emergente al presionarlo. | 2024-04-29 → 2024-05-06 A (+7d) | 2024-04-29 → 2024-05-06 A (+7d) |  | 0% → 100% | 13d → none |  |
| 271 | **Al dar tap sobre el botón de responder del requerimiento 3, se desplegará una ventana con un cuadro de texto para escribir la respuesta, y un botón para enviarla. Y un mensaje de confirmación al finalizar.** | 2024-04-30 A |  |  | 0% → 59% |  |  |
| 272 | **Poder recuperar un mensaje escrito por el supervisor a través del cuadro de texto, una vez que se le de a enviar:** | 2024-04-30 A | 2024-05-10 A |  | 0% → 100% | 4d → none |  |
| 273 | Implementar la interfaz de usuario para incluir un cuadro de texto y un botón de enviar en la ventana emergente creada en el requerimiento 3 del supervisor. | 2024-05-10 A | 2024-05-10 A |  | 0% → 100% | 5d → none |  |
| 274 | Configurar un controlador de eventos para el botón de enviar. | 2024-04-30 A | 2024-04-30 A |  | 0% → 100% | 15d → none |  |
| 275 | Capturar el texto ingresado por el supervisor en el cuadro de texto al presionar el botón de enviar. | 2024-04-30 A | 2024-04-30 A |  | 0% → 100% | 15d → none |  |
| 276 | **Registrar el mensaje guardado en la base de datos:** | 2024-04-30 → 2024-05-07 A (+7d) | 2024-05-01 → 2024-05-08 (+7d) |  | 0% → 20% | 12d → 6d |  |
| 277 | Configurar el controlador en el API para insertar el mensaje en la BD. | 2024-04-30 → 2024-05-07 A (+7d) | 2024-04-30 → 2024-05-07 (+7d) |  | 0% → 20% | 15d → 7d |  |
| 278 | Configurar la conexión al endpoint, en la aplicación. | 2024-04-30 → 2024-05-07 A (+7d) | 2024-04-30 → 2024-05-07 (+7d) |  | 0% → 20% | 15d → 7d |  |
| 279 | Escribir la lógica para insertar el mensaje escrito por el supervisor en la base de datos al presionar el botón de enviar a través del endpoint configurado en la actividad anterior. | 2024-04-30 → 2024-05-07 A (+7d) | 2024-05-01 → 2024-05-08 (+7d) |  | 0% → 20% | 13d → 5d |  |
| 280 | **Mostrar un mensaje de confirmación al finalizar este proceso:** | 2024-04-30 A | 2024-04-30 → 2024-05-07 (+7d) | 1d → 7.5d | 0% → 75% | 14d → 7.5d |  |
| 281 | Diseñar un mensaje de confirmación que se muestre al supervisor una vez que el mensaje haya sido correctamente guardado en la base de datos. | 2024-04-30 A | 2024-04-30 → 2024-05-07 (+7d) |  | 0% → 50% | 15d → 7.5d |  |
| 282 | Implementar la lógica para mostrar este mensaje de confirmación en la interfaz de usuario. | 2024-04-30 A | 2024-04-30 → 2024-05-07 A (+7d) |  | 0% → 100% | 15d → none |  |

## Version 10 (saved 2024-05-08, file qualicenter.mpp)

Note of the change: Merge remote-tracking branch 'GRM028/Gerardo'

Last finish stays 2024-05-15.

Changed:

| ID | Task | Start | Finish | Duration | Complete | Total float |
| --- | --- | --- | --- | --- | --- | --- |
| 58 | **Agente** |  |  |  | 66% → 67% |  |
| 66 | **Colocar los campos de registro** | 2024-05-12 A |  |  |  |  |
| 139 | **Botón de solicitud de ayuda en la pantalla principal. Al dar tap sobre él se desplegará un cuadro de texto para ingresar la descripción del problema y un botón que enviará la solicitud de ayuda, y un mensaje de confirmación al dar tap sobre el botón.** |  | 2024-05-10 → 2024-05-14 (+4d) | 10d → 13d | 67% → 78% | 4d → 1d |
| 140 | **Mostrar el botón de ayuda en la pantalla principal del agente** |  | 2024-05-02 A → 2024-05-14 (+12d) | 2d → 13d | 100% → 99% | none → 0d |
| 141 | Implementar la interfaz de usuario para incluir el botón de ayuda en la pantalla principal. |  | 2024-05-01 A → 2024-05-14 A (+13d) | 1d → 9d |  |  |

## Version 11 (saved 2024-05-13, file qualicenter.mpp)

Note of the change: Merge branch 'main' into Gerardo

Last finish stays 2024-05-15. Complete tasks 134 → 191.

Added:

| ID | Task | Duration | Start | Finish |
| --- | --- | --- | --- | --- |
| 347 | Sprint 100% | 1d? | 2024-04-25 | 2024-04-25 |

Removed: 168 Se anima la barra para la actualización de cambio de colores; 169 Utilizar CSS transitions para animar cambios en la barra de colores; 218 Desplegar los datos del agente específico.; 248 Obtener datos actualizados de las llamadas activas; 286 Procesar los datos extrídos y prepararlos para su visualización.; 288 Integrar los datos procesados con la interfaz de usuario.; 289 Mostrar las llamadas en espera en orden cronológico.; 290 Utilizar Lambda para desarrollar la lógica de ordenamiento de las llamadas en espera basada en el tiempo de espera.; 291 Integrar la lógica de ordenamiento desarrollda con la interfaz de usuario.; 292 Realizar pruebas para asegurar de que las llamadas en espara se ordenan correctamente en la pantalla principal.; 341 Integrar los datos procesados con la interfaz de usuario para visualizar los datos generales de los agentes.

Changed:

| ID | Task | Start | Finish | Duration | Complete | Total float |
| --- | --- | --- | --- | --- | --- | --- |
| 1 | **Sprint 85%** | 2024-04-12 A → 2024-04-24 A (+12d) |  | 27d → 19d | 61% → 93% |  |
| 2 | **Cliente** |  | 2024-05-14 A |  | 79% → 100% | 1.4d → none |
| 3 | **El sistema debe ser capaz de registrar el tiempo acumulado de la llamada desde el momento en que el cliente marca al número de atención.** |  | 2024-05-14 A |  | 73% → 100% | 1.4d → none |
| 19 | **Recuperar el tiempo registrado por connect.** | 2024-05-09 A | 2024-05-14 A |  | 0% → 100% | 1.4d → none |
| 20 | Implementar en la interfaz de usuario la duración acumulada de la llamada para los agentes y administradores relevantes | 2024-05-09 A | 2024-05-13 A |  | 0% → 100% | 1.4d → none |
| 21 | Realizar pruebas exhaustivas invocando al API desde la interfaz, para garantizar el seguimiento correcto de la duración y la recuperación de datos de llamada. Validar contra diferentes escenarios como transferencias de llamada | 2024-05-13 A | 2024-05-14 A |  | 0% → 100% | 1.4d → none |
| 22 | **El sistema debe buscar un agente disponible para atender la llamada, si no hay uno entonces se deberá colocar la llamada en una cola de esperal. . El sistema debe identificar al cliente mediante su número de teléfono, si el cliente está registrado con una** |  | 2024-05-14 A |  | 78% → 100% | 0d → none |
| 25 | **Comparar el número con los clientes para encontrar al cliente.** |  | 2024-05-07 A |  | 99% → 100% | 0d → none |
| 28 | **Recuperar la información de ese cliente.** |  | 2024-05-10 A |  | 20% → 100% | 0d → none |
| 29 | Dentro de la función Lambda en el flujo de la instancia de Amazon Connect, después de hacer un match con los datos de un cliente y su número, regresará los datos del cliente de la base de datos para así guardarlos como atributo en la instancia. |  | 2024-05-10 A |  | 20% → 100% |  |
| 30 | **Si todos los agentes están ocupados, notificarle al cliente que está en la cola de espera.** |  | 2024-05-14 A |  | 20% → 100% | 0d → none |
| 31 | Modificar las colas de espera de la instancia de Amazon Connect para que ocurran distintos escenarios si la cola está llena. |  | 2024-05-14 A |  | 20% → 100% |  |
| 33 | Si la cola no está llena y hay agentes disponibles, rutear la llamada al flujo propio de la instancia |  | 2024-05-14 A |  | 20% → 100% |  |
| 34 | **El sistema debe mostrar al agente los datos del cliente, incluyendo nombre, edad, datos de póliza y tiempo acumulado de llamada .l agente debe recibir una notificación de la llamada entrante junto con una cuenta regresiva antes de que pueda volver a reali** |  | 2024-05-14 A |  | 44% → 100% | 0d → none |
| 38 | **Generar una alerta en la pantalla del agente sobre una llamada entrante** | 2024-05-09 A | 2024-05-13 A |  | 0% → 100% | 0d → none |
| 39 | Configurar el API de Amazon Connect para crear una interfaz “Agent Workspace” dentro de la aplicación | 2024-05-09 A | 2024-05-09 A |  | 0% → 100% |  |
| 40 | Generar una alerta en la pantalla del agente sobre una llamada entrante, utilizando mensajes emergentes y sonidos audibles. | 2024-05-13 A | 2024-05-13 A |  | 0% → 100% |  |
| 41 | **Establecer la conexión entre el agente y el cliente.** |  | 2024-05-14 A |  | 0% → 100% | 0d → none |
| 42 | Implementar la funcionalidad de conexión entre el agente y el cliente, utilizando las funcionalidades del API de Amazon Connect y la interfaz “Agent Workspace”. | 2024-05-13 A | 2024-05-13 A |  | 0% → 100% |  |
| 44 | Mostrar el temporizador “After-Call-Work” en la aplicación después de desconectar cada llamada. | 2024-05-14 A | 2024-05-14 A |  | 0% → 100% |  |
| 45 | **Se registra, por llamada, el analisis sentimental y la transcripción en tiempo real cuando la conexión entre el cliente y el agente comienza** |  | 2024-05-10 A |  | 94% → 100% | 0d → none |
| 54 | **Se registra la transcripción en tiempo real** |  | 2024-05-10 A |  | 67% → 100% | 0d → none |
| 57 | Crear función para recibir y procesar el texto transcrito. | 2024-05-10 A | 2024-05-10 A |  | 0% → 100% |  |
| 58 | **Agente** |  |  |  | 67% → 95% |  |
| 59 | **El agente visualiza un script del dialogo que va a tener con el cliente:** |  |  |  | 40% → 98% |  |
| 64 | **Visualizar datos reales en el script.** |  | 2024-05-10 A |  | 30% → 100% | 0d → none |
| 65 | Crear una conexión a la Base de Datos para traer por la API los datos del cliente y colocarlos en tiempo real en el script. |  | 2024-05-10 A |  | 30% → 100% |  |
| 66 | **Colocar los campos de registro** |  |  |  | 0% → 90% |  |
| 67 | Crear y hacer funcionales los campos de registro de la información del cliente | 2024-05-12 A |  |  | 0% → 90% |  |
| 79 | **Con los datos del cliente y a partir de sus pólizas, se despliega un menú que muestra los vehículos registrados del cliente.** |  |  |  | 44% → 94% |  |
| 82 | **Visualiza un apartado con los datos reales del cliente en tiempo rea** |  |  |  | 25% → 93% |  |
| 83 | Se crea una conexión a la base de datos. |  | 2024-05-08 A |  | 50% → 100% | 0d → none |
| 84 | Dependiendo de la póliza del cliente con un condicional despliega información sobre sus autos | 2024-05-09 A |  |  | 0% → 85% |  |
| 90 | **Durante su conversación con el cliente, el agente le pregunta al cliente si necesita el servicio de una grúa, si el cliente dice que sí, deberá oprimir el botón "Mandar Grúa", este botón mandará una alerta con la ubicación del cliente y el agente le dirá** |  | 2024-05-14 A |  | 90% → 100% | 1d → none |
| 96 | **Mandar un SMS con la alerta** |  | 2024-05-14 A |  | 85% → 100% | 1d → none |
| 99 | Función Lambda para mandar el mensaje |  | 2024-05-14 A |  | 55% → 100% | 1d → none |
| 100 | **Durante su conversación con el cliente, el agente le pregunta al cliente si necesita asistencia médica, si el cliente dice que sí, deberá oprimir el botón "Mandar Ambulancia", este botón mandará una alerta con la ubicación del cliente y el agente le dirá** |  |  |  | 2% → 79% |  |
| 101 | **Recuperar el número del cliente:** |  |  |  | 5% → 40% | 0.1d → 0.3d |
| 102 | API para recuperar el número del cliente |  |  |  | 10% → 40% | 0.1d → 0.4d |
| 103 | Conexión de la funcionalidad del botón con el BackEnd | 2024-05-06 A |  |  | 0% → 40% | 0.1d → 0.3d |
| 104 | **Recuperar la dirección del cliente** |  |  |  | 10% → 30% | 1d → 7d |
| 105 | Funciónalidad que reciba la dirección desde el FrontEnd |  |  |  | 10% → 30% | 1d → 7d |
| 106 | **Mandar un SMS con la alerta** | 2024-05-08 A | 2024-05-14 A |  | 0% → 100% | 1d → none |
| 107 | Configurar instancia Amazon SNS | 2024-05-08 A | 2024-05-09 A |  | 0% → 100% | 1d → none |
| 108 | API para mandar el mensaje | 2024-05-10 A | 2024-05-12 A |  | 0% → 100% | 1d → none |
| 109 | Función Lambda para mandar el mensaje | 2024-05-13 A | 2024-05-14 A |  | 0% → 100% | 1d → none |
| 110 | **Cuando se selecciona la opción de enviar ayuda (requerimiento 5, 6), automáticamente se manda un mensaje de texto al número del cliente en llamada con la alerta de ayuda en camino.** |  | 2024-05-05 → 2024-05-14 (+9d) | 2d → 10d | 83% → 93% | 9d → 1d |
| 111 | **Ser capaz de generar una liga de un servicio de mapas (Como google maps) que contenga una dirección.** |  | 2024-05-04 A |  | 50% → 100% | 10d → none |
| 113 | Generar enlaces a partir de un script que reciba como input una dirección y retorne un enlace. | 2024-05-04 A | 2024-05-04 A |  | 0% → 100% | 14d → none |
| 118 | **Enviar automáticamente mensajes al ingresar la dirección desde la página durante la llamada.** |  | 2024-05-04 A → 2024-05-14 (+10d) | 1d → 10d | 100% → 90% | none → 1d |
| 119 | A partir de la finalización del requerimiento 3 con el ingreso de la dirección en la página final, enlazar el script de mensaje de la milestone 2 con la funcionalidad de un botón de submit. |  | 2024-05-04 A → 2024-05-14 (+10d) | 1d → 10d | 100% → 90% | none → 1d |
| 120 | **En la sección izquierda, de la pantalla del agente, se muestra una transcripción en tiempo real de la llamada en curso** |  |  |  | 82% → 97% |  |
| 124 | **Se muestra la transcripción de la llamada** |  |  |  | 73% → 96% |  |
| 127 | La transcripción mostrada esté sincronizada con el audio de la llamada, actualizando la pantalla a medida que se disponga |  | 2024-05-09 A |  | 70% → 100% | 5d → none |
| 128 | Crear API endpoints para recuperar las transcripciones desde el almacenamiento temporal o buffer y enviarlas al frontend de la aplicación del agente. |  |  |  | 70% → 92% |  |
| 131 | **Al estar dentro de una llamada con el cliente, el agente puede ver los botones que le dan la opción de silenciar o colgar la llamada. Al silenciarla, el cliente no será posible de escuchar al agente hasta que este deshabilite esta opción. Al colgar la lla** |  |  |  | 84% → 98% |  |
| 132 | **Visualizar la llamada al conectar Amazon Connect con la página.** |  | 2024-05-05 A |  | 73% → 100% | 9.9d → none |
| 133 | Una vez finalizado el funcionamiento y flujo de nuestra instancia de Connect, incluirla en nuestra página web en las pantallas correspondientes. |  | 2024-05-03 A |  | 60% → 100% | 0.8d → none |
| 134 | Verificar el funcionamiento deseado de la llamada al realizar pruebas. |  | 2024-05-04 A |  | 80% → 100% | 0.8d → none |
| 135 | Observar el comportamiento del flujo de la llamada establecido. |  | 2024-05-05 A |  | 80% → 100% | 9.9d → none |
| 136 | **Utilizar eficientemente los botones incluidos en Amazon Connect para finalizar y silenciar llamadas.** |  | 2024-05-06 A → 2024-05-06 |  | 100% → 95% | none → 8.9d |
| 137 | Al ver la llamada, se visualizan los botones de colgar y silenciar. |  | 2024-05-06 A → 2024-05-06 |  | 100% → 90% | none → 8.9d |
| 139 | **Botón de solicitud de ayuda en la pantalla principal. Al dar tap sobre él se desplegará un cuadro de texto para ingresar la descripción del problema y un botón que enviará la solicitud de ayuda, y un mensaje de confirmación al dar tap sobre el botón.** |  |  |  | 78% → 96% |  |
| 140 | **Mostrar el botón de ayuda en la pantalla principal del agente** |  | 2024-05-14 A |  | 99% → 100% | 0d → none |
| 154 | **Registrar el mensaje guardado en la base de datos:** | 2024-05-07 A | 2024-05-09 A |  | 0% → 100% | 0.5d → none |
| 155 | Configurar el controlador en el API para insertar el mensaje en la BD. | 2024-05-07 A | 2024-05-08 A |  | 0% → 100% | 0.5d → none |
| 156 | Configurar la conexión al endpoint, en la aplicación | 2024-05-09 A | 2024-05-09 A |  | 0% → 100% | 5d → none |
| 157 | Escribir la lógica para insertar el mensaje en la base de datos haciendo uso del endpoint. | 2024-05-09 A | 2024-05-09 A |  | 0% → 100% | 0.5d → none |
| 161 | **Se muestra el analisis sentiimental y la duración acumulada por cada llamada en la aplicacion del agente al comenzar la llamada** |  | 2024-05-09 → 2024-05-10 (+1d) | 10d → 11d | 86% → 97% | 5d → 4d |
| 164 | **Se visualiza el análisis sentimental en forma de barra de colores** |  | 2024-05-09 → 2024-05-10 (+1d) | 7d → 8d | 79% → 96% |  |

| ID | Task | Start | Finish | Duration | Complete | Total float | Predecessors | Other |
| --- | --- | --- | --- | --- | --- | --- | --- | --- |
| 167 | Hacer que ela barra se actualice en tiempo real conforme cambian los datos de sentimiento que vienen del backend |  | 2024-05-09 → 2024-05-10 (+1d) | 4d → 5d | 75% → 95% | 5d → 4d | 166 → none | constraint finish no earlier than 2024-05-09 → finish no earlier than 2024-05-10 |
| 168 | **Ícono que cambia de color de acuerdo a los resultados del análisis sentimental del cliente. Se mantiene en verde si el cliente está feliz y tranquilo, amarillo si empieza a ponerse impaciente, y rojo si está enojado o frustrado.** |  | 2024-05-05 A |  | 86% → 100% | 9d → none |  |  |
| 183 | **El componente cumple con todas sus funcionalidades en una llamada de prueba en tiempo real.** |  | 2024-05-05 A |  | 50% → 100% | 9d → none |  |  |
| 186 | El componente cambia de color adecuadamente. | 2024-05-05 A | 2024-05-05 A |  | 0% → 100% | 13d → none |  |  |
| 187 | No hay errores en el color mostrado. | 2024-05-05 A | 2024-05-05 A |  | 0% → 100% | 13d → none |  |  |
| 188 | **Apartado de tiempo que muestra la duración de la llamada en tiempo real. Cambia de color de acuerdo a que tan cercano está al límite pre-establecido. Verde si está debajo del límite (2 minutos y medio o menos), amarillo si empieza a acercarse (2 minutos y** |  | 2024-05-15 A |  | 51% → 100% | 0d → none |  |  |
| 194 | **El componente se ha vincluado con éxito a consultas en la base de datos y se comunica con ella.** |  | 2024-05-05 A |  | 95% → 100% | 0.2d → none |  |  |
| 198 | Se reciben los datos que necesita la función sin errores. |  | 2024-05-05 A |  | 80% → 100% | 0.2d → none |  |  |
| 199 | **El componente despliega el tiempo de la llamada exitósamente.** |  | 2024-05-09 A |  | 5% → 100% | 1d → none |  |  |
| 200 | Se realizan llamadas de prueba. |  | 2024-05-06 A |  | 20% → 100% | 1d → none |  |  |
| 201 | La función del componente recibe los datos. | 2024-05-07 A | 2024-05-07 A |  | 0% → 100% | 1d → none |  |  |
| 202 | La función del componente hace que muestre el tiempo actual de la llamada. | 2024-05-08 A | 2024-05-08 A |  | 0% → 100% | 1d → none |  |  |
| 203 | No hay errores en el tiempo mostrado. | 2024-05-09 A | 2024-05-09 A |  | 0% → 100% | 1d → none |  |  |
| 204 | **El color del componente cambia de acuerdo al tiempo de la llamada y cuánto se ha acercado al límite en una llamada en tiempo real.** | 2024-05-12 A | 2024-05-15 A |  | 0% → 100% | 0d → none |  |  |
| 205 | Se realizan llamadas de prueba. | 2024-05-12 A | 2024-05-12 A |  | 0% → 100% | 0d → none |  |  |
| 206 | El componente recibe información adecuadamente. | 2024-05-13 A | 2024-05-13 A |  | 0% → 100% | 0d → none |  |  |
| 207 | El componente cambia de color adecuadamente (verde si está debajo de 2 minutos y medio, amarillo di se está en 2 minutos y medio hasta 3, rojo si se ha pasado de 3). | 2024-05-14 A | 2024-05-14 A |  | 0% → 100% | 0d → none |  |  |
| 208 | No hay errores en el tiempo o color mostrado. | 2024-05-15 A | 2024-05-15 A |  | 0% → 100% | 0d → none |  |  |
| 209 | **El agente podrá acceder a un apartado en donde podrá verificar la evaluación y en caso de haberlos esccrito comentarios específicos de su supervisor** |  |  |  | 56% → 88% |  |  |  |
| 213 | **Recuperar los datos y comentarios de la evaluación del supervisor.** |  | 2024-05-01 A → 2024-05-01 |  | 100% → 50% | none → 13d |  |  |
| 214 | Acceder a la base de datos para jalar los resultados de la encuesta del respectivo agente |  | 2024-05-01 A → 2024-05-01 |  | 100% → 50% | none → 13d |  |  |
| 215 | **Mostrar los datos y comentarios del supervisor de una forma clara.** | 2024-05-02 A → 2024-05-03 A (+1d) | 2024-05-09 A | 8d → 7d | 27% → 100% | 5d → none |  |  |
| 216 | Mostrar los puntajes en un apartado de la pantalla | 2024-05-03 A | 2024-05-03 A |  | 0% → 100% | 10d → none | Desplegar los datos del agente específico. → none |  |
| 217 | Mostrar los comentarios específicos a la par de los puntajes | 2024-05-09 A | 2024-05-09 A |  | 0% → 100% | 5d → none |  |  |
| 231 | **Supervisor** | 2024-04-12 A → 2024-04-25 A (+13d) |  | 27d → 18d | 50% → 89% |  |  |  |
| 232 | **En la pantalla principal, se mostrará un listado de llamadas activas que serán escaladas, ordenadas por prioridad, donde se evaluara principalmente el estado emocional del cliente. Por ejemplo: Si el cliente se encuentra estresado, la llamada con el agent** | 2024-04-29 A | 2024-05-06 A |  | 70% → 100% |  |  |  |
| 233 | **Recuperar los datos del analisis sentimental y duración de la llamada de Amazon Connect** |  | 2024-05-02 A |  | 60% → 100% | 0.49d → none |  |  |
| 235 | Implementar y probar los algoritmos para garantizar su precisión y eficacia. |  | 2024-05-02 A |  | 20% → 100% | 0.49d → none |  |  |
| 236 | **Desarrollo completo de los algoritmos para análisis sentimental del cliente, cálculo de duración acumulada de la llamada y detección de solicitud de asistencia del agente.** |  | 2024-05-03 A |  | 49% → 100% | 11d → none |  |  |
| 237 | Recuperar información del estado de la solicitud de asistencia. |  | 2024-05-03 A |  | 49% → 100% | 11d → none |  |  |
| 238 | Generar funciones de cálculo de duración de llamada, calculo del análisis sentimental del agente y detección solicitud de asistencia e iniciar pruebas de visualización. |  | 2024-05-03 A |  | 49% → 100% | 11d → none |  |  |
| 242 | **En la sección designada para mostrar las llamadas activas, en la pantalla principal, por cada llamada activa se tendrá el nombre del agente, el nombre del cliente, el tiempo desde que comenzó la llamada y un análisis sentimental, el cuál a través de una f** | 2024-04-12 A → 2024-05-07 A (+25d) |  | 26d → 7d | 46% → 70% | 1d → none |  | resources Angel → Angel - Pobol |
| 243 | **Se recupera la información de una llamada** |  | 2024-05-10 → 2024-05-14 (+4d) | 4d → 7d | 46% → 59% | 0d → none |  |  |
| 244 | Configurar endpoints que recuperen los datos en tiempo real de las llamadas activas |  | 2024-05-07 A → 2024-05-07 | 0.5d → 1d | 100% → 70% | none → 3d |  | constraint none → finish no earlier than 2024-05-07 |
| 246 | Verifica que la API recupere todos los datos |  | 2024-05-10 → 2024-05-14 (+4d) | 3d → 6d | 10% → 50% | 0d → 1d |  | constraint none → finish no earlier than 2024-05-14 |
| 247 | **Se visualiza el nombre del agente, el nombre del cliente, el tiempo acumulado y análisis sentimental** |  |  |  | 33% → 87% | 1d → none |  |  |
| 248 | Crear una aplicacion React con los respectivos componentes |  |  | 0.5d → 1d |  |  | 246 → none |  |
| 249 | Permitir que la interfaz se actualice a medida que cambian los datos |  |  | 4d → 2d | 25% → 80% |  | 246 → none | constraint none → finish no earlier than 2024-05-14 |
| 250 | **Hay un botón que dice transcripción de la llamada** | 2024-04-12 A → 2024-05-12 A (+30d) | 2024-05-12 → 2024-05-14 (+2d) | 24d → 3d | 67% → 83% | 3d → none |  |  |
| 252 | Obtener datos actualizados de la transcripción | 2024-04-30 A → 2024-05-12 A (+12d) | 2024-04-30 A → 2024-05-12 A (+12d) |  |  |  |  |  |
| 253 | Verifica que la API recupere todos los datos | 2024-04-12 → 2024-05-14 A (+32d) | 2024-04-14 → 2024-05-14 (+30d) |  | 0% → 50% | 26d → 1d |  | constraint finish no earlier than 2024-04-14 → finish no earlier than 2024-05-14 |
| 258 | **Desplegar una ventana emergente al dar tap sobre el ícono de ayuda:** |  | 2024-05-07 A |  | 99% → 100% |  |  |  |
| 267 | **Al dar tap sobre el botón de responder del requerimiento 3, se desplegará una ventana con un cuadro de texto para escribir la respuesta, y un botón para enviarla. Y un mensaje de confirmación al finalizar.** |  | 2024-05-10 A |  | 59% → 100% | 4d → none |  |  |
| 272 | **Registrar el mensaje guardado en la base de datos:** |  | 2024-05-08 A |  | 20% → 100% | 6d → none |  |  |
| 273 | Configurar el controlador en el API para insertar el mensaje en la BD. |  | 2024-05-07 A |  | 20% → 100% | 7d → none |  |  |
| 274 | Configurar la conexión al endpoint, en la aplicación. |  | 2024-05-07 A |  | 20% → 100% | 7d → none |  |  |
| 275 | Escribir la lógica para insertar el mensaje escrito por el supervisor en la base de datos al presionar el botón de enviar a través del endpoint configurado en la actividad anterior. |  | 2024-05-08 A |  | 20% → 100% | 5d → none |  |  |
| 276 | **Mostrar un mensaje de confirmación al finalizar este proceso:** |  | 2024-05-07 A |  | 75% → 100% | 7.5d → none |  |  |
| 277 | Diseñar un mensaje de confirmación que se muestre al supervisor una vez que el mensaje haya sido correctamente guardado en la base de datos. |  | 2024-05-07 A |  | 50% → 100% | 7.5d → none |  |  |
| 279 | **En la pantalla principal se visualizará el nombre del cliente y el tiempo de espera de manera cronológica, con las llamadas que tienen más tiempo de espera ubicadas en la parte superior de la lista.** |  | 2024-05-15 → 2024-05-04 A (-11d) | 16d → 6d | 19% → 100% | 0d → none |  |  |
| 280 | **Visualizar el nombre del cliente y el tiempo de espera de cada llamada en espera en la pantalla principal.** |  | 2024-05-10 → 2024-05-04 A (-6d) | 12d → 6d | 28% → 100% | 4d → none |  |  |
| 281 | Extraer datos de llamadas en espera desde Connect. |  |  |  |  |  |  | was named Extraer datos de llamadas en espera desde Connect utilizando Lambda. |
| 282 | Diseñar la interfaz de usuario en la pantalla principal para mostrar el nombre del cliente y el tiempo de espera de cada llamada. | 2024-05-04 A | 2024-05-04 A |  | 0% → 100% | 11d → none |  |  |
| 283 | **La pantalla principal contara con un menú lateral en el que se visualicen las pantallas de navegación. En la pantalla principal se muestran los agentes del grupo, cada uno con un indicador acerca de su estado (disponible, en llamada, descanso o ausente).** |  | 2024-05-15 A |  | 60% → 100% | 0d → none |  |  |
| 288 | **Ver la información de los agentes de manera cuadriculada, con datos que no provienen de la base de datos.** |  | 2024-05-15 A |  | 56% → 100% | 0d → none |  |  |
| 290 | Generar las rutas para acceder a la base de datos |  | 2024-05-09 A |  | 20% → 100% | 5d → none |  |  |
| 291 | Generar las tablas en la base de datos |  | 2024-05-11 A |  | 70% → 100% | 4d → none |  |  |
| 292 | Colocar datos de prueba para probar la funcionalidad | 2024-05-13 A | 2024-05-14 A |  | 0% → 100% | 2d → none |  |  |
| 293 | Asignar los colores adecuados para mostrar el funcionamiento de estas |  | 2024-05-15 A |  | 40% → 100% | 0d → none |  |  |
| 294 | **La información que se muestra de los agentes proviene de la base de datos.** |  | 2024-05-08 A |  | 20% → 100% | 6d → none |  |  |
| 296 | Rellenar la base de datos con información para generar pruebas de la funcionalidad | 2024-05-05 A | 2024-05-06 A |  | 0% → 100% | 9d → none |  |  |
| 297 | Colocar las referencias correspondientes a las rutas para la información de cada agente | 2024-05-07 A | 2024-05-08 A |  | 0% → 100% | 7d → none |  |  |
| 298 | **En la pantalla de KPIs general se mostrara la resolución al primer contactoc(porcentaje), abandono de llamadas (porcentaje), nivel de servicio(porcentaje), tiempo promedio de llamada(métrica), velocidad media de respuesta(métrica), ocupación de centro de** |  | 2024-05-11 → 2024-05-14 (+3d) | 5d → 7d | 34% → 83% | none → 1d |  |  |
| 299 | **Se muestra con texto los diferentes apartados con el KPI que deberían de mostrar.** |  | 2024-05-09 A |  | 80% → 100% | 5d → none |  |  |
| 300 | Generar el acomodo responsivo de los apartados de los KPIs |  | 2024-05-08 A |  | 70% → 100% | 6d → none |  |  |
| 301 | Generar los contextos y clases para colocar los objetos de los KPIs |  | 2024-05-09 A |  | 80% → 100% | 5d → none |  |  |
| 303 | **Las métricas y porcentajes mostrados son datos prueba** |  | 2024-05-11 → 2024-05-14 (+3d) | 2d → 5d | 7% → 81% | 4d → 1d |  |  |
| 304 | Crear las tablas necesarias para la información de los KPIs | 2024-05-10 A | 2024-05-10 A |  | 0% → 100% |  |  |  |
| 305 | Generar las rutas y referencias necesarias para obtener la información de la base de dato |  | 2024-05-09 → 2024-05-14 (+5d) | 1d → 5d | 40% → 80% | 5d → 1d |  |  |
| 306 | Colocar datos prueba en cada KPI para mostrar la funcionalidad de los colores | 2024-05-09 A | 2024-05-11 A |  | 0% → 100% | 4d → none |  |  |

| ID | Task | Start | Finish | Duration | Complete | Total float | Predecessors | Other |
| --- | --- | --- | --- | --- | --- | --- | --- | --- |
| 307 | Generar la conexión con Amazon Connect | 2024-05-09 A | 2024-05-10 → 2024-05-14 (+4d) | 2d → 5d | 0% → 70% | 4d → 1d |  |  |
| 308 | **Las métricas y porcentajes visualizados provienen de la base de datos y de Amazon Connect, según corresponda.** | 2024-05-08 A | 2024-05-09 → 2024-05-14 (+5d) | 2d → 6d | 0% → 75% | 0d → 1d |  |  |
| 309 | Llenar la base de datos con los datos necesarios | 2024-05-08 A | 2024-05-08 A |  | 0% → 100% |  |  |  |
| 310 | Colocar las referencias correspondientes para cada KPI respecto a la ruta para obtener la información correspondiente | 2024-05-09 A | 2024-05-09 → 2024-05-14 (+5d) | 1d → 5d | 0% → 70% | 6d → 1d |  |  |
| 311 | **Al seleccionar uno de los KPI en la pantalla se podrán visualizar datos históricos por medio de gráficas para elegir el tiempo deseado, siendo 60 días el máximo atrás que se puede elegir.** |  | 2024-05-11 A |  | 14% → 100% | 4d → none |  |  |
| 312 | **Visualizar el filtro de búsqueda, con su filtro por defecto de 15 minutos y poder elegir una fecha que vaya máximo 60 días atrás.** |  | 2024-05-08 A |  | 33% → 100% | 6d → none |  |  |
| 315 | Generar la vista con la gráfica, en lugar de la métrica anteriormente visualizada | 2024-05-03 A | 2024-05-03 A |  | 0% → 100% | 12d → none |  |  |
| 316 | Colocar gráficas con datos prueba para verificar la visualización | 2024-05-06 A | 2024-05-06 A |  | 0% → 100% | 9d → none |  |  |
| 317 | Generar los queries necesarios para realizar la busqueda | 2024-05-07 A | 2024-05-08 A |  | 0% → 100% | 7d → none |  |  |
| 318 | **Se visualizan las gráficas correspondientes al KPI elegido, con su filtro por defecto.** |  | 2024-05-11 A |  | 9% → 100% | 4d → none |  |  |
| 319 | Se colocan las rutas adecuadas para poder hacer los queries necesarios |  | 2024-05-04 A |  | 30% → 100% |  |  |  |
| 320 | Se ingresan los datos necesarias para poder realizar las pruebas dentro de la base de datos | 2024-05-07 A | 2024-05-08 A |  | 0% → 100% | 7d → none |  |  |
| 321 | Se hace uso únicamente el llamado de información de los últimos 15 minutos | 2024-05-08 A | 2024-05-11 A |  | 0% → 100% | 5d → none |  |  |
| 322 | **La información mostrada en las gráficas corresponde al filtro elegido de búsqueda.** | 2024-05-06 A | 2024-05-10 A |  | 0% → 100% | 0d → none |  |  |
| 323 | Se realiza la prueba de selección del tiempo con la información correspondiente. | 2024-05-06 A | 2024-05-10 A |  | 0% → 100% |  |  |  |
| 324 | Se implementan los colores y diseño establecido. | 2024-05-07 A | 2024-05-07 A |  | 0% → 100% |  |  |  |
| 325 | **El supervisor puede acceder al perfil de cada agente desde un botón en el menú lateral. Podrá ver los datos generales del agente (nombre, imagen, horario laboral) y los KPIs de su atención de llamadas en un día específico (llamadas respondidas, abandonada** | 2024-04-25 A → 2024-05-01 A (+6d) | 2024-05-08 → 2024-05-15 (+7d) | 12d → 14d | 94% → 85% | 6d → 0d |  |  |
| 326 | **Visualizar lo datos generales de los agentes.** | 2024-04-30 A → 2024-05-01 A (+1d) | 2024-05-08 A → 2024-05-06 (-2d) | 9d → 6d | 100% → 98% | none → 8d |  |  |
| 327 | Configurar el acceso a los datos de los agentes desde Amazon Connect. | 2024-04-30 A → 2024-05-01 A (+1d) | 2024-05-03 A → 2024-05-04 A (+1d) |  |  |  |  |  |
| 328 | Extraer los datos de los agentes desde Connect. |  |  |  |  |  | 327 → none | was named Extraer los datos de los agentes desde Connect utilizando Lambda. |
| 329 | Procesar los datos para su visualización. |  | 2024-05-03 A → 2024-05-03 |  | 100% → 90% | none → 11d |  |  |
| 330 | Diseñar la interfaz de usuario para mostrar los datos generales de los agentes. |  |  |  |  |  | 329 → none |  |
| 331 | **Consultar los KPIs de atención de llamadas.** | 2024-04-25 A → 2024-05-08 A (+13d) | 2024-05-06 → 2024-05-15 (+9d) | 10d → 7d | 85% → 71% | 8d → 0d |  |  |
| 332 | Configurar la extracción de datos de los KPIs desde Connect. | 2024-04-25 A → 2024-05-08 A (+13d) | 2024-05-01 → 2024-05-13 (+12d) |  | 80% → 60% | 2.7d → 2d |  | constraint none → finish no earlier than 2024-05-13 |
| 333 | Desarrollar la lógica para consultar y calcular los KPIs (llamadas respondidas, abandonadas, duración promedio). | 2024-05-02 A → 2024-05-12 A (+10d) | 2024-05-04 → 2024-05-14 (+10d) |  |  | 1.8d → 1d | 332 → none |  |
| 334 | Integrar la visualización de los KPIs en la interfaz de usuario. | 2024-05-05 A → 2024-05-14 A (+9d) | 2024-05-06 → 2024-05-15 (+9d) |  | 90% → 70% | 8d → 0d | 333 → none |  |
| 335 | **El superviso puede acceder a un apartado en donde podrá contetar unas preguntas las cuales podrán evaluar el desempeño del agente. Y en cas de necesitar ser más objetivo durante su comentario, complementarlo con un comentario más detallado.** |  |  |  | 63% → 82% |  |  |  |
| 341 | **Agregar una sección de comentarios para cada una de las preguntas.** |  | 2024-05-09 A |  | 90% → 100% | 3.5d → none |  |  |
| 342 | Establecer de manera clara que apartado de comentarios corresponde a cada pregunta |  | 2024-05-09 A |  | 90% → 100% | 3.5d → none |  |  |
| 343 | **Guardar los datos de la encuesta al agente en la base de datos.** | 2024-05-09 A |  |  | 0% → 50% | 3.5d → 0.5d |  |  |
| 344 | Crear un post un método post donde se puedan subir los resultados y comentarios a la base de datos hacia su respectivo agente | 2024-05-09 A |  |  | 0% → 50% | 4.5d → 0.5d |  |  |
| 345 | **Enviar los datos de la encuesta al agente.** | 2024-05-10 A |  |  | 0% → 50% |  |  |  |
| 346 | Crear un método get donde se pueda obtener los resultados y comentarios de los respectivos agentes | 2024-05-10 A |  |  | 0% → 50% | 4.5d → 3.5d |  |  |
